# camod_2.1_schedule

How a schedule from MS Project changed from version to version. A marks actual dates.

## Version 1 (saved 2006-01-05)

Note of the change: Initial revision

| ID | WBS | Task | Duration | Start | Finish | Predecessors | Total float | Constraint |
| --- | --- | --- | --- | --- | --- | --- | --- | --- |
| 1 | 1 | **caImage EVS Upgrade** | 34d | 2005-12-29 | 2006-02-14 |  | 0d |  |
| 2 | 1.1 | **Inception** | 2.4d | 2005-12-29 | 2006-01-02 |  | 25.6d |  |
| 3 |  | Identify caImage requirements | 2.4d | 2005-12-29 | 2006-01-02 |  | 24.7d | start no earlier than 2005-12-29 |
| 4 | 1.2 | **Elaboration** | 6d | 2006-01-02 | 2006-01-10 | 2 | 25.6d |  |
| 5 |  | Draft Test Cases | 1w | 2006-01-02 | 2006-01-09 |  | 25.7d |  |
| 6 |  | Draft Use Cases | 1w | 2006-01-02 | 2006-01-09 | 2 | 24.7d |  |
| 7 |  | Review Use Cases | 1d | 2006-01-09 | 2006-01-10 | 6 | 25.6d |  |
| 8 | 1.2.4 | **caImage database changes** | 5d | 2006-01-02 | 2006-01-09 |  | 25.6d |  |
| 9 |  | Document CTRM -> EVS mappings | 1w | 2006-01-02 | 2006-01-09 |  | 24.7d | start no earlier than 2005-06-06 |
| 10 | 1.3 | **Construction** | 30.1d | 2005-12-29 | 2006-02-09 |  | 0.9d |  |
| 11 |  | Requirements Analysis | 2d | 2005-12-29 | 2005-12-30 |  | 0.9d |  |
| 12 |  | Design | 3d | 2006-01-02 | 2006-01-04 | 11 | 0.9d |  |
| 13 |  | Create concept code migration script | 1d | 2006-01-09 | 2006-01-10 | 9, 12 | 24.7d |  |
| 14 | 1.3.4 | **Code** | 18.6d | 2006-01-05 | 2006-01-31 |  | 0.9d |  |
| 15 | 1.3.4.1 | **EVS Tree modification** | 15.6d | 2006-01-05 | 2006-01-26 |  | 0.9d |  |
| 16 |  | #37 - EVS Tree - Why does a search for synonyms in anatomy tree return disease and drugs? | 2d | 2006-01-05 | 2006-01-06 | 12 | 0.9d |  |
| 17 |  | #274 - EVS Tree - restore the association between organ and diagnosis | 3d | 2006-01-09 | 2006-01-11 | 16 | 0.9d |  |
| 18 |  | #276 - EVS Tree - use display name instead of concept name | 0.5d | 2006-01-12 | 2006-01-12 | 17 | 0.9d |  |
| 19 |  | #279 - EVS Tree - remove the word Done from the tree | 0.1d | 2006-01-12 | 2006-01-12 | 18 | 0.9d |  |
| 20 |  | #371 - EVS Tree - make display of EVS tree generic | 2w | 2006-01-12 | 2006-01-26 | 19 | 0.9d |  |
| 21 |  | Change caImage to use new EVSTree | 3d | 2006-01-26 | 2006-01-31 | 20 | 0.9d |  |
| 22 |  | Tag build and deploy to QA server | 1d | 2006-01-31 | 2006-02-01 | 21, 14 | 0.9d |  |
| 23 |  | Test | 3d | 2006-02-01 | 2006-02-06 | 22 | 6.4d |  |
| 24 | 1.3.7 | **Integration Testing Schedule** | 5.5d | 2006-02-01 | 2006-02-09 | 22 | 0.9d |  |
| 25 | 1.3.7.1 | **Develop Test Plan** | 3d | 2006-02-01 | 2006-02-06 |  | 6.4d |  |
| 26 |  | Develop Integration Test Plan | 3d | 2006-02-01 | 2006-02-06 |  | 6.4d |  |
| 27 |  | Deploy to Development Server | 1d | 2006-02-01 | 2006-02-02 |  | 8.4d |  |
| 28 |  | Development Test | 3d | 2006-02-01 | 2006-02-06 |  | 6.4d |  |
| 29 |  | Deploy to Integration Test Server | 1.5d | 2006-02-01 | 2006-02-03 |  | 0.9d |  |
| 30 |  | Integration Test | 3d | 2006-02-01 | 2006-02-06 |  | 6.4d |  |
| 31 |  | Deploy to Staging Server | 1d | 2006-02-03 | 2006-02-06 | 29 | 0.9d |  |
| 32 |  | Test | 3d | 2006-02-06 | 2006-02-09 | 31 | 0.9d |  |
| 33 | 1.4 | **Transition** | 34d | 2005-12-29 | 2006-02-14 |  | 0d |  |
| 34 |  | Code Freeze | 1d | 2006-02-01 | 2006-02-02 | 22 | 8.4d |  |
| 35 |  | Deploy to Production | 3d | 2006-02-10 | 2006-02-14 | 32 | 0d | start no earlier than 2006-02-10 |
| 36 | 1.4.3 | **Document Iteration** | 1d | 2005-12-29 | 2005-12-29 |  | 33d |  |
| 37 |  | Update User Guides | 1d | 2005-12-29 | 2005-12-29 |  | 32.1d |  |
| 38 |  | Update technical / design documentation | 1d | 2005-12-29 | 2005-12-29 |  | 32.1d |  |
| 39 |  | Regenerate JavaDocs | 0.25d | 2005-12-29 | 2005-12-29 |  | 32.85d |  |
| 40 |  | Create Release Notes | 0.5d | 2005-12-29 | 2005-12-29 |  | 32.6d |  |
| 41 |  | Create Known Issues document | 0.5d | 2005-12-29 | 2005-12-29 |  | 32.6d |  |
| 42 |  | Create Fixed defects document | 0.5d | 2005-12-29 | 2005-12-29 |  | 32.6d |  |
| 43 |  | Create What's New Document | 0.5d | 2005-12-29 | 2005-12-29 |  | 32.6d |  |
| 44 |  | Milestone: Complete caImage EVSTree upgrade | 0d | 2006-02-14 | 2006-02-14 | 35 | 0d |  |

## Version 2 (saved 2006-02-01)

Last finish 2006-02-14 → 2006-03-22 (+36d).

Changed:

| ID | Task | Start | Finish | Duration | Total float | Predecessors |
| --- | --- | --- | --- | --- | --- | --- |
| 1 | **caImage EVS Upgrade** |  | 2006-02-14 → 2006-03-22 (+36d) | 34d → 59.5d |  |  |
| 4 | **Elaboration** |  | 2006-01-10 → 2006-01-24 (+14d) | 6d → 16d | 25.6d → 0d |  |
| 6 | Draft Use Cases |  | 2006-01-09 → 2006-01-23 (+14d) | 1w → 3w | 24.7d → 0d |  |
| 7 | Review Use Cases | 2006-01-09 → 2006-01-23 (+14d) | 2006-01-10 → 2006-01-24 (+14d) |  | 25.6d → 41.1d |  |
| 10 | **Construction** | 2005-12-29 → 2006-01-23 (+25d) | 2006-02-09 → 2006-03-17 (+36d) | 30.1d → 39.1d | 0.9d → 0d | none → 6 |
| 11 | Requirements Analysis | 2005-12-29 → 2006-01-23 (+25d) | 2005-12-30 → 2006-01-25 (+26d) |  | 0.9d → 0d |  |
| 12 | Design | 2006-01-02 → 2006-01-25 (+23d) | 2006-01-04 → 2006-02-10 (+37d) | 3d → 12d | 0.9d → 0d |  |
| 13 | Create concept code migration script | 2006-01-09 → 2006-01-23 (+14d) | 2006-01-10 → 2006-01-24 (+14d) |  | 24.7d → 41.1d | 9, 12 → 9 |
| 14 | **Code** | 2006-01-05 → 2006-02-10 (+36d) | 2006-01-31 → 2006-03-08 (+36d) |  | 0.9d → 0d |  |
| 15 | **EVS Tree modification** | 2006-01-05 → 2006-02-10 (+36d) | 2006-01-26 → 2006-03-03 (+36d) |  | 0.9d → 0d |  |
| 16 | #37 - EVS Tree - Why does a search for synonyms in anatomy tree return disease and drugs? | 2006-01-05 → 2006-02-10 (+36d) | 2006-01-06 → 2006-02-14 (+39d) |  | 0.9d → 0d |  |
| 17 | #274 - EVS Tree - restore the association between organ and diagnosis | 2006-01-09 → 2006-02-14 (+36d) | 2006-01-11 → 2006-02-17 (+37d) |  | 0.9d → 0d |  |
| 18 | #276 - EVS Tree - use display name instead of concept name | 2006-01-12 → 2006-02-17 (+36d) | 2006-01-12 → 2006-02-17 (+36d) |  | 0.9d → 0d |  |
| 19 | #279 - EVS Tree - remove the word Done from the tree | 2006-01-12 → 2006-02-17 (+36d) | 2006-01-12 → 2006-02-17 (+36d) |  | 0.9d → 0d |  |
| 20 | #371 - EVS Tree - make display of EVS tree generic | 2006-01-12 → 2006-02-20 (+39d) | 2006-01-26 → 2006-03-03 (+36d) |  | 0.9d → 0d |  |
| 21 | Change caImage to use new EVSTree | 2006-01-26 → 2006-03-06 (+39d) | 2006-01-31 → 2006-03-08 (+36d) |  | 0.9d → 0d |  |
| 22 | Tag build and deploy to QA server | 2006-01-31 → 2006-03-09 (+37d) | 2006-02-01 → 2006-03-09 (+36d) |  | 0.9d → 0d | 21, 14 → 21 |
| 23 | Test | 2006-02-01 → 2006-03-10 (+37d) | 2006-02-06 → 2006-03-14 (+36d) |  | 6.4d → 5.5d |  |
| 24 | **Integration Testing Schedule** | 2006-02-01 → 2006-03-10 (+37d) | 2006-02-09 → 2006-03-17 (+36d) |  | 0.9d → 0d |  |
| 25 | **Develop Test Plan** | 2006-02-01 → 2006-03-10 (+37d) | 2006-02-06 → 2006-03-14 (+36d) |  | 6.4d → 5.5d |  |
| 26 | Develop Integration Test Plan | 2006-02-01 → 2006-03-10 (+37d) | 2006-02-06 → 2006-03-14 (+36d) |  | 6.4d → 5.5d |  |
| 27 | Deploy to Development Server | 2006-02-01 → 2006-03-10 (+37d) | 2006-02-02 → 2006-03-10 (+36d) |  | 8.4d → 7.5d |  |
| 28 | Development Test | 2006-02-01 → 2006-03-10 (+37d) | 2006-02-06 → 2006-03-14 (+36d) |  | 6.4d → 5.5d |  |
| 29 | Deploy to Integration Test Server | 2006-02-01 → 2006-03-10 (+37d) | 2006-02-03 → 2006-03-13 (+38d) |  | 0.9d → 0d |  |
| 30 | Integration Test | 2006-02-01 → 2006-03-10 (+37d) | 2006-02-06 → 2006-03-14 (+36d) |  | 6.4d → 5.5d |  |
| 31 | Deploy to Staging Server | 2006-02-03 → 2006-03-13 (+38d) | 2006-02-06 → 2006-03-14 (+36d) |  | 0.9d → 0d |  |
| 32 | Test | 2006-02-06 → 2006-03-14 (+36d) | 2006-02-09 → 2006-03-17 (+36d) |  | 0.9d → 0d |  |
| 33 | **Transition** |  | 2006-02-14 → 2006-03-22 (+36d) | 34d → 59.5d |  |  |
| 34 | Code Freeze | 2006-02-01 → 2006-03-10 (+37d) | 2006-02-02 → 2006-03-10 (+36d) |  | 8.4d → 7.5d |  |
| 35 | Deploy to Production | 2006-02-10 → 2006-03-17 (+35d) | 2006-02-14 → 2006-03-22 (+36d) |  |  |  |
| 44 | Milestone: Complete caImage EVSTree upgrade | 2006-02-14 → 2006-03-22 (+36d) | 2006-02-14 → 2006-03-22 (+36d) |  |  |  |
