# caMOD FY005 03042005

How a schedule from MS Project changed from version to version. A marks actual dates.

## Version 1 (saved 2005-08-05)

Note of the change: Document reorg

| ID | WBS | Task | Duration | Start | Finish | Predecessors | Complete | Total float | Constraint |
| --- | --- | --- | --- | --- | --- | --- | --- | --- | --- |
| 1 | 1 | **MMHCC FY005** | 306d | 2004-12-09 A | 2006-02-09 |  | 29% | 0d |  |
| 2 | 1.1 | **Inception** | 23d | 2004-12-09 A | 2005-01-10 |  | 99% | 283d |  |
| 3 |  | Identify Project Requirements | 1.5w | 2004-12-09 A | 2004-12-20 A |  | 100% |  |  |
| 4 |  | Determine Level of Effort/Requirement | 2w | 2004-12-09 A | 2004-12-22 A |  | 100% |  |  |
| 5 |  | Prioritize Project Requirements | 3d | 2004-12-23 A | 2004-12-27 A | 4 | 100% |  |  |
| 6 |  | Determine Project Scope | 1w | 2004-12-28 A | 2005-01-03 A | 5 | 100% |  |  |
| 7 |  | Update Project Plan | 1w | 2005-01-04 A | 2005-01-10 | 6 | 95% | 283d |  |
| 8 | 1.2 | **caMOD Defect Fixes** | 87d | 2005-01-05 A | 2005-05-05 |  | 95% | 25.03d |  |
| 9 |  | Yeast Data | 16.4w | 2005-01-05 A | 2005-04-28 A |  | 100% |  | finish no earlier than 2005-02-21 |
| 10 |  | Xenograft/Alograft Data | 2w | 2005-01-05 A | 2005-04-28 A |  | 100% |  | finish no earlier than 2005-02-21 |
| 11 |  | Test / Deploy yeast & xenograft fixes | 5d | 2005-04-29 | 2005-05-05 | 10 |  | 25.03d | start no earlier than 2005-04-25 |
| 12 | 1.3 | **CCB Meetings** | 236d | 2005-02-22 A | 2006-01-17 |  | 8% | 17d |  |
| 13 |  | February Meeting | 1d | 2005-02-22 A | 2005-02-22 A |  | 100% |  | start no earlier than 2005-02-22 |
| 14 |  | March Meeting | 1d | 2005-03-15 | 2005-03-15 |  |  | 237d | start no earlier than 2005-03-15 |
| 15 |  | April Meeting | 1d | 2005-04-19 | 2005-04-19 |  |  | 212d | start no earlier than 2005-04-19 |
| 16 |  | May Meeting | 1d | 2005-05-10 | 2005-05-10 |  |  | 197d | start no earlier than 2005-05-10 |
| 17 |  | June Meeting | 1d | 2005-06-21 | 2005-06-21 |  |  | 167d | start no earlier than 2005-06-21 |
| 18 |  | July Meeting | 1d | 2005-07-19 | 2005-07-19 |  |  | 147d | start no earlier than 2005-07-19 |
| 19 |  | August Meeting | 1d | 2005-08-16 | 2005-08-16 |  |  | 127d | start no earlier than 2005-08-16 |
| 20 |  | September Meeting | 1d | 2005-09-20 | 2005-09-20 |  |  | 102d | start no earlier than 2005-09-20 |
| 21 |  | October Meeting | 1d | 2005-10-18 | 2005-10-18 |  |  | 82d | start no earlier than 2005-10-18 |
| 22 |  | November Meeting | 1d | 2005-11-15 | 2005-11-15 |  |  | 62d | start no earlier than 2005-11-15 |
| 23 |  | December Meeting | 1d | 2005-12-20 | 2005-12-20 |  |  | 37d | start no earlier than 2005-12-20 |
| 24 |  | January, 2006 Meeting | 1d | 2006-01-17 | 2006-01-17 |  |  | 17d | start no earlier than 2006-01-17 |
| 25 | 1.4 | **caMOD Enhancements (2-Tier)** | 16d | 2005-05-05 A | 2005-05-26 |  | 28% | 185d |  |
| 26 |  | Fix urgent / high priority defects in Test Track | 1w | 2005-05-05 A | 2005-05-11 |  | 90% | 185d | start no earlier than 2005-05-05 |
| 27 |  | Test all changes implemented in this interation | 6d | 2005-05-12 | 2005-05-19 | 26 |  | 185d |  |
| 28 |  | Deploy Iteration to Production | 5d | 2005-05-20 | 2005-05-26 | 27, 11 |  | 185d |  |
| 29 | 1.5 | **caMOD Version 2 caBIG Silver Compliance (N-Tier)** | 204d | 2005-01-26 A | 2005-11-07 | 8 | 14% | 68d |  |
| 30 | 1.5.1 | **Inception** | 5d | 2005-01-26 A | 2005-02-01 A |  | 100% |  |  |
| 31 |  | Identify caMOD caBIG Silver (N-Tier) Requirements | 1w | 2005-01-26 A | 2005-02-01 A |  | 100% |  |  |
| 32 | 1.5.2 | **Elaboration** | 105d | 2005-02-09 A | 2005-07-05 | 30 | 30% | 157d |  |
| 33 |  | Draft caMOD caBIG Silver (N-Tier) Use Cases | 4w | 2005-02-09 A | 2005-05-20 |  | 80% | 14.5d |  |
| 34 |  | Review Use Cases, including CCMG members | 1d | 2005-02-28 A | 2005-05-26 | 33FS+3d | 30% | 165.8d |  |
| 35 |  | Draft caMOD caBIG Silver (N-Tier) Test Cases | 4w | 2005-05-26 | 2005-06-23 | 34 |  | 165.8d |  |
| 36 |  | Use of Common Security Manager | 3w | 2005-05-20 | 2005-06-10 | 33 |  | 14.5d |  |
| 37 | 1.5.2.5 | **Architecture** | 21d | 2005-05-11 A | 2005-06-08 | 33 | 52% | 176d |  |
| 38 |  | Initial Draft of Architecture | 2w | 2005-05-11 A | 2005-05-24 |  | 90% | 30d |  |
| 39 |  | Internal review with MMHCC Team | 1d | 2005-05-25 A | 2005-05-25 | 38 | 90% | 178d |  |
| 40 |  | Incorporate Comments/Feedback from the team review | 2d | 2005-05-26 | 2005-05-27 | 39 |  | 178d |  |
| 41 |  | Review architecture with the "Review Board" | 1d | 2005-06-01 | 2005-06-01 | 40 |  | 176d | start no earlier than 2005-06-01 |
| 42 |  | Draft design document (caBIG template) | 1w | 2005-06-02 | 2005-06-08 | 41 |  | 176d |  |
| 43 |  | Milestone: Completed Design document | 0d | 2005-06-08 | 2005-06-08 | 42 |  | 176d |  |
| 44 | 1.5.2.6 | **User Interface Design** | 31.5d | 2005-05-02 A | 2005-06-14 |  | 29% | 172.5d |  |
| 45 |  | Draft User Interface Components | 1w | 2005-05-02 A | 2005-05-24 | 33 | 90% | 86.5d | finish no earlier than 2005-05-09 |
| 46 |  | Internal Review of Draft UI components | 1d | 2005-05-24 A | 2005-05-25 | 45 | 70% | 173.1d |  |
| 47 |  | Incorporate comments/Feedback | 3d | 2005-05-25 A | 2005-05-30 | 46 | 20% | 172.5d |  |
| 48 |  | Incorporate icons, banners from Graphics Artist | 1d | 2005-05-30 | 2005-05-31 | 47 |  | 172.5d |  |
| 49 |  | Review Draft User Interface, including CCMG members | 5d | 2005-05-31 | 2005-06-07 | 48 |  | 172.5d |  |
| 50 |  | Incorporate comments/feedback from CCMG | 2d | 2005-06-07 | 2005-06-09 | 49 |  | 172.5d |  |
| 51 |  | Incorporate template in MVC framework | 3d | 2005-06-09 | 2005-06-14 | 50 |  | 172.5d |  |
| 52 |  | Milestone: Completed wireframes | 0d | 2005-06-07 | 2005-06-07 | 49 |  | 177.5d |  |
| 53 | 1.5.2.7 | **Persistence API Development** | 94d | 2005-02-22 A | 2005-07-01 |  | 6% | 0d |  |
| 54 |  | Determine use of automatic code generator | 8d | 2005-02-22 A | 2005-05-16 |  | 20% | 34.6d |  |
| 55 |  | Establish baseline search capability | 2w | 2005-06-06 | 2005-06-17 |  |  | 0d | start no earlier than 2005-06-06 |
| 56 |  | Establish baseline delete capability | 1w | 2005-06-20 | 2005-06-24 | 55 |  | 0d |  |
| 57 |  | Establish baseline insert capability | 1w | 2005-06-27 | 2005-07-01 | 56 |  | 0d |  |
| 58 |  | Draft Updated Object Model | 2w | 2005-05-25 A | 2005-06-10 | 38 | 85% | 157d |  |
| 59 |  | Draft Updated Data Model | 2w | 2005-05-25 A | 2005-06-07 | 38 | 85% | 177d |  |
| 60 | 1.5.2.10 | **Interface with caDSR** | 24.5d | 2005-06-01 | 2005-07-05 |  |  | 157d |  |
| 61 |  | Annotate UML model with well formed names and definitions | 3d | 2005-06-01 | 2005-06-06 | 58FS-7d |  | 157d |  |
| 62 |  | Review semantic connector output | 0.5d | 2005-06-06 | 2005-06-06 | 61 |  | 157d |  |
| 63 |  | Perform semantic annotation of UML models | 2d | 2005-06-07 | 2005-06-08 | 62 |  | 157d |  |
| 64 |  | Run UML loader | 2w | 2005-06-09 | 2005-06-22 | 63 |  | 157d |  |
| 65 |  | Review CDEs in staging | 2d | 2005-06-23 | 2005-06-24 | 64 |  | 157d |  |
| 66 |  | Curate additional metadata | 2d | 2005-06-27 | 2005-06-28 | 65 |  | 157d |  |
| 67 |  | Establish baseline documentation and prepare submission package | 1w | 2005-06-29 | 2005-07-05 | 66 |  | 157d |  |
| 68 | 1.5.3 | **Construction** | 115.5d | 2005-05-20 | 2005-10-28 |  |  | 20.5d |  |
| 69 | 1.5.3.1 | **Iteration 1: Architecture Prototype (Evolutionary Prototype)** | 38d | 2005-05-20 | 2005-07-13 |  |  | 20.5d |  |
| 70 | 1.5.3.1.1 | **Requirements Analysis** | 16d | 2005-05-20 | 2005-06-13 | 33 |  | 14.5d |  |

| ID | WBS | Task | Duration | Start | Finish | Predecessors | Total float |
| --- | --- | --- | --- | --- | --- | --- | --- |
| 71 |  | Requirements Outline | 7d | 2005-05-20 | 2005-05-31 |  | 20.5d |
| 72 |  | Complete Requirements Analysis | 3d | 2005-06-08 | 2005-06-13 | 71, 36FF+1d | 14.5d |
| 73 |  | Design | 3w | 2005-05-31 | 2005-06-21 | 71, 38FS-5d | 20.5d |
| 74 |  | Code | 3w | 2005-06-17 | 2005-07-08 | 73FS-2d | 20.5d |
| 75 |  | Test | 3d | 2005-07-08 | 2005-07-13 | 74 | 44.5d |
| 76 |  | Draft Deployment Scripts | 3d | 2005-07-08 | 2005-07-13 | 74 | 151.5d |
| 77 | 1.5.3.3 | **Iteration 2: Submit Cancer Models** | 43d | 2005-07-04 | 2005-08-31 | 53 | 0d |
| 78 |  | Requirements Analysis | 2w | 2005-07-04 | 2005-07-15 | 70 | 0d |
| 79 |  | Design | 2w | 2005-07-18 | 2005-07-29 | 78 | 0d |
| 80 |  | Review Wireframes, including CCMG members | 5d | 2005-08-01 | 2005-08-05 | 79 | 0d |
| 81 |  | Code | 3w | 2005-08-08 | 2005-08-26 | 80, 74 | 0d |
| 82 |  | Test | 3d | 2005-08-29 | 2005-08-31 | 81, 75 | 12d |
| 83 | 1.5.3.4 | **Iteration 3: Search Cancer Models** | 48d | 2005-07-18 | 2005-09-21 |  | 0d |
| 84 |  | Requirements Analysis | 2w | 2005-07-18 | 2005-07-29 | 78 | 0d |
| 85 | 1.5.3.4.2 | **NCICB Security Model Integration** | 15d | 2005-08-01 | 2005-08-19 | 84 | 0d |
| 86 |  | Identify and interface with NCICB CSM Services | 5d | 2005-08-01 | 2005-08-05 |  | 0d |
| 87 |  | Identify and implement UPT Hosting | 5d | 2005-08-08 | 2005-08-12 | 86 | 124d |
| 88 |  | Intergrate into Architectural prototype | 5d | 2005-08-15 | 2005-08-19 | 87 | 124d |
| 89 |  | Design | 2w | 2005-08-08 | 2005-08-19 | 79, 86 | 0d |
| 90 |  | Review Wireframes, including CCMG members | 5d | 2005-08-22 | 2005-08-26 | 89 | 0d |
| 91 |  | Code | 3w | 2005-08-29 | 2005-09-16 | 81, 90 | 0d |
| 92 |  | Test | 3d | 2005-09-19 | 2005-09-21 | 91, 82 | 0d |
| 93 | 1.5.3.5 | **Integration Testing Schedule** | 113.5d | 2005-05-24 | 2005-10-28 |  | 0d |
| 94 | 1.5.3.5.1 | **Develop Test Plan** | 54.5d | 2005-05-24 | 2005-08-08 | 45 | 59d |
| 95 |  | Develop Iteration 1 Test Plan | 6d | 2005-06-13 | 2005-06-21 | 70 | 93.5d |
| 96 |  | Develop Iteration 2 Test Plan | 6d | 2005-07-18 | 2005-07-25 | 78 | 69d |
| 97 |  | Develop Iteration 3 Test Plan | 6d | 2005-08-01 | 2005-08-08 | 84 | 59d |
| 98 |  | Develop Integration Test Plan | 10d | 2005-05-24 | 2005-06-07 |  | 86.5d |
| 99 |  | Deploy All Iterations to Development Server | 1d | 2005-09-22 | 2005-09-22 | 92 | 0d |
| 100 |  | Development Test All Iterations | 8d | 2005-09-23 | 2005-10-04 | 99 | 0d |
| 101 |  | Deploy All Iteration to Integration Test Server | 1d | 2005-10-05 | 2005-10-05 | 100 | 0d |
| 102 |  | Integration Test All Iterations | 8d | 2005-10-06 | 2005-10-17 | 101, 98 | 0d |
| 103 |  | Deploy All Iterations to Staging Server | 1d | 2005-10-18 | 2005-10-18 | 102 | 0d |
| 104 |  | UAT Test All Iterations | 8d | 2005-10-19 | 2005-10-28 | 103 | 0d |
| 105 | 1.5.4 | **Transition** | 5d | 2005-10-31 | 2005-11-04 | 93 | 0d |
| 106 |  | Code Freeze | 1d | 2005-10-31 | 2005-10-31 | 93 | 2d |
| 107 |  | Deploy Iteration to Production | 2d | 2005-11-01 | 2005-11-02 | 106 | 2d |
| 108 | 1.5.4.3 | **Document Iteration** | 5d | 2005-10-31 | 2005-11-04 |  | 0d |
| 109 |  | Update User Guides | 5d | 2005-10-31 | 2005-11-04 | 93 | 0d |
| 110 |  | Update technical / design documentation | 5d | 2005-10-31 | 2005-11-04 | 92 | 0d |
| 111 |  | Regenerate JavaDocs | 0.25d | 2005-10-31 | 2005-10-31 | 93 | 4.75d |
| 112 |  | Create Release Notes | 0.5d | 2005-10-31 | 2005-10-31 | 93 | 3d |
| 113 |  | Create Known Issues document | 0.5d | 2005-10-31 | 2005-10-31 | 112 | 3d |
| 114 |  | Create Fixed defects document | 0.5d | 2005-11-01 | 2005-11-01 | 113 | 3d |
| 115 |  | Create What's New Document | 0.5d | 2005-11-01 | 2005-11-01 | 114 | 3d |
| 116 |  | Milestone: Complete Version 2 | 1d | 2005-11-07 | 2005-11-07 | 105 | 0d |
| 117 | 1.6 | **caMOD Version 2.1** | 68d | 2005-11-08 | 2006-02-09 |  | 0d |
| 118 | 1.6.1 | **Inception** | 6d | 2005-11-08 | 2005-11-15 | 116 | 0d |
| 119 |  | Identify caMOD 2.1 requirements | 3d | 2005-11-08 | 2005-11-10 |  | 0d |
| 120 |  | Identify usability enhancement requirements | 3d | 2005-11-11 | 2005-11-15 | 119 | 0d |
| 121 | 1.6.2 | **Elaboration** | 6d | 2005-11-16 | 2005-11-23 | 120 | 0d |
| 122 |  | Draft caMOD 2.1 Use Cases | 1w | 2005-11-16 | 2005-11-22 |  | 0d |
| 123 |  | Review Use Cases, including CCMG members | 1d | 2005-11-23 | 2005-11-23 | 122 | 56d |
| 124 |  | Draft caMOD 2.1 Test Cases | 1w | 2005-11-16 | 2005-11-22 |  | 52d |
| 125 | 1.6.3 | **Construction** | 54d | 2005-11-23 | 2006-02-06 |  | 0d |
| 126 | 1.6.3.1 | **Iteration 1: Administration Module** | 38d | 2005-11-23 | 2006-01-13 |  | 0d |
| 127 |  | Requirements Analysis | 2w | 2005-11-23 | 2005-12-06 | 122 | 0d |
| 128 |  | Design | 2w | 2005-12-07 | 2005-12-20 | 127 | 0d |
| 129 |  | Code | 3w | 2005-12-21 | 2006-01-10 | 128 | 0d |
| 130 |  | Test | 3d | 2006-01-11 | 2006-01-13 | 129 | 0d |
| 131 |  | Develop Iteration 4 Test Plan | 2d | 2005-11-23 | 2005-11-24 | 124 | 52d |
| 132 |  | Deploy Iteration to Development Server | 1d | 2006-01-16 | 2006-01-16 | 130 | 0d |
| 133 |  | Development Test this Iteration | 5d | 2006-01-17 | 2006-01-23 | 132 | 0d |
| 134 |  | Deploy Iteration to Integration Test Server | 1d | 2006-01-24 | 2006-01-24 | 133 | 0d |
| 135 |  | Integration Test this Iterations | 3d | 2006-01-25 | 2006-01-27 | 134 | 0d |
| 136 |  | Deploy Iteration to Staging Server | 1d | 2006-01-30 | 2006-01-30 | 135 | 0d |
| 137 |  | UAT Test this Iteration | 5d | 2006-01-31 | 2006-02-06 | 136 | 0d |
| 138 | 1.6.4 | **Transition** | 3d | 2006-02-07 | 2006-02-09 |  | 0d |
| 139 |  | Code Freeze | 1d | 2006-02-07 | 2006-02-07 | 125 | 0d |
| 140 |  | Deploy Iteration to Production | 2d | 2006-02-08 | 2006-02-09 | 139 | 0d |

| ID | Task | Duration | Start | Finish | Predecessors | Total float |
| --- | --- | --- | --- | --- | --- | --- |
| 141 | Create Release Notes | 0.5d | 2006-02-08 | 2006-02-08 | 139 | 1.5d |
| 142 | Create Known Issues document | 0.5d | 2006-02-08 | 2006-02-08 | 139 | 1.5d |
| 143 | Create Fixed defects document | 0.5d | 2006-02-08 | 2006-02-08 | 139 | 1.5d |
| 144 | Create What's New Document | 0.5d | 2006-02-08 | 2006-02-08 | 139 | 1.5d |
| 145 | Milestone: Complete Version 2.1 | 0d | 2006-02-09 | 2006-02-09 | 138 | 0d |

## Version 2 (saved 2005-10-05)

Note of the change: updates to reflect progess

Last finish 2006-02-09 → 2006-03-31 (+50d). Complete tasks 8 → 40.

Changed:

| ID | Task | Start | Finish | Duration | Complete | Total float | Other |
| --- | --- | --- | --- | --- | --- | --- | --- |
| 1 | **MMHCC FY005** |  | 2006-02-09 → 2006-03-31 (+50d) | 306d → 341.1d | 29% → 61% |  |  |
| 29 | **caMOD Version 2 caBIG Silver Compliance (N-Tier)** |  | 2005-11-07 → 2005-12-27 (+50d) | 204d → 239.1d | 14% → 64% |  |  |
| 32 | **Elaboration** |  |  |  | 30% → 67% | 157d → 192.1d |  |
| 37 | **Architecture** |  |  |  | 52% → 97% | 176d → 211.1d |  |
| 38 | Initial Draft of Architecture |  | 2005-05-24 A |  | 90% → 100% | 30d → none |  |
| 39 | Internal review with MMHCC Team |  | 2005-05-25 A |  | 90% → 100% | 178d → none |  |
| 40 | Incorporate Comments/Feedback from the team review | 2005-05-26 A | 2005-05-27 A |  | 0% → 100% | 178d → none | resources TBD1 → David |
| 41 | Review architecture with the "Review Board" | 2005-06-01 A | 2005-06-01 A |  | 0% → 100% | 176d → none |  |
| 42 | Draft design document (caBIG template) | 2005-06-02 A |  |  | 0% → 90% | 176d → 201.1d | resources TBD1 → David |
| 43 | Milestone: Completed Design document |  |  |  |  |  | resources TBD1 → David |
| 44 | **User Interface Design** |  |  |  | 29% → 98% | 172.5d → 207.6d |  |
| 45 | Draft User Interface Components |  | 2005-05-24 A |  | 90% → 100% | 86.5d → none |  |
| 46 | Internal Review of Draft UI components |  | 2005-05-25 A |  | 70% → 100% | 173.1d → none |  |
| 47 | Incorporate comments/Feedback |  | 2005-05-30 A |  | 20% → 100% | 172.5d → none |  |
| 48 | Incorporate icons, banners from Graphics Artist | 2005-05-30 A |  |  | 0% → 50% | 172.5d → 182.5d |  |
| 49 | Review Draft User Interface, including CCMG members | 2005-05-31 A | 2005-06-07 A |  | 0% → 100% | 172.5d → none |  |
| 50 | Incorporate comments/feedback from CCMG | 2005-06-07 A | 2005-06-09 A |  | 0% → 100% | 172.5d → none |  |
| 51 | Incorporate template in MVC framework | 2005-06-09 A | 2005-06-14 A |  | 0% → 100% | 172.5d → none |  |
| 52 | Milestone: Completed wireframes | 2005-06-07 A | 2005-06-07 A |  | 0% → 100% | 177.5d → none |  |
| 53 | **Persistence API Development** |  | 2005-07-01 A |  | 6% → 100% | 0d → none |  |
| 54 | Determine use of automatic code generator |  | 2005-05-16 A |  | 20% → 100% | 34.6d → none |  |
| 55 | Establish baseline search capability | 2005-06-06 A | 2005-06-17 A |  | 0% → 100% | 0d → none |  |
| 56 | Establish baseline delete capability | 2005-06-20 A | 2005-06-24 A |  | 0% → 100% | 0d → none |  |
| 57 | Establish baseline insert capability | 2005-06-27 A | 2005-07-01 A |  | 0% → 100% | 0d → none |  |
| 58 | Draft Updated Object Model |  |  | 2w → 1.98w | 85% → 99% | 157d → 199.68d | resources Marc P. [50%]; TBD [25%] → Marc P. [50%]; TBD [25%]; David [50%] |
| 59 | Draft Updated Data Model |  |  |  | 85% → 98% |  |  |
| 60 | **Interface with caDSR** | 2005-06-01 A |  |  | 0% → 41% | 157d → 192.1d |  |
| 61 | Annotate UML model with well formed names and definitions | 2005-06-01 A | 2005-06-06 A |  | 0% → 100% | 157d → none |  |
| 62 | Review semantic connector output | 2005-06-06 A | 2005-06-06 A |  | 0% → 100% | 157d → none |  |
| 63 | Perform semantic annotation of UML models | 2005-06-07 A | 2005-06-08 A |  | 0% → 100% | 157d → none |  |
| 67 | Establish baseline documentation and prepare submission package | 2005-06-29 A |  |  | 0% → 90% |  |  |
| 68 | **Construction** | 2005-05-20 A | 2005-10-28 → 2005-12-19 (+52d) | 115.5d → 150.6d | 0% → 66% | 20.5d → 0d |  |
| 69 | **Iteration 1: Architecture Prototype (Evolutionary Prototype)** | 2005-05-20 A | 2005-07-13 → 2005-07-19 A (+6d) | 38d → 42.5d | 0% → 100% | 20.5d → none |  |
| 70 | **Requirements Analysis** | 2005-05-20 A | 2005-06-13 A |  | 0% → 100% | 14.5d → none |  |
| 71 | Requirements Outline | 2005-05-20 A | 2005-05-31 A |  | 0% → 100% | 20.5d → none |  |
| 72 | Complete Requirements Analysis | 2005-06-08 A | 2005-06-13 A |  | 0% → 100% | 14.5d → none | resources Ulli [50%]; TBD [25%] → Ulli [50%]; Srini [25%] |
| 73 | Design | 2005-05-31 A | 2005-06-21 A |  | 0% → 100% | 20.5d → none | resources Marc P. [50%]; TBD [25%] → Srini [50%]; Nick [25%] |
| 74 | Code | 2005-06-17 A | 2005-07-08 → 2005-07-19 A (+11d) |  | 0% → 100% | 20.5d → none | resources Marc P. [50%]; Nick → Nick; Srini [50%] |
| 75 | Test | 2005-07-08 A | 2005-07-13 A |  | 0% → 100% | 44.5d → none |  |
| 76 | Draft Deployment Scripts | 2005-07-08 A | 2005-07-13 A |  | 0% → 100% | 151.5d → none | resources TBD [25%] → David [25%] |
| 77 | **Iteration 2: Submit Cancer Models** | 2005-07-04 A | 2005-08-31 → 2005-11-04 (+65d) | 43d → 89.38d | 0% → 72% | 0d → 2.97d |  |
| 78 | Requirements Analysis | 2005-07-04 A | 2005-07-15 A |  | 0% → 100% | 0d → none | resources Ulli [75%]; TBD [50%] → Nick [75%]; Sima [50%] |
| 79 | Design | 2005-07-18 A | 2005-07-29 A |  | 0% → 100% | 0d → none | resources TBD [50%] → Srini [50%] |
| 80 | Review Wireframes, including CCMG members | 2005-08-01 A |  |  | 0% → 74% | 0d → 24.6d |  |
| 81 | Code | 2005-08-08 A | 2005-08-26 → 2005-11-03 (+69d) | 3w → 12w | 0% → 63% |  | resources Marc P. [50%]; Nick → Nick; Sima |
| 82 | Test | 2005-08-29 A | 2005-08-31 → 2005-11-04 (+65d) |  | 0% → 74% | 12d → 2.97d |  |
| 83 | **Iteration 3: Search Cancer Models** | 2005-07-18 A | 2005-09-21 → 2005-11-10 (+50d) | 48d → 83.1d | 0% → 92% |  |  |
| 84 | Requirements Analysis | 2005-07-18 A | 2005-07-29 A |  | 0% → 100% | 0d → none | resources TBD [50%]; Ulli [75%] → Ulli [75%]; Srini [50%] |
| 85 | **NCICB Security Model Integration** | 2005-08-01 A | 2005-08-19 A |  | 0% → 100% | 0d → none |  |
| 86 | Identify and interface with NCICB CSM Services | 2005-08-01 A | 2005-08-05 A |  | 0% → 100% | 0d → none | resources TBD → David |
| 87 | Identify and implement UPT Hosting | 2005-08-08 A | 2005-08-12 A |  | 0% → 100% | 124d → none | resources TBD → David |
| 88 | Intergrate into Architectural prototype | 2005-08-15 A | 2005-08-19 A |  | 0% → 100% | 124d → none | resources TBD → David |
| 89 | Design | 2005-08-08 A | 2005-08-19 A |  | 0% → 100% | 0d → none | resources Marc P. [50%]; TBD [50%] → David |
| 90 | Review Wireframes, including CCMG members | 2005-08-22 A | 2005-08-26 A |  | 0% → 100% | 0d → none |  |
| 91 | Code | 2005-08-29 A | 2005-09-16 → 2005-11-09 (+54d) |  | 0% → 75% |  | resources Marc P. [50%]; Nick → David |
| 92 | Test | 2005-09-19 A | 2005-09-21 → 2005-11-10 (+50d) |  | 0% → 75% |  |  |
| 93 | **Integration Testing Schedule** |  | 2005-10-28 → 2005-12-19 (+52d) | 113.5d → 148.6d |  |  |  |
| 99 | Deploy All Iterations to Development Server | 2005-09-22 → 2005-11-10 (+49d) | 2005-09-22 → 2005-11-11 (+50d) |  |  |  |  |
| 100 | Development Test All Iterations | 2005-09-23 → 2005-11-11 (+49d) | 2005-10-04 → 2005-11-23 (+50d) |  |  |  |  |
| 101 | Deploy All Iteration to Integration Test Server | 2005-10-05 → 2005-11-23 (+49d) | 2005-10-05 → 2005-11-24 (+50d) |  |  |  |  |
| 102 | Integration Test All Iterations | 2005-10-06 → 2005-11-24 (+49d) | 2005-10-17 → 2005-12-06 (+50d) |  |  |  |  |
| 103 | Deploy All Iterations to Staging Server | 2005-10-18 → 2005-12-06 (+49d) | 2005-10-18 → 2005-12-07 (+50d) |  |  |  |  |
| 104 | UAT Test All Iterations | 2005-10-19 → 2005-12-07 (+49d) | 2005-10-28 → 2005-12-19 (+52d) |  |  |  |  |
| 105 | **Transition** | 2005-10-31 → 2005-12-19 (+49d) | 2005-11-04 → 2005-12-26 (+52d) |  |  |  |  |
| 106 | Code Freeze | 2005-10-31 → 2005-12-19 (+49d) | 2005-10-31 → 2005-12-20 (+50d) |  |  |  | resources TBD [50%]; Nick → David |
| 107 | Deploy Iteration to Production | 2005-11-01 → 2005-12-20 (+49d) | 2005-11-02 → 2005-12-22 (+50d) |  |  |  |  |
| 108 | **Document Iteration** | 2005-10-31 → 2005-12-19 (+49d) | 2005-11-04 → 2005-12-26 (+52d) |  |  |  |  |
| 109 | Update User Guides | 2005-10-31 → 2005-12-19 (+49d) | 2005-11-04 → 2005-12-26 (+52d) |  |  |  |  |
| 110 | Update technical / design documentation | 2005-10-31 → 2005-12-19 (+49d) | 2005-11-04 → 2005-12-26 (+52d) |  |  |  | resources Ulli [50%]; TBD [50%]; Srini [50%] → Ulli [50%]; Srini [50%]; Jill [50%] |
| 111 | Regenerate JavaDocs | 2005-10-31 → 2005-12-19 (+49d) | 2005-10-31 → 2005-12-19 (+49d) |  |  |  | resources Nick → David |

| ID | Task | Start | Finish |
| --- | --- | --- | --- |
| 112 | Create Release Notes | 2005-10-31 → 2005-12-19 (+49d) | 2005-10-31 → 2005-12-19 (+49d) |
| 113 | Create Known Issues document | 2005-10-31 → 2005-12-19 (+49d) | 2005-10-31 → 2005-12-20 (+50d) |
| 114 | Create Fixed defects document | 2005-11-01 → 2005-12-20 (+49d) | 2005-11-01 → 2005-12-20 (+49d) |
| 115 | Create What's New Document | 2005-11-01 → 2005-12-20 (+49d) | 2005-11-01 → 2005-12-21 (+50d) |
| 116 | Milestone: Complete Version 2 | 2005-11-07 → 2005-12-26 (+49d) | 2005-11-07 → 2005-12-27 (+50d) |
| 117 | **caMOD Version 2.1** | 2005-11-08 → 2005-12-27 (+49d) | 2006-02-09 → 2006-03-31 (+50d) |
| 118 | **Inception** | 2005-11-08 → 2005-12-27 (+49d) | 2005-11-15 → 2006-01-04 (+50d) |
| 119 | Identify caMOD 2.1 requirements | 2005-11-08 → 2005-12-27 (+49d) | 2005-11-10 → 2005-12-30 (+50d) |
| 120 | Identify usability enhancement requirements | 2005-11-11 → 2005-12-30 (+49d) | 2005-11-15 → 2006-01-04 (+50d) |
| 121 | **Elaboration** | 2005-11-16 → 2006-01-04 (+49d) | 2005-11-23 → 2006-01-12 (+50d) |
| 122 | Draft caMOD 2.1 Use Cases | 2005-11-16 → 2006-01-04 (+49d) | 2005-11-22 → 2006-01-11 (+50d) |
| 123 | Review Use Cases, including CCMG members | 2005-11-23 → 2006-01-11 (+49d) | 2005-11-23 → 2006-01-12 (+50d) |
| 124 | Draft caMOD 2.1 Test Cases | 2005-11-16 → 2006-01-04 (+49d) | 2005-11-22 → 2006-01-11 (+50d) |
| 125 | **Construction** | 2005-11-23 → 2006-01-11 (+49d) | 2006-02-06 → 2006-03-28 (+50d) |
| 126 | **Iteration 1: Administration Module** | 2005-11-23 → 2006-01-11 (+49d) | 2006-01-13 → 2006-03-06 (+52d) |
| 127 | Requirements Analysis | 2005-11-23 → 2006-01-11 (+49d) | 2005-12-06 → 2006-01-25 (+50d) |
| 128 | Design | 2005-12-07 → 2006-01-25 (+49d) | 2005-12-20 → 2006-02-08 (+50d) |
| 129 | Code | 2005-12-21 → 2006-02-08 (+49d) | 2006-01-10 → 2006-03-01 (+50d) |
| 130 | Test | 2006-01-11 → 2006-03-01 (+49d) | 2006-01-13 → 2006-03-06 (+52d) |
| 131 | Develop Iteration 4 Test Plan | 2005-11-23 → 2006-01-11 (+49d) | 2005-11-24 → 2006-01-13 (+50d) |
| 132 | Deploy Iteration to Development Server | 2006-01-16 → 2006-03-06 (+49d) | 2006-01-16 → 2006-03-07 (+50d) |
| 133 | Development Test this Iteration | 2006-01-17 → 2006-03-07 (+49d) | 2006-01-23 → 2006-03-14 (+50d) |
| 134 | Deploy Iteration to Integration Test Server | 2006-01-24 → 2006-03-14 (+49d) | 2006-01-24 → 2006-03-15 (+50d) |
| 135 | Integration Test this Iterations | 2006-01-25 → 2006-03-15 (+49d) | 2006-01-27 → 2006-03-20 (+52d) |
| 136 | Deploy Iteration to Staging Server | 2006-01-30 → 2006-03-20 (+49d) | 2006-01-30 → 2006-03-21 (+50d) |
| 137 | UAT Test this Iteration | 2006-01-31 → 2006-03-21 (+49d) | 2006-02-06 → 2006-03-28 (+50d) |
| 138 | **Transition** | 2006-02-07 → 2006-03-28 (+49d) | 2006-02-09 → 2006-03-31 (+50d) |
| 139 | Code Freeze | 2006-02-07 → 2006-03-28 (+49d) | 2006-02-07 → 2006-03-29 (+50d) |
| 140 | Deploy Iteration to Production | 2006-02-08 → 2006-03-29 (+49d) | 2006-02-09 → 2006-03-31 (+50d) |
| 141 | Create Release Notes | 2006-02-08 → 2006-03-29 (+49d) | 2006-02-08 → 2006-03-29 (+49d) |
| 142 | Create Known Issues document | 2006-02-08 → 2006-03-29 (+49d) | 2006-02-08 → 2006-03-29 (+49d) |
| 143 | Create Fixed defects document | 2006-02-08 → 2006-03-29 (+49d) | 2006-02-08 → 2006-03-29 (+49d) |
| 144 | Create What's New Document | 2006-02-08 → 2006-03-29 (+49d) | 2006-02-08 → 2006-03-29 (+49d) |
| 145 | Milestone: Complete Version 2.1 | 2006-02-09 → 2006-03-31 (+50d) | 2006-02-09 → 2006-03-31 (+50d) |
