# camod_2.1_schedule

How a schedule from MS Project changed from version to version. A marks actual dates.

## Version 1 (saved 2006-01-06)

| ID | WBS | Task | Duration | Start | Finish | Predecessors | Total float | Constraint |
| --- | --- | --- | --- | --- | --- | --- | --- | --- |
| 1 | 1 | **caMOD Version 2.1** | 116.75d? | 2005-12-29 A | 2006-06-09 |  | 0d |  |
| 2 | 1.1 | **Inception** | 2.4d | 2005-12-29 | 2006-01-02 |  | 41.15d |  |
| 3 |  | Identify caMOD 2.1 requirements | 2.4d | 2005-12-29 | 2006-01-02 |  | 19.65d | start no earlier than 2005-12-29 |
| 4 |  | Identify usability enhancement requirements | 2.4d | 2005-12-29 | 2006-01-02 |  | 19.65d |  |
| 5 | 1.2 | **Elaboration** | 73.2d | 2006-01-02 | 2006-04-13 | 2 | 41.15d |  |
| 6 |  | Draft caMOD 2.1 Test Cases | 1w | 2006-01-02 | 2006-01-09 |  | 87.85d |  |
| 7 |  | Draft caMOD 2.1 Usability Enhancement Use Cases | 2w | 2006-01-02 | 2006-01-16 |  | 82.85d |  |
| 8 |  | Draft caMOD 2.1 Use Cases | 2w | 2006-01-02 | 2006-01-16 | 2 | 19.65d |  |
| 9 |  | Review Use Cases, including CCMG members | 1d | 2006-01-16 | 2006-04-13 | 8 | 19.65d |  |
| 10 | 1.2.5 | **caMOD database enhancements** | 10.5d | 2006-01-02 | 2006-01-16 |  | 79.35d |  |
| 11 |  | Consolidate all DB changes | 1w | 2006-01-02 | 2006-01-09 |  | 57.85d | start no earlier than 2005-06-06 |
| 12 |  | Updated Object Model | 1d | 2006-01-09 | 2006-01-13 | 11 | 57.85d |  |
| 13 |  | Updated Data Model | 1d | 2006-01-13 | 2006-01-16 | 12 | 57.85d |  |
| 14 |  | Milestone: Completed ER document | 0d | 2006-01-16 | 2006-01-16 | 13 | 57.85d |  |
| 15 | 1.2.6 | **Interface with caDSR** | 24.5d | 2006-01-16 | 2006-02-20 |  | 79.35d |  |
| 16 |  | Annotate UML model with well formed names and definitions | 3d | 2006-01-16 | 2006-01-19 | 10 | 57.85d |  |
| 17 |  | Review semantic connector output | 0.5d | 2006-01-19 | 2006-01-20 | 16 | 57.85d |  |
| 18 |  | Perform semantic annotation of UML models | 2d | 2006-01-20 | 2006-01-24 | 17 | 57.85d |  |
| 19 |  | Run UML loader | 2w | 2006-01-24 | 2006-02-07 | 18 | 57.85d |  |
| 20 |  | Review CDEs in staging | 2d | 2006-02-07 | 2006-02-09 | 19 | 57.85d |  |
| 21 |  | Curate additional metadata | 2d | 2006-02-09 | 2006-02-13 | 20 | 57.85d |  |
| 22 |  | Establish baseline documentation and prepare submission package | 1w | 2006-02-13 | 2006-02-20 | 21 | 57.85d |  |
| 23 | 1.3 | **Construction** | 114.75d? | 2005-12-29 A | 2006-06-07 |  | 2d |  |
| 24 | 1.3.1 | **Iteration 1** | 48.75d? | 2005-12-29 | 2006-03-07 |  | 0d |  |
| 25 |  | Requirements Analysis | 3d | 2005-12-29 | 2006-01-02 |  | 0d |  |
| 26 |  | Design | 0.5w | 2006-01-03 | 2006-01-05 | 25 | 0d |  |
| 27 |  | Data cleanup | 2d | 2006-01-16 | 2006-01-18 | 10 | 80.35d |  |
| 28 |  | Create schema migration scripts | 5d | 2006-01-05 | 2006-01-12 | 26 | 0d |  |
| 29 |  | Hibernate Mapping changes | 2.25d | 2006-01-12 | 2006-01-16 | 28 | 0d |  |
| 30 | 1.3.1.6 | **Code** | 44.75d? | 2005-12-29 | 2006-03-01 |  | 0d |  |
| 31 | 1.3.1.6.1 | **EVS Tree modification** | 6d | 2005-12-29 | 2006-01-05 |  | 38.75d |  |
| 32 |  | #37 - EVS Tree - Why does a search for synonyms in anatomy tree return disease and drugs? | 1d | 2005-12-29 | 2005-12-29 |  | 29.75d |  |
| 33 |  | #274 - EVS Tree - restore the association between organ and diagnosis | 6d | 2005-12-29 | 2006-01-05 |  | 24.75d |  |
| 34 |  | #276 - EVS Tree - use display name instead of concept name | 1d | 2005-12-29 | 2005-12-29 |  | 29.75d |  |
| 35 |  | #277 - EVS Tree - develop procedure to inform EVS team about newly entered diagnostic terms | 2d | 2005-12-29 | 2005-12-30 |  | 28.75d |  |
| 36 |  | #278 - EVS Tree - change skin to match caMOD application | 2d | 2005-12-29 | 2005-12-30 |  | 28.75d |  |
| 37 |  | #279 - EVS Tree - remove the word Done from the tree | 1d | 2005-12-29 | 2005-12-29 |  | 29.75d |  |
| 38 | 1.3.1.6.2 | **caMOD usibility enhancements** | 11.25d? | 2006-01-05 | 2006-01-20 |  | 28d |  |
| 39 |  | #273 - Improve the way the drop down lists work | 1w | 2006-01-05 | 2006-01-12 | 26 | 20.25d |  |
| 40 |  | #304 - Provide link to MTB record at Jax on the Search General Info page | 1d? | 2006-01-19 | 2006-01-20 | 50 | 28d |  |
| 41 |  | #345 - Viewing/submitting images while in https mode has nag message in IE | 2d | 2006-01-05 | 2006-01-09 | 26 | 36.25d |  |
| 42 | 1.3.1.6.3 | **caMOD enhancements** | 17d | 2005-12-29 | 2006-01-20 |  | 27.75d |  |
| 43 |  | #359 - Make caMod available in the grid | 2w | 2006-01-09 | 2006-01-20 |  | 26.75d | start no earlier than 2006-01-09 |
| 44 |  | #291 - Genetic Des - Induced Mutation search inconsistency | 0.1d | 2005-12-29 | 2005-12-29 |  | 43.65d |  |
| 45 |  | #171 - Gene Delivery can be a way other than virus | 0.1d | 2006-01-09 | 2006-01-09 |  | 36.65d | start no earlier than 2006-01-09 |
| 46 | 1.3.1.6.4 | **caMOD database enhancements** | 32d | 2006-01-16 | 2006-03-01 | 29 | 0d |  |
| 47 |  | #43 - Gene ID in spon mutation page | 0.5d | 2006-01-16 | 2006-01-17 |  | 0d |  |
| 48 |  | #249 - No "other" can be choose from Donor Species | 0.5d | 2006-01-17 | 2006-01-17 | 47 | 0d |  |
| 49 |  | #296 - DB - wrong display of targeted vs random integration of transgene and genomic segment | 1d | 2006-01-17 | 2006-01-18 | 48 | 0d |  |
| 50 |  | #303 - DB - Add field to publication table to store the J number | 1d | 2006-01-18 | 2006-01-19 | 49 | 0d |  |
| 51 |  | #326 - DB - Remove Duplicates in the taxon table and consider splitting the taxon table in species and strain table (back to what we... | 1w | 2006-01-19 | 2006-01-26 | 50, 49 | 0d |  |
| 52 |  | #327 - DB - Investigate enhancing the design for organ/disease table relations | 2d | 2006-01-26 | 2006-01-30 | 51 | 0d |  |
| 53 |  | #328 - DB - Remove any unecessary cross-reference tables | 1w | 2006-01-30 | 2006-02-06 | 52 | 0d |  |
| 54 |  | #332 - DB - clean up field names | 2d | 2006-02-06 | 2006-02-08 | 53 | 0d |  |
| 55 |  | #333 - DB - Tackle env factor vs agent and therapy vs carcinogenic intervention problems | 1w | 2006-02-08 | 2006-02-15 | 54, 53 | 0d |  |
| 56 |  | #334 - DB - Change “tumorProgression” to “tumorResponse” in the therapy object | 0.5d | 2006-02-15 | 2006-02-16 | 55 | 0d |  |
| 57 |  | #336 - DB - Delete "inherited" attributes isCMAP_agent and source from the agent object | 1d | 2006-02-16 | 2006-02-17 | 56 | 0d |  |
| 58 |  | #338 - DB - Add an other option to the drop-down list of clinical marker | 0.5d | 2006-02-17 | 2006-02-17 | 57, 56 | 0d |  |
| 59 |  | #340 - DB - Change the relationship between animal_availibility and animal_distributor objects | 1d | 2006-02-17 | 2006-02-20 | 58 | 0d |  |
| 60 |  | #342 - DB - Modify/Clean up the way we handle units | 1w | 2006-02-20 | 2006-02-27 | 59 | 0d |  |
| 61 |  | #343 - DB - Change Harvest_date from a date field to a varchar | 0.5d | 2006-02-27 | 2006-02-28 | 60, 59 | 0d |  |
| 62 |  | #346 - DB - Change MGI number to a varchar field | 0.5d | 2006-02-28 | 2006-02-28 | 61 | 0d |  |
| 63 |  | #348 - DB - Add an uncontrolledVocab for administative route to Ab Cancer Model for Xenograft. | 1d | 2006-02-28 | 2006-03-01 | 62 | 0d |  |
| 64 |  | Tag build and deploy to QA server | 1d | 2006-03-01 | 2006-03-02 | 30 | 0d |  |
| 65 |  | Test | 3d | 2006-03-02 | 2006-03-07 | 64 | 65d |  |
| 66 |  | Milestone: Iteration1 completed | 3d | 2006-03-07 | 2006-03-10 | 65 | 65d |  |
| 67 | 1.3.3 | **Iteration 2** | 23.5d | 2006-03-02 A | 2006-04-05 | 64 | 47.5d |  |
| 68 |  | Requirements Analysis | 2d | 2006-03-02 | 2006-03-06 |  | 69d |  |
| 69 |  | Design | 2d | 2006-03-02 | 2006-03-06 |  | 69d |  |
| 70 | 1.3.3.3 | **Code** | 17.5d | 2006-03-02 A | 2006-03-28 |  | 0d |  |

| ID | WBS | Task | Duration | Start | Finish | Predecessors | Total float |
| --- | --- | --- | --- | --- | --- | --- | --- |
| 71 | 1.3.3.3.1 | **caMOD usibility enhancements** | 10d | 2006-03-02 | 2006-03-16 |  | 0d |
| 72 |  | #55 - Feature request - highlight keyword in search result | 3d | 2006-03-02 | 2006-03-07 |  | 14.5d |
| 73 |  | #234 - Allow snapshot of cancer model for reference in publications | 2w | 2006-03-02 | 2006-03-16 |  | 7.5d |
| 74 |  | #238 - Make search result list configurable | 1w | 2006-03-02 | 2006-03-09 |  | 0d |
| 75 | 1.3.3.3.2 | **caMOD enhancements** | 17.5d | 2006-03-02 | 2006-03-28 |  | 0d |
| 76 |  | #61 - Sequence Id field on search detail page not populated | 1d | 2006-03-02 | 2006-03-03 |  | 16.5d |
| 77 |  | #225 - Clear Organ name on screens where it is not required - | 1d | 2006-03-02 | 2006-03-03 | 47 | 15.5d |
| 78 |  | #235 - Make comments that are submitted in the retrieval page searchable | 2d | 2006-03-02 | 2006-03-06 |  | 15.5d |
| 79 |  | #237 - Add the ability to remove an image from Eng. Trans, Gen. Seg or Targ. Mod. | 1d | 2006-03-03 | 2006-03-06 | 77 | 15.5d |
| 80 |  | #272 - Add diagnosis to the summary on the histopath search page | 0.5d | 2006-03-09 | 2006-03-10 | 74 | 0d |
| 81 |  | #289 - information if mouse is a tool mouse doesn't show up on mod char search page | 0.5d | 2006-03-02 | 2006-03-03 | 48 | 17d |
| 82 |  | #295 - Verify all free text fields allow html markup | 1d | 2006-03-10 | 2006-03-13 | 80 | 0d |
| 83 |  | #297 - Missed camod:shorten tag for therapeutic approaches | 0.5d | 2006-03-13 | 2006-03-13 | 82 | 0d |
| 84 |  | #356 - Find a solution for entering the nomenclature and genotype information. | 2w | 2006-03-13 | 2006-03-27 | 83 | 0d |
| 85 |  | #371 - Force/validate lowercase usernames on entry | 0.5d | 2006-03-27 | 2006-03-28 | 84, 83 | 0d |
| 86 | 1.3.3.3.3 | **EVS Tree modification** | 10d | 2006-03-02 | 2006-03-16 |  | 7.5d |
| 87 |  | #280 - EVS Tree - show species specific anatomy vocabularies | 1w | 2006-03-02 | 2006-03-09 |  | 12.5d |
| 88 |  | #281 - EVS Tree - utilize the staining vocabulary | 3d | 2006-03-02 | 2006-03-07 |  | 14.5d |
| 89 |  | #371 - EVS Tree- make display of EVS tree generic | 2w | 2006-03-02 | 2006-03-16 |  | 7.5d |
| 90 |  | Tag build and deploy to QA server | 3d | 2006-03-28 | 2006-03-31 | 70 | 0d |
| 91 |  | Test | 3d | 2006-03-31 | 2006-04-05 | 90 | 44.5d |
| 92 |  | Milestone: Iteration2 completed | 3d | 2006-04-05 | 2006-04-10 | 91 | 44.5d |
| 93 | 1.3.5 | **Iteration 3** | 31d | 2006-03-31 | 2006-05-15 | 90 | 0d |
| 94 |  | Requirements Analysis | 2.14d | 2006-03-31 | 2006-04-04 |  | 48.36d |
| 95 |  | Design | 3d | 2006-03-31 | 2006-04-05 |  | 47.5d |
| 96 | 1.3.5.3 | **Code** | 25d | 2006-03-31 | 2006-05-05 |  | 0d |
| 97 | 1.3.5.3.1 | **caMOD usibility enhancements** | 25d | 2006-03-31 | 2006-05-05 |  | 0d |
| 98 |  | #261 - Add the ability to save search queries for reuse | 2w | 2006-03-31 | 2006-04-14 |  | 0d |
| 99 |  | #318 - More closely integrate caMOD and caArray | 3w | 2006-04-14 | 2006-05-05 | 98 | 0d |
| 100 |  | #320 - Find ways to speed up the entry of organs and diagnoses | 1w | 2006-03-31 | 2006-04-07 |  | 6d |
| 101 |  | #321 - Log updates to Edited-approved models | 2w | 2006-04-07 | 2006-04-21 | 100 | 6d |
| 102 |  | #329 - Data Issue - current genetic background | 2d | 2006-04-21 | 2006-04-25 | 101 | 6d |
| 103 |  | #330 - Display the DTP in vivo and yeast models as animal models | 1d | 2006-04-25 | 2006-04-26 | 102 | 6d |
| 104 |  | #347 - Move the e-mail code to its own utility - Consolidate | 1d | 2006-04-26 | 2006-04-27 | 103 | 6d |
| 105 | 1.3.5.3.1.8 | **#369 - Create remote interface for caMOD object model** | 10d | 2006-03-31 | 2006-04-14 |  | 15d |
| 106 |  | #360 - steps to make caMod OM depreciated in caCore | 2w | 2006-03-31 | 2006-04-14 |  | 15d |
| 107 | 1.3.5.3.2 | **caMOD enhancements** | 10d | 2006-03-31 | 2006-04-14 |  | 15d |
| 108 |  | #67 - Access to site without accepting the agreement | 1d | 2006-03-31 | 2006-04-03 |  | 24d |
| 109 |  | #87 - Date Formating issue | 0.5d | 2006-03-31 | 2006-03-31 |  | 24.5d |
| 110 |  | #132 - For existing sid images, get the URL from the thumbnail | 1d | 2006-03-31 | 2006-04-03 |  | 24d |
| 111 |  | #229 - Add help button (=link to online help) to the title of every page | 0.5d | 2006-03-31 | 2006-03-31 |  | 24.5d |
| 112 |  | #245 - Admin part - display messages when no search results returned | 0.5d | 2006-03-31 | 2006-03-31 |  | 24.5d |
| 113 |  | #290 - Cell Line Publication - throws uncaught connection error | 1d | 2006-03-31 | 2006-04-03 |  | 24d |
| 114 |  | #301 - Add link to additional info about clinical trials such as types of cancer the trial is conducted for | 1d | 2006-03-31 | 2006-04-03 |  | 24d |
| 115 |  | #302 - Allow user to search for metastasis in specific organ or for metastatic models in general on Advanced Search page | 1d | 2006-03-31 | 2006-04-03 |  | 24d |
| 116 |  | #314 - make comments fields on all pages searchable | 1d | 2006-03-31 | 2006-04-03 |  | 24d |
| 117 |  | #335 - The inhibition rate field in the screening_results table for the yeast data is not used. | 1d | 2006-03-31 | 2006-04-03 |  | 24d |
| 118 |  | #375 - Make caMOD available on download center | 2w | 2006-03-31 | 2006-04-14 |  | 15d |
| 119 |  | Tag build and deploy to QA server | 3d | 2006-05-05 | 2006-05-10 | 96 | 0d |
| 120 |  | Test | 3d | 2006-05-10 | 2006-05-15 | 119 | 0d |
| 121 |  | Milestone: Iteration3 completed | 3d | 2006-05-15 | 2006-05-18 | 120 | 0d |
| 122 | 1.3.7 | **Integration Testing Schedule** | 14.5d | 2006-05-18 | 2006-06-07 | 121 | 0d |
| 123 | 1.3.7.1 | **Develop Test Plan** | 10d | 2006-05-18 | 2006-06-01 |  | 6.5d |
| 124 |  | Develop Iteration 1 Test Plan | 6d | 2006-05-18 | 2006-05-26 |  | 10.5d |
| 125 |  | Develop Iteration 2 Test Plan | 6d | 2006-05-18 | 2006-05-26 |  | 10.5d |
| 126 |  | Develop Integration Test Plan | 10d | 2006-05-18 | 2006-06-01 |  | 6.5d |
| 127 |  | Deploy All Iterations to Development Server | 1d | 2006-05-18 | 2006-05-19 |  | 15.5d |
| 128 |  | Development Test All Iterations | 5.6d | 2006-05-18 | 2006-05-25 |  | 10.9d |
| 129 |  | Deploy All Iteration to Integration Test Server | 1.5d | 2006-05-18 | 2006-05-19 |  | 0d |
| 130 |  | Integration Test All Iterations | 8d | 2006-05-18 | 2006-05-30 |  | 8.5d |
| 131 |  | Deploy All Iterations to Staging Server | 1d | 2006-05-19 | 2006-05-22 | 129 | 0d |
| 132 |  | Test All Iterations | 12d | 2006-05-22 | 2006-06-07 | 131 | 0d |
| 133 | 1.4 | **Transition** | 116.75d | 2005-12-29 | 2006-06-09 |  | 0d |
| 134 |  | Code Freeze | 1d | 2006-05-18 | 2006-05-19 | 121 | 15.5d |
| 135 |  | Deploy Iteration to Production | 2d | 2006-06-07 | 2006-06-09 | 132 | 0d |
| 136 | 1.4.3 | **Document Iteration** | 106.25d | 2005-12-29 | 2006-05-26 |  | 10.5d |
| 137 |  | Update User Guides | 6d | 2006-05-18 | 2006-05-26 | 121 | 10.5d |
| 138 |  | Update technical / design documentation | 3.56d | 2005-12-29 | 2006-01-03 |  | 113.19d |
| 139 |  | Regenerate JavaDocs | 0.25d | 2005-12-29 | 2005-12-29 |  | 116.5d |
| 140 |  | Create Release Notes | 0.5d | 2005-12-29 | 2005-12-29 |  | 116.25d |

| ID | Task | Duration | Start | Finish | Predecessors | Total float |
| --- | --- | --- | --- | --- | --- | --- |
| 141 | Create Known Issues document | 0.5d | 2005-12-29 | 2005-12-29 |  | 116.25d |
| 142 | Create Fixed defects document | 0.5d | 2005-12-29 | 2005-12-29 |  | 116.25d |
| 143 | Create What's New Document | 0.5d | 2005-12-29 | 2005-12-29 |  | 116.25d |
| 144 | Milestone: Complete Version 2.1 | 0d | 2006-06-09 | 2006-06-09 | 135 | 0d |

## Version 2 (saved 2006-01-09)

Last finish 2006-06-09 → 2006-06-12 (+3d).

Added:

| ID | Task | Duration | Start | Finish | Predecessors |
| --- | --- | --- | --- | --- | --- |
| 48 | #243 - DB - No "other" can be choose from Donor Species | 1d | 2006-01-17 | 2006-01-18 | 47 |
| 58 | #335 - DB - The inhibition rate field in the screening_results table for the yeast data is not used. | 0.1d | 2006-02-17 | 2006-02-17 | 57 |

Changed:

| ID | Task | Start | Finish | Duration | Complete | Total float | Predecessors | Other |
| --- | --- | --- | --- | --- | --- | --- | --- | --- |
| 1 | **caMOD Version 2.1** |  | 2006-06-09 → 2006-06-12 (+3d) | 116.75d? → 117.85d | 0% → 1% |  |  |  |
| 5 | **Elaboration** | 2006-01-02 A |  |  | 0% → 4% | 41.15d → 42.25d |  |  |
| 10 | **caMOD database enhancements** | 2006-01-02 A |  |  | 0% → 36% | 79.35d → 80.45d |  |  |
| 11 | Consolidate all DB changes | 2006-01-02 A |  |  | 0% → 50% |  |  |  |
| 23 | **Construction** |  | 2006-06-07 → 2006-06-08 (+1d) | 114.75d? → 115.85d |  |  |  |  |
| 24 | **Iteration 1** |  | 2006-03-07 → 2006-03-08 (+1d) | 48.75d? → 49.85d |  |  |  |  |
| 30 | **Code** |  | 2006-03-01 → 2006-03-02 (+1d) | 44.75d? → 45.85d |  |  |  |  |
| 38 | **caMOD usibility enhancements** |  | 2006-01-20 → 2006-01-23 (+3d) | 11.25d? → 12.25d |  | 28d → 28.1d |  |  |
| 40 | #304 - Provide link to MTB record at Jax on the Search General Info page | 2006-01-19 → 2006-01-20 (+1d) | 2006-01-20 → 2006-01-23 (+3d) | 1d? → 1d |  |  |  |  |
| 43 | #359 - Make caMod available in the grid |  |  |  |  | 26.75d → 27.75d |  | resources David → Marc P. |
| 46 | **caMOD database enhancements** |  | 2006-03-01 → 2006-03-02 (+1d) | 32d → 33.1d |  |  |  |  |
| 47 | #43 - DB - Gene ID in spon mutation page |  |  |  |  |  |  | was named #43 - Gene ID in spon mutation page |
| 49 | #249 - No "other" can be choose from Donor Species | 2006-01-17 → 2006-01-18 (+1d) | 2006-01-17 → 2006-01-18 (+1d) |  |  |  | 47 → 48, 47 |  |
| 50 | #296 - DB - wrong display of targeted vs random integration of transgene and genomic segment | 2006-01-17 → 2006-01-18 (+1d) | 2006-01-18 → 2006-01-19 (+1d) |  |  |  |  |  |
| 51 | #303 - DB - Add field to publication table to store the J number | 2006-01-18 → 2006-01-19 (+1d) | 2006-01-19 → 2006-01-20 (+1d) |  |  |  |  |  |
| 52 | #326 - DB - Remove Duplicates in the taxon table and consider splitting the taxon table in species and strain table (back to what we... | 2006-01-19 → 2006-01-20 (+1d) | 2006-01-26 → 2006-01-27 (+1d) |  |  |  |  |  |
| 53 | #327 - DB - Investigate enhancing the design for organ/disease table relations | 2006-01-26 → 2006-01-27 (+1d) | 2006-01-30 → 2006-01-31 (+1d) |  |  |  |  |  |
| 54 | #328 - DB - Remove any unecessary cross-reference tables | 2006-01-30 → 2006-01-31 (+1d) | 2006-02-06 → 2006-02-07 (+1d) |  |  |  |  |  |
| 55 | #332 - DB - clean up field names | 2006-02-06 → 2006-02-07 (+1d) | 2006-02-08 → 2006-02-09 (+1d) |  |  |  |  |  |
| 56 | #333 - DB - Tackle env factor vs agent and therapy vs carcinogenic intervention problems | 2006-02-08 → 2006-02-09 (+1d) | 2006-02-15 → 2006-02-16 (+1d) |  |  |  |  |  |
| 57 | #334 - DB - Change “tumorProgression” to “tumorResponse” in the therapy object | 2006-02-15 → 2006-02-16 (+1d) | 2006-02-16 → 2006-02-17 (+1d) |  |  |  |  |  |
| 59 | #336 - DB - Delete "inherited" attributes isCMAP_agent and source from the agent object | 2006-02-16 → 2006-02-17 (+1d) | 2006-02-17 → 2006-02-20 (+3d) |  |  |  | 57 → 58 |  |
| 60 | #338 - DB - Add an other option to the drop-down list of clinical marker | 2006-02-17 → 2006-02-20 (+3d) | 2006-02-17 → 2006-02-20 (+3d) |  |  |  |  |  |
| 61 | #340 - DB - Change the relationship between animal_availibility and animal_distributor objects | 2006-02-17 → 2006-02-20 (+3d) | 2006-02-20 → 2006-02-21 (+1d) |  |  |  |  |  |
| 62 | #342 - DB - Modify/Clean up the way we handle units | 2006-02-20 → 2006-02-21 (+1d) | 2006-02-27 → 2006-02-28 (+1d) |  |  |  |  |  |
| 63 | #343 - DB - Change Harvest_date from a date field to a varchar | 2006-02-27 → 2006-02-28 (+1d) | 2006-02-28 → 2006-03-01 (+1d) |  |  |  |  |  |
| 64 | #346 - DB - Change MGI number to a varchar field | 2006-02-28 → 2006-03-01 (+1d) | 2006-02-28 → 2006-03-01 (+1d) |  |  |  |  |  |
| 65 | #348 - DB - Add an uncontrolledVocab for administative route to Ab Cancer Model for Xenograft. | 2006-02-28 → 2006-03-01 (+1d) | 2006-03-01 → 2006-03-02 (+1d) |  |  |  |  |  |
| 66 | Tag build and deploy to QA server | 2006-03-01 → 2006-03-02 (+1d) | 2006-03-02 → 2006-03-03 (+1d) |  |  |  |  |  |
| 67 | Test | 2006-03-02 → 2006-03-03 (+1d) | 2006-03-07 → 2006-03-08 (+1d) |  |  |  |  |  |
| 68 | Milestone: Iteration1 completed | 2006-03-07 → 2006-03-08 (+1d) | 2006-03-10 → 2006-03-13 (+3d) |  |  |  |  |  |
| 69 | **Iteration 2** | 2006-03-02 A → 2006-03-03 A (+1d) | 2006-04-05 → 2006-04-06 (+1d) |  |  |  |  |  |
| 70 | Requirements Analysis | 2006-03-02 → 2006-03-03 (+1d) | 2006-03-06 → 2006-03-07 (+1d) |  |  |  |  |  |
| 71 | Design | 2006-03-02 → 2006-03-03 (+1d) | 2006-03-06 → 2006-03-07 (+1d) |  |  |  |  |  |
| 72 | **Code** | 2006-03-02 A → 2006-03-03 A (+1d) | 2006-03-28 → 2006-03-29 (+1d) |  |  |  |  |  |
| 73 | **caMOD usibility enhancements** | 2006-03-02 → 2006-03-03 (+1d) | 2006-03-16 → 2006-03-17 (+1d) |  |  |  |  |  |
| 74 | #55 - Feature request - highlight keyword in search result | 2006-03-02 → 2006-03-03 (+1d) | 2006-03-07 → 2006-03-08 (+1d) |  |  |  |  |  |
| 75 | #234 - Allow snapshot of cancer model for reference in publications | 2006-03-02 → 2006-03-03 (+1d) | 2006-03-16 → 2006-03-17 (+1d) |  |  |  |  |  |
| 76 | #238 - Make search result list configurable | 2006-03-02 → 2006-03-03 (+1d) | 2006-03-09 → 2006-03-10 (+1d) |  |  |  |  |  |
| 77 | **caMOD enhancements** | 2006-03-02 → 2006-03-03 (+1d) | 2006-03-28 → 2006-03-29 (+1d) |  |  |  |  |  |
| 78 | #61 - Sequence Id field on search detail page not populated | 2006-03-02 → 2006-03-03 (+1d) | 2006-03-03 → 2006-03-06 (+3d) |  |  |  |  |  |
| 79 | #225 - Clear Organ name on screens where it is not required - | 2006-03-02 → 2006-03-03 (+1d) | 2006-03-03 → 2006-03-06 (+3d) |  |  |  |  |  |
| 80 | #235 - Make comments that are submitted in the retrieval page searchable | 2006-03-02 → 2006-03-03 (+1d) | 2006-03-06 → 2006-03-07 (+1d) |  |  |  |  |  |
| 81 | #237 - Add the ability to remove an image from Eng. Trans, Gen. Seg or Targ. Mod. | 2006-03-03 → 2006-03-06 (+3d) | 2006-03-06 → 2006-03-07 (+1d) |  |  |  |  |  |
| 82 | #272 - Add diagnosis to the summary on the histopath search page | 2006-03-09 → 2006-03-10 (+1d) | 2006-03-10 → 2006-03-13 (+3d) |  |  |  |  |  |
| 83 | #289 - information if mouse is a tool mouse doesn't show up on mod char search page | 2006-03-02 → 2006-03-03 (+1d) | 2006-03-03 → 2006-03-06 (+3d) |  |  |  |  |  |
| 84 | #295 - Verify all free text fields allow html markup | 2006-03-10 → 2006-03-13 (+3d) | 2006-03-13 → 2006-03-14 (+1d) |  |  |  |  |  |
| 85 | #297 - Missed camod:shorten tag for therapeutic approaches | 2006-03-13 → 2006-03-14 (+1d) | 2006-03-13 → 2006-03-14 (+1d) |  |  |  |  |  |
| 86 | #356 - Find a solution for entering the nomenclature and genotype information. | 2006-03-13 → 2006-03-14 (+1d) | 2006-03-27 → 2006-03-28 (+1d) |  |  |  |  |  |
| 87 | #371 - Force/validate lowercase usernames on entry | 2006-03-27 → 2006-03-28 (+1d) | 2006-03-28 → 2006-03-29 (+1d) |  |  |  |  |  |
| 88 | **EVS Tree modification** | 2006-03-02 → 2006-03-03 (+1d) | 2006-03-16 → 2006-03-17 (+1d) |  |  |  |  |  |
| 89 | #280 - EVS Tree - show species specific anatomy vocabularies | 2006-03-02 → 2006-03-03 (+1d) | 2006-03-09 → 2006-03-10 (+1d) |  |  |  |  |  |
| 90 | #281 - EVS Tree - utilize the staining vocabulary | 2006-03-02 → 2006-03-03 (+1d) | 2006-03-07 → 2006-03-08 (+1d) |  |  |  |  |  |
| 91 | #371 - EVS Tree- make display of EVS tree generic | 2006-03-02 → 2006-03-03 (+1d) | 2006-03-16 → 2006-03-17 (+1d) |  |  |  |  |  |
| 92 | Tag build and deploy to QA server | 2006-03-28 → 2006-03-29 (+1d) | 2006-03-31 → 2006-04-03 (+3d) |  |  |  |  |  |
| 93 | Test | 2006-03-31 → 2006-04-03 (+3d) | 2006-04-05 → 2006-04-06 (+1d) |  |  |  |  |  |
| 94 | Milestone: Iteration2 completed | 2006-04-05 → 2006-04-06 (+1d) | 2006-04-10 → 2006-04-11 (+1d) |  |  |  |  |  |
| 95 | **Iteration 3** | 2006-03-31 → 2006-04-03 (+3d) | 2006-05-15 → 2006-05-16 (+1d) |  |  |  |  |  |
| 96 | Requirements Analysis | 2006-03-31 → 2006-04-03 (+3d) | 2006-04-04 → 2006-04-05 (+1d) |  |  |  |  |  |
| 97 | Design | 2006-03-31 → 2006-04-03 (+3d) | 2006-04-05 → 2006-04-06 (+1d) |  |  |  |  |  |
| 98 | **Code** | 2006-03-31 → 2006-04-03 (+3d) | 2006-05-05 → 2006-05-08 (+3d) |  |  |  |  |  |
| 99 | **caMOD usibility enhancements** | 2006-03-31 → 2006-04-03 (+3d) | 2006-05-05 → 2006-05-08 (+3d) |  |  |  |  |  |
| 100 | #261 - Add the ability to save search queries for reuse | 2006-03-31 → 2006-04-03 (+3d) | 2006-04-14 → 2006-04-17 (+3d) |  |  |  |  |  |
| 101 | #318 - More closely integrate caMOD and caArray | 2006-04-14 → 2006-04-17 (+3d) | 2006-05-05 → 2006-05-08 (+3d) |  |  |  |  |  |
| 102 | #320 - Find ways to speed up the entry of organs and diagnoses | 2006-03-31 → 2006-04-03 (+3d) | 2006-04-07 → 2006-04-10 (+3d) |  |  |  |  |  |
| 103 | #321 - Log updates to Edited-approved models | 2006-04-07 → 2006-04-10 (+3d) | 2006-04-21 → 2006-04-24 (+3d) |  |  |  |  |  |
| 104 | #329 - Data Issue - current genetic background | 2006-04-21 → 2006-04-24 (+3d) | 2006-04-25 → 2006-04-26 (+1d) |  |  |  |  |  |
| 105 | #330 - Display the DTP in vivo and yeast models as animal models | 2006-04-25 → 2006-04-26 (+1d) | 2006-04-26 → 2006-04-27 (+1d) |  |  |  |  |  |
| 106 | #347 - Move the e-mail code to its own utility - Consolidate | 2006-04-26 → 2006-04-27 (+1d) | 2006-04-27 → 2006-04-28 (+1d) |  |  |  |  |  |
| 107 | **#369 - Create remote interface for caMOD object model** | 2006-03-31 → 2006-04-03 (+3d) | 2006-04-14 → 2006-04-17 (+3d) |  |  |  |  |  |

| ID | Task | Start | Finish | Duration |
| --- | --- | --- | --- | --- |
| 108 | #360 - steps to make caMod OM depreciated in caCore | 2006-03-31 → 2006-04-03 (+3d) | 2006-04-14 → 2006-04-17 (+3d) |  |
| 109 | **caMOD enhancements** | 2006-03-31 → 2006-04-03 (+3d) | 2006-04-14 → 2006-04-17 (+3d) |  |
| 110 | #67 - Access to site without accepting the agreement | 2006-03-31 → 2006-04-03 (+3d) | 2006-04-03 → 2006-04-04 (+1d) |  |
| 111 | #87 - Date Formating issue | 2006-03-31 → 2006-04-03 (+3d) | 2006-03-31 → 2006-04-03 (+3d) |  |
| 112 | #132 - For existing sid images, get the URL from the thumbnail | 2006-03-31 → 2006-04-03 (+3d) | 2006-04-03 → 2006-04-04 (+1d) |  |
| 113 | #229 - Add help button (=link to online help) to the title of every page | 2006-03-31 → 2006-04-03 (+3d) | 2006-03-31 → 2006-04-03 (+3d) |  |
| 114 | #245 - Admin part - display messages when no search results returned | 2006-03-31 → 2006-04-03 (+3d) | 2006-03-31 → 2006-04-03 (+3d) |  |
| 115 | #290 - Cell Line Publication - throws uncaught connection error | 2006-03-31 → 2006-04-03 (+3d) | 2006-04-03 → 2006-04-04 (+1d) |  |
| 116 | #301 - Add link to additional info about clinical trials such as types of cancer the trial is conducted for | 2006-03-31 → 2006-04-03 (+3d) | 2006-04-03 → 2006-04-04 (+1d) |  |
| 117 | #302 - Allow user to search for metastasis in specific organ or for metastatic models in general on Advanced Search page | 2006-03-31 → 2006-04-03 (+3d) | 2006-04-03 → 2006-04-04 (+1d) |  |
| 118 | #314 - make comments fields on all pages searchable | 2006-03-31 → 2006-04-03 (+3d) | 2006-04-03 → 2006-04-04 (+1d) |  |
| 119 | #335 - The inhibition rate field in the screening_results table for the yeast data is not used. | 2006-03-31 → 2006-04-03 (+3d) | 2006-04-03 → 2006-04-04 (+1d) |  |
| 120 | #375 - Make caMOD available on download center | 2006-03-31 → 2006-04-03 (+3d) | 2006-04-14 → 2006-04-17 (+3d) |  |
| 121 | Tag build and deploy to QA server | 2006-05-05 → 2006-05-08 (+3d) | 2006-05-10 → 2006-05-11 (+1d) |  |
| 122 | Test | 2006-05-10 → 2006-05-11 (+1d) | 2006-05-15 → 2006-05-16 (+1d) |  |
| 123 | Milestone: Iteration3 completed | 2006-05-15 → 2006-05-16 (+1d) | 2006-05-18 → 2006-05-19 (+1d) |  |
| 124 | **Integration Testing Schedule** | 2006-05-18 → 2006-05-19 (+1d) | 2006-06-07 → 2006-06-08 (+1d) |  |
| 125 | **Develop Test Plan** | 2006-05-18 → 2006-05-19 (+1d) | 2006-06-01 → 2006-06-02 (+1d) |  |
| 126 | Develop Iteration 1 Test Plan | 2006-05-18 → 2006-05-19 (+1d) | 2006-05-26 → 2006-05-29 (+3d) |  |
| 127 | Develop Iteration 2 Test Plan | 2006-05-18 → 2006-05-19 (+1d) | 2006-05-26 → 2006-05-29 (+3d) |  |
| 128 | Develop Integration Test Plan | 2006-05-18 → 2006-05-19 (+1d) | 2006-06-01 → 2006-06-02 (+1d) |  |
| 129 | Deploy All Iterations to Development Server | 2006-05-18 → 2006-05-19 (+1d) | 2006-05-19 → 2006-05-22 (+3d) |  |
| 130 | Development Test All Iterations | 2006-05-18 → 2006-05-19 (+1d) | 2006-05-25 → 2006-05-26 (+1d) |  |
| 131 | Deploy All Iteration to Integration Test Server | 2006-05-18 → 2006-05-19 (+1d) | 2006-05-19 → 2006-05-22 (+3d) |  |
| 132 | Integration Test All Iterations | 2006-05-18 → 2006-05-19 (+1d) | 2006-05-30 → 2006-05-31 (+1d) |  |
| 133 | Deploy All Iterations to Staging Server | 2006-05-19 → 2006-05-22 (+3d) | 2006-05-22 → 2006-05-23 (+1d) |  |
| 134 | Test All Iterations | 2006-05-22 → 2006-05-23 (+1d) | 2006-06-07 → 2006-06-08 (+1d) |  |
| 135 | **Transition** |  | 2006-06-09 → 2006-06-12 (+3d) | 116.75d → 117.85d |
| 136 | Code Freeze | 2006-05-18 → 2006-05-19 (+1d) | 2006-05-19 → 2006-05-22 (+3d) |  |
| 137 | Deploy Iteration to Production | 2006-06-07 → 2006-06-08 (+1d) | 2006-06-09 → 2006-06-12 (+3d) |  |
| 138 | **Document Iteration** |  | 2006-05-26 → 2006-05-29 (+3d) | 106.25d → 107.35d |
| 139 | Update User Guides | 2006-05-18 → 2006-05-19 (+1d) | 2006-05-26 → 2006-05-29 (+3d) |  |
| 146 | Milestone: Complete Version 2.1 | 2006-06-09 → 2006-06-12 (+3d) | 2006-06-09 → 2006-06-12 (+3d) |  |

## Version 3 (saved 2006-01-10)

Note of the change: Added collection cleanup

Last finish stays 2006-06-12.

Added:

| ID | Task | Duration | Start | Finish | Predecessors |
| --- | --- | --- | --- | --- | --- |
| 66 | #376 - Update caMOD for JDK 1.5 collections and change from List to Set | 1w | 2006-02-07 | 2006-02-14 | 54 |

## Version 4 (saved 2006-01-30)

Note of the change: reassigned design tasks already completed - avoid duplicate work

Last finish stays 2006-06-12.

Changed:

| ID | Task | Finish | Duration | Total float | Other |
| --- | --- | --- | --- | --- | --- |
| 50 | #296 - DB - wrong display of targeted vs random integration of transgene and genomic segment |  |  |  | resources David → Sima |
| 52 | #326 - DB - Remove Duplicates in the taxon table and consider splitting the taxon table in species and strain table (back to what we... |  |  |  | resources David → Sima |
| 53 | #327 - DB - Investigate enhancing the design for organ/disease table relations |  |  |  | resources David → Sima |
| 54 | #328 - DB - Remove any unecessary cross-reference tables |  |  |  | resources David → Sima |
| 55 | #332 - DB - clean up field names |  |  |  | resources none → Sima |
| 56 | #333 - DB - Tackle env factor vs agent and therapy vs carcinogenic intervention problems |  |  |  | resources David → Sima |
| 58 | #335 - DB - The inhibition rate field in the screening_results table for the yeast data is not used. |  |  |  | resources none → Sima |
| 59 | #336 - DB - Delete "inherited" attributes isCMAP_agent and source from the agent object |  |  |  | resources none → Sima |
| 62 | #342 - DB - Modify/Clean up the way we handle units |  |  |  | resources none → Sima |
| 71 | Requirements Analysis | 2006-03-07 → 2006-03-08 (+1d) | 2d → 2.43d | 69d → 68.57d | resources Nick [50%]; Sima [50%]; David [50%] → Sima [50%]; David [50%] |
| 72 | Design | 2006-03-07 → 2006-03-09 (+2d) | 2d → 4d | 69d → 67d | resources David [50%]; Nick [50%]; Sima [50%]; Ajay [50%] → David [50%]; Sima [50%] |
| 80 | #225 - Clear Organ name on screens where it is not required - |  |  |  | resources Nick → Sima |
| 81 | #235 - Make comments that are submitted in the retrieval page searchable |  |  |  | resources Sima → Nick |
| 117 | #301 - Add link to additional info about clinical trials such as types of cancer the trial is conducted for |  |  |  | resources Sima → none |
| 120 | #335 - The inhibition rate field in the screening_results table for the yeast data is not used. |  |  |  | resources Nick → Sima |

## Version 5 (saved 2006-02-01)

Last finish 2006-06-12 → 2006-07-11 (+29d).

Removed: 102 #318 - More closely integrate caMOD and caArray

Changed:

| ID | Task | Start | Finish | Duration | Complete | Total float | Predecessors | Other |
| --- | --- | --- | --- | --- | --- | --- | --- | --- |
| 1 | **caMOD Version 2.X** |  | 2006-06-12 → 2006-07-11 (+29d) | 117.85d → 138.25d |  |  |  | was named caMOD Version 2.1 |
| 3 | Identify caMOD 2.x requirements |  |  |  |  |  |  | was named Identify caMOD 2.1 requirements |
| 5 | **Elaboration** |  | 2006-04-13 → 2006-06-22 (+70d) | 73.2d → 123.2d | 4% → 2% | 42.25d → 12.65d |  |  |
| 6 | Draft caMOD 2.x Test Cases |  |  |  |  | 87.85d → 130.85d |  | was named Draft caMOD 2.1 Test Cases |
| 7 | Draft caMOD 2.x Usability Enhancement Use Cases |  | 2006-01-16 → 2006-01-30 (+14d) | 2w → 4w |  | 82.85d → 0d |  | was named Draft caMOD 2.1 Usability Enhancement Use Cases |
| 8 | Draft caMOD 2.x Use Cases |  | 2006-01-16 → 2006-03-27 (+70d) | 2w → 12w |  | 19.65d → 12.65d |  | was named Draft caMOD 2.1 Use Cases |
| 9 | Review Use Cases, including CCMG members | 2006-01-16 → 2006-03-27 (+70d) | 2006-04-13 → 2006-06-22 (+70d) |  |  | 19.65d → 12.65d |  |  |
| 15 | **Interface with caDSR** |  |  |  |  | 80.45d → 100.85d | none → 10 |  |
| 23 | **Construction** | 2005-12-29 A → 2006-01-16 (+18d) | 2006-06-08 → 2006-07-03 (+25d) | 115.85d → 119.35d |  | 2d → 6d |  |  |
| 24 | **Iteration 1** | 2005-12-29 → 2006-01-16 (+18d) | 2006-03-08 → 2006-04-10 (+33d) | 49.85d → 59.35d |  | 0d → 9.5d |  |  |
| 25 | Requirements Analysis | 2005-12-29 → 2006-01-30 (+32d) | 2006-01-02 → 2006-02-02 (+31d) |  |  |  | none → 7 |  |
| 26 | Design | 2006-01-03 → 2006-02-02 (+30d) | 2006-01-05 → 2006-02-06 (+32d) |  |  |  |  |  |
| 28 | Create schema migration scripts | 2006-01-05 → 2006-02-06 (+32d) | 2006-01-12 → 2006-02-13 (+32d) |  |  |  |  |  |
| 29 | Hibernate Mapping changes | 2006-01-12 → 2006-02-13 (+32d) | 2006-01-16 → 2006-02-16 (+31d) |  |  |  |  |  |
| 30 | **Code** | 2005-12-29 → 2006-02-16 (+49d) | 2006-03-02 → 2006-04-04 (+33d) | 45.85d → 33.1d |  |  | none → 29 |  |
| 31 | **EVS Tree modification** | 2005-12-29 → 2006-02-16 (+49d) | 2006-01-05 → 2006-03-02 (+56d) | 6d → 10d |  | 39.85d → 23.1d |  |  |
| 32 | #37 - EVS Tree - Why does a search for synonyms in anatomy tree return disease and drugs? | 2005-12-29 → 2006-02-16 (+49d) | 2005-12-29 → 2006-03-02 (+63d) | 1d → 2w |  | 29.75d → 23.1d |  |  |
| 33 | #274 - EVS Tree - restore the association between organ and diagnosis | 2005-12-29 → 2006-02-16 (+49d) | 2006-01-05 → 2006-02-24 (+50d) |  |  | 24.75d → 27.1d |  |  |
| 34 | #276 - EVS Tree - use display name instead of concept name | 2005-12-29 → 2006-02-16 (+49d) | 2005-12-29 → 2006-02-17 (+50d) |  |  | 29.75d → 32.1d |  |  |
| 35 | #277 - EVS Tree - develop procedure to inform EVS team about newly entered diagnostic terms | 2005-12-29 → 2006-02-16 (+49d) | 2005-12-30 → 2006-02-20 (+52d) |  |  | 28.75d → 31.1d |  |  |
| 36 | #278 - EVS Tree - change skin to match caMOD application | 2005-12-29 → 2006-02-16 (+49d) | 2005-12-30 → 2006-02-20 (+52d) |  |  | 28.75d → 31.1d |  |  |
| 37 | #279 - EVS Tree - remove the word Done from the tree | 2005-12-29 → 2006-02-16 (+49d) | 2005-12-29 → 2006-02-17 (+50d) |  |  | 29.75d → 32.1d |  |  |
| 38 | **caMOD usibility enhancements** | 2006-01-05 → 2006-02-16 (+42d) | 2006-01-23 → 2006-02-23 (+31d) | 12.25d → 5d |  |  | none → 29 |  |
| 39 | #273 - Improve the way the drop down lists work | 2006-01-05 → 2006-02-16 (+42d) | 2006-01-12 → 2006-02-23 (+42d) |  |  | 20.25d → 28.1d |  |  |
| 40 | #304 - Provide link to MTB record at Jax on the Search General Info page | 2006-01-20 → 2006-02-22 (+33d) | 2006-01-23 → 2006-02-23 (+31d) |  |  | 28d → 28.1d |  |  |
| 41 | #345 - Viewing/submitting images while in https mode has nag message in IE | 2006-01-05 → 2006-02-16 (+42d) | 2006-01-09 → 2006-02-20 (+42d) |  |  | 36.25d → 31.1d |  | resources none → David |
| 42 | **caMOD enhancements** | 2005-12-29 → 2006-02-16 (+49d) | 2006-01-20 → 2006-03-23 (+62d) | 17d → 25d |  | 28.85d → 8.1d | none → 3 |  |
| 43 | #359 - Make caMod available in the grid | 2006-01-09 → 2006-02-16 (+38d) | 2006-01-20 → 2006-03-23 (+62d) | 2w → 5w |  | 27.75d → 8.1d |  |  |
| 44 | #291 - Genetic Des - Induced Mutation search inconsistency | 2005-12-29 → 2006-02-16 (+49d) | 2005-12-29 → 2006-02-17 (+50d) | 0.1d → 1d |  | 43.65d → 32.1d |  |  |
| 45 | #171 - Gene Delivery can be a way other than virus | 2006-01-09 → 2006-02-16 (+38d) | 2006-01-09 → 2006-02-17 (+39d) | 0.1d → 1d |  | 36.65d → 32.1d |  |  |
| 46 | **caMOD database enhancements** | 2006-01-16 → 2006-02-16 (+31d) | 2006-03-02 → 2006-04-04 (+33d) |  |  |  |  |  |
| 47 | #43 - DB - Gene ID in spon mutation page | 2006-01-16 → 2006-02-16 (+31d) | 2006-01-17 → 2006-02-16 (+30d) |  |  |  |  |  |
| 48 | #243 - DB - No "other" can be choose from Donor Species | 2006-01-17 → 2006-02-16 (+30d) | 2006-01-18 → 2006-02-17 (+30d) |  |  |  |  |  |
| 49 | #249 - No "other" can be choose from Donor Species | 2006-01-18 → 2006-02-17 (+30d) | 2006-01-18 → 2006-02-20 (+33d) |  |  |  |  |  |
| 50 | #296 - DB - wrong display of targeted vs random integration of transgene and genomic segment | 2006-01-18 → 2006-02-20 (+33d) | 2006-01-19 → 2006-02-21 (+33d) |  |  |  |  | resources Sima → David |
| 51 | #303 - DB - Add field to publication table to store the J number | 2006-01-19 → 2006-02-21 (+33d) | 2006-01-20 → 2006-02-22 (+33d) |  |  |  |  |  |
| 52 | #326 - DB - Remove Duplicates in the taxon table and consider splitting the taxon table in species and strain table (back to what we... | 2006-01-20 → 2006-02-22 (+33d) | 2006-01-27 → 2006-03-01 (+33d) |  |  |  |  | resources Sima → David |
| 53 | #327 - DB - Investigate enhancing the design for organ/disease table relations | 2006-01-27 → 2006-03-01 (+33d) | 2006-01-31 → 2006-03-03 (+31d) |  |  |  |  | resources Sima → David |
| 54 | #328 - DB - Remove any unecessary cross-reference tables | 2006-01-31 → 2006-03-03 (+31d) | 2006-02-07 → 2006-03-10 (+31d) |  |  |  |  | resources Sima → David |
| 55 | #332 - DB - clean up field names | 2006-02-07 → 2006-03-10 (+31d) | 2006-02-09 → 2006-03-14 (+33d) |  |  |  |  | resources Sima → none |
| 56 | #333 - DB - Tackle env factor vs agent and therapy vs carcinogenic intervention problems | 2006-02-09 → 2006-03-14 (+33d) | 2006-02-16 → 2006-03-21 (+33d) |  |  |  |  | resources Sima → David |
| 57 | #334 - DB - Change “tumorProgression” to “tumorResponse” in the therapy object | 2006-02-16 → 2006-03-21 (+33d) | 2006-02-17 → 2006-03-21 (+32d) |  |  |  |  |  |
| 58 | #335 - DB - The inhibition rate field in the screening_results table for the yeast data is not used. | 2006-02-17 → 2006-03-21 (+32d) | 2006-02-17 → 2006-03-21 (+32d) |  |  |  |  | resources Sima → none |
| 59 | #336 - DB - Delete "inherited" attributes isCMAP_agent and source from the agent object | 2006-02-17 → 2006-03-21 (+32d) | 2006-02-20 → 2006-03-22 (+30d) |  |  |  |  | resources Sima → none |
| 60 | #338 - DB - Add an other option to the drop-down list of clinical marker | 2006-02-20 → 2006-03-22 (+30d) | 2006-02-20 → 2006-03-23 (+31d) |  |  |  |  |  |
| 61 | #340 - DB - Change the relationship between animal_availibility and animal_distributor objects | 2006-02-20 → 2006-03-23 (+31d) | 2006-02-21 → 2006-03-24 (+31d) |  |  |  |  |  |
| 62 | #342 - DB - Modify/Clean up the way we handle units | 2006-02-21 → 2006-03-24 (+31d) | 2006-02-28 → 2006-03-31 (+31d) |  |  |  |  | resources Sima → none |
| 63 | #343 - DB - Change Harvest_date from a date field to a varchar | 2006-02-28 → 2006-03-31 (+31d) | 2006-03-01 → 2006-03-31 (+30d) |  |  |  |  |  |
| 64 | #346 - DB - Change MGI number to a varchar field | 2006-03-01 → 2006-03-31 (+30d) | 2006-03-01 → 2006-04-03 (+33d) |  |  |  |  |  |
| 65 | #348 - DB - Add an uncontrolledVocab for administative route to Ab Cancer Model for Xenograft. | 2006-03-01 → 2006-04-03 (+33d) | 2006-03-02 → 2006-04-04 (+33d) |  |  |  |  |  |
| 66 | #376 - Update caMOD for JDK 1.5 collections and change from List to Set | 2006-02-07 → 2006-03-10 (+31d) | 2006-02-14 → 2006-03-17 (+31d) |  |  |  |  |  |
| 67 | Tag build and deploy to QA server | 2006-03-02 → 2006-04-04 (+33d) | 2006-03-03 → 2006-04-05 (+33d) |  |  |  |  |  |
| 68 | Test | 2006-03-03 → 2006-04-05 (+33d) | 2006-03-08 → 2006-04-10 (+33d) |  |  | 65d → 63d |  |  |
| 69 | Milestone: Iteration1 completed | 2006-03-08 → 2006-04-10 (+33d) | 2006-03-13 → 2006-04-13 (+31d) |  |  | 65d → 63d |  |  |
| 70 | **Iteration 2** | 2006-03-03 A → 2006-04-05 (+33d) | 2006-04-06 → 2006-05-08 (+32d) |  |  | 47.5d → 0d |  |  |
| 71 | Requirements Analysis | 2006-03-03 → 2006-04-05 (+33d) | 2006-03-08 → 2006-04-07 (+30d) | 2.43d → 2d |  | 68.57d → 67d |  | resources Sima [50%]; David [50%] → Nick [50%]; Sima [50%]; David [50%] |
| 72 | Design | 2006-03-03 → 2006-04-05 (+33d) | 2006-03-09 → 2006-04-07 (+29d) | 4d → 2d |  |  |  | resources David [50%]; Sima [50%] → David [50%]; Nick [50%]; Sima [50%]; Ajay [50%] |
| 73 | **Code** | 2006-03-03 A → 2006-04-05 (+33d) | 2006-03-29 → 2006-04-28 (+30d) |  |  |  |  |  |
| 74 | **caMOD usibility enhancements** | 2006-03-03 → 2006-04-05 (+33d) | 2006-03-17 → 2006-04-19 (+33d) |  |  |  |  |  |
| 75 | #55 - Feature request - highlight keyword in search result | 2006-03-03 → 2006-04-05 (+33d) | 2006-03-08 → 2006-04-10 (+33d) |  |  |  |  |  |
| 76 | #234 - Allow snapshot of cancer model for reference in publications | 2006-03-03 → 2006-04-05 (+33d) | 2006-03-17 → 2006-04-19 (+33d) |  |  |  |  |  |
| 77 | #238 - Make search result list configurable | 2006-03-03 → 2006-04-05 (+33d) | 2006-03-10 → 2006-04-12 (+33d) |  |  |  |  |  |
| 78 | **caMOD enhancements** | 2006-03-03 → 2006-04-05 (+33d) | 2006-03-29 → 2006-04-28 (+30d) |  |  |  |  |  |
| 79 | #61 - Sequence Id field on search detail page not populated | 2006-03-03 → 2006-04-05 (+33d) | 2006-03-06 → 2006-04-06 (+31d) |  |  |  |  |  |
| 80 | #225 - Clear Organ name on screens where it is not required - | 2006-03-03 → 2006-04-05 (+33d) | 2006-03-06 → 2006-04-06 (+31d) |  |  |  |  | resources Sima → Nick |
| 81 | #235 - Make comments that are submitted in the retrieval page searchable | 2006-03-03 → 2006-04-05 (+33d) | 2006-03-07 → 2006-04-07 (+31d) |  |  |  |  | resources Nick → Sima |
| 82 | #237 - Add the ability to remove an image from Eng. Trans, Gen. Seg or Targ. Mod. | 2006-03-06 → 2006-04-06 (+31d) | 2006-03-07 → 2006-04-07 (+31d) |  |  |  |  |  |
| 83 | #272 - Add diagnosis to the summary on the histopath search page | 2006-03-10 → 2006-04-12 (+33d) | 2006-03-13 → 2006-04-12 (+30d) |  |  |  |  |  |
| 84 | #289 - information if mouse is a tool mouse doesn't show up on mod char search page | 2006-03-03 → 2006-04-05 (+33d) | 2006-03-06 → 2006-04-05 (+30d) |  |  |  |  |  |
| 85 | #295 - Verify all free text fields allow html markup | 2006-03-13 → 2006-04-12 (+30d) | 2006-03-14 → 2006-04-13 (+30d) |  |  |  |  |  |

| ID | Task | Start | Finish | Duration | Total float | Predecessors | Other |
| --- | --- | --- | --- | --- | --- | --- | --- |
| 86 | #297 - Missed camod:shorten tag for therapeutic approaches | 2006-03-14 → 2006-04-13 (+30d) | 2006-03-14 → 2006-04-14 (+31d) |  |  |  |  |
| 87 | #356 - Find a solution for entering the nomenclature and genotype information. | 2006-03-14 → 2006-04-14 (+31d) | 2006-03-28 → 2006-04-28 (+31d) |  |  |  |  |
| 88 | #371 - Force/validate lowercase usernames on entry | 2006-03-28 → 2006-04-28 (+31d) | 2006-03-29 → 2006-04-28 (+30d) |  |  |  |  |
| 89 | **EVS Tree modification** | 2006-03-03 → 2006-04-05 (+33d) | 2006-03-17 → 2006-04-19 (+33d) |  |  |  |  |
| 90 | #280 - EVS Tree - show species specific anatomy vocabularies | 2006-03-03 → 2006-04-05 (+33d) | 2006-03-10 → 2006-04-12 (+33d) |  |  |  |  |
| 91 | #281 - EVS Tree - utilize the staining vocabulary | 2006-03-03 → 2006-04-05 (+33d) | 2006-03-08 → 2006-04-10 (+33d) |  |  |  |  |
| 92 | #371 - EVS Tree- make display of EVS tree generic | 2006-03-03 → 2006-04-05 (+33d) | 2006-03-17 → 2006-04-19 (+33d) |  |  |  |  |
| 93 | Tag build and deploy to QA server | 2006-03-29 → 2006-04-28 (+30d) | 2006-04-03 → 2006-05-03 (+30d) |  |  |  |  |
| 94 | Test | 2006-04-03 → 2006-05-03 (+30d) | 2006-04-06 → 2006-05-08 (+32d) |  | 44.5d → 42.5d |  |  |
| 95 | Milestone: Iteration2 completed | 2006-04-06 → 2006-05-08 (+32d) | 2006-04-11 → 2006-05-11 (+30d) |  | 44.5d → 42.5d |  |  |
| 96 | **Iteration 3** | 2006-04-03 → 2006-05-03 (+30d) | 2006-05-16 → 2006-06-07 (+22d) | 31d → 25d |  |  |  |
| 97 | Requirements Analysis | 2006-04-03 → 2006-05-03 (+30d) | 2006-04-05 → 2006-05-05 (+30d) |  | 48.36d → 46.36d |  |  |
| 98 | Design | 2006-04-03 → 2006-05-03 (+30d) | 2006-04-06 → 2006-05-08 (+32d) |  | 47.5d → 45.5d |  |  |
| 99 | **Code** | 2006-04-03 → 2006-05-03 (+30d) | 2006-05-08 → 2006-05-30 (+22d) | 25d → 19d |  |  |  |
| 100 | **caMOD usibility enhancements** | 2006-04-03 → 2006-05-03 (+30d) | 2006-05-08 → 2006-05-30 (+22d) | 25d → 19d |  |  |  |
| 101 | #261 - Add the ability to save search queries for reuse | 2006-04-03 → 2006-05-03 (+30d) | 2006-04-17 → 2006-05-17 (+30d) |  | 0d → 9d |  |  |
| 102 | #320 - Find ways to speed up the entry of organs and diagnoses | 2006-04-03 → 2006-05-03 (+30d) | 2006-04-10 → 2006-05-10 (+30d) |  | 6d → 0d |  |  |
| 103 | #321 - Log updates to Edited-approved models | 2006-04-10 → 2006-05-10 (+30d) | 2006-04-24 → 2006-05-24 (+30d) |  | 6d → 0d |  |  |
| 104 | #329 - Data Issue - current genetic background | 2006-04-24 → 2006-05-24 (+30d) | 2006-04-26 → 2006-05-26 (+30d) |  | 6d → 0d |  |  |
| 105 | #330 - Display the DTP in vivo and yeast models as animal models | 2006-04-26 → 2006-05-26 (+30d) | 2006-04-27 → 2006-05-29 (+32d) |  | 6d → 0d |  |  |
| 106 | #347 - Move the e-mail code to its own utility - Consolidate | 2006-04-27 → 2006-05-29 (+32d) | 2006-04-28 → 2006-05-30 (+32d) |  | 6d → 0d |  |  |
| 107 | **#369 - Create remote interface for caMOD object model** | 2006-04-03 → 2006-05-03 (+30d) | 2006-04-17 → 2006-05-17 (+30d) |  | 15d → 9d |  |  |
| 108 | #360 - steps to make caMod OM depreciated in caCore | 2006-04-03 → 2006-05-03 (+30d) | 2006-04-17 → 2006-05-17 (+30d) |  | 15d → 9d |  |  |
| 109 | **caMOD enhancements** | 2006-04-03 → 2006-05-03 (+30d) | 2006-04-17 → 2006-05-17 (+30d) |  | 15d → 9d |  |  |
| 110 | #67 - Access to site without accepting the agreement | 2006-04-03 → 2006-05-03 (+30d) | 2006-04-04 → 2006-05-04 (+30d) |  | 24d → 18d |  |  |
| 111 | #87 - Date Formating issue | 2006-04-03 → 2006-05-03 (+30d) | 2006-04-03 → 2006-05-04 (+31d) |  | 24.5d → 18.5d |  |  |
| 112 | #132 - For existing sid images, get the URL from the thumbnail | 2006-04-03 → 2006-05-03 (+30d) | 2006-04-04 → 2006-05-04 (+30d) |  | 24d → 18d |  |  |
| 113 | #229 - Add help button (=link to online help) to the title of every page | 2006-04-03 → 2006-05-03 (+30d) | 2006-04-03 → 2006-05-04 (+31d) |  | 24.5d → 18.5d |  |  |
| 114 | #245 - Admin part - display messages when no search results returned | 2006-04-03 → 2006-05-03 (+30d) | 2006-04-03 → 2006-05-04 (+31d) |  | 24.5d → 18.5d |  |  |
| 115 | #290 - Cell Line Publication - throws uncaught connection error | 2006-04-03 → 2006-05-03 (+30d) | 2006-04-04 → 2006-05-04 (+30d) |  | 24d → 18d |  |  |
| 116 | #301 - Add link to additional info about clinical trials such as types of cancer the trial is conducted for | 2006-04-03 → 2006-05-03 (+30d) | 2006-04-04 → 2006-05-04 (+30d) |  | 24d → 18d |  | resources none → Sima |
| 117 | #302 - Allow user to search for metastasis in specific organ or for metastatic models in general on Advanced Search page | 2006-04-03 → 2006-05-03 (+30d) | 2006-04-04 → 2006-05-04 (+30d) |  | 24d → 18d |  |  |
| 118 | #314 - make comments fields on all pages searchable | 2006-04-03 → 2006-05-03 (+30d) | 2006-04-04 → 2006-05-04 (+30d) |  | 24d → 18d |  |  |
| 119 | #335 - The inhibition rate field in the screening_results table for the yeast data is not used. | 2006-04-03 → 2006-05-03 (+30d) | 2006-04-04 → 2006-05-04 (+30d) |  | 24d → 18d |  | resources Sima → Nick |
| 120 | #375 - Make caMOD available on download center | 2006-04-03 → 2006-05-03 (+30d) | 2006-04-17 → 2006-05-17 (+30d) |  | 15d → 9d |  |  |
| 121 | Tag build and deploy to QA server | 2006-05-08 → 2006-05-30 (+22d) | 2006-05-11 → 2006-06-02 (+22d) |  |  |  |  |
| 122 | Test | 2006-05-11 → 2006-06-02 (+22d) | 2006-05-16 → 2006-06-07 (+22d) |  |  |  |  |
| 123 | Milestone: Iteration3 completed | 2006-05-16 → 2006-06-07 (+22d) | 2006-05-19 → 2006-06-12 (+24d) |  |  |  |  |
| 124 | **Integration Testing Schedule** | 2006-05-19 → 2006-06-12 (+24d) | 2006-06-08 → 2006-07-03 (+25d) |  |  |  |  |
| 125 | **Develop Test Plan** | 2006-05-19 → 2006-06-12 (+24d) | 2006-06-02 → 2006-06-26 (+24d) |  | 6.5d → 10.5d |  |  |
| 126 | Develop Iteration 1 Test Plan | 2006-05-19 → 2006-06-12 (+24d) | 2006-05-29 → 2006-06-20 (+22d) |  | 10.5d → 14.5d |  |  |
| 127 | Develop Iteration 2 Test Plan | 2006-05-19 → 2006-06-12 (+24d) | 2006-05-29 → 2006-06-20 (+22d) |  | 10.5d → 14.5d |  |  |
| 128 | Develop Integration Test Plan | 2006-05-19 → 2006-06-12 (+24d) | 2006-06-02 → 2006-06-26 (+24d) |  | 6.5d → 10.5d |  |  |
| 129 | Deploy All Iterations to Development Server | 2006-05-19 → 2006-06-12 (+24d) | 2006-05-22 → 2006-06-13 (+22d) |  | 15.5d → 19.5d |  |  |
| 130 | Development Test All Iterations | 2006-05-19 → 2006-06-12 (+24d) | 2006-05-26 → 2006-06-20 (+25d) |  | 10.9d → 14.9d |  |  |
| 131 | Deploy All Iteration to Integration Test Server | 2006-05-19 → 2006-06-12 (+24d) | 2006-05-22 → 2006-06-14 (+23d) |  |  |  |  |
| 132 | Integration Test All Iterations | 2006-05-19 → 2006-06-12 (+24d) | 2006-05-31 → 2006-06-22 (+22d) |  | 8.5d → 12.5d |  |  |
| 133 | Deploy All Iterations to Staging Server | 2006-05-22 → 2006-06-14 (+23d) | 2006-05-23 → 2006-06-15 (+23d) |  |  |  |  |
| 134 | Test All Iterations | 2006-05-23 → 2006-06-15 (+23d) | 2006-06-08 → 2006-07-03 (+25d) |  |  |  |  |
| 135 | **Transition** | 2005-12-29 → 2006-07-03 (+186d) | 2006-06-12 → 2006-07-11 (+29d) | 117.85d → 6d |  | none → 134 |  |
| 136 | Code Freeze | 2006-05-19 → 2006-07-03 (+45d) | 2006-05-22 → 2006-07-04 (+43d) |  | 15.5d → 5d |  |  |
| 137 | Deploy Iteration to Production | 2006-06-08 → 2006-07-03 (+25d) | 2006-06-12 → 2006-07-05 (+23d) |  | 0d → 4d |  |  |
| 138 | **Document Iteration** | 2005-12-29 → 2006-07-03 (+186d) | 2006-05-29 → 2006-07-11 (+43d) | 107.35d → 6d | 10.5d → 0d |  |  |
| 139 | Update User Guides | 2006-05-19 → 2006-07-03 (+45d) | 2006-05-29 → 2006-07-11 (+43d) |  | 10.5d → 0d |  |  |
| 140 | Update technical / design documentation | 2005-12-29 → 2006-07-03 (+186d) | 2006-01-03 → 2006-07-06 (+184d) |  | 114.29d → 2.44d |  |  |
| 141 | Regenerate JavaDocs | 2005-12-29 → 2006-07-03 (+186d) | 2005-12-29 → 2006-07-03 (+186d) |  | 117.6d → 5.75d |  |  |
| 142 | Create Release Notes | 2005-12-29 → 2006-07-03 (+186d) | 2005-12-29 → 2006-07-03 (+186d) |  | 117.35d → 5.5d |  |  |
| 143 | Create Known Issues document | 2005-12-29 → 2006-07-03 (+186d) | 2005-12-29 → 2006-07-03 (+186d) |  | 117.35d → 5.5d |  |  |
| 144 | Create Fixed defects document | 2005-12-29 → 2006-07-03 (+186d) | 2005-12-29 → 2006-07-03 (+186d) |  | 117.35d → 5.5d |  |  |
| 145 | Create What's New Document | 2005-12-29 → 2006-07-03 (+186d) | 2005-12-29 → 2006-07-03 (+186d) |  | 117.35d → 5.5d |  |  |
| 146 | Milestone: Complete Version 2.1 | 2006-06-12 → 2006-07-05 (+23d) | 2006-06-12 → 2006-07-05 (+23d) |  | 0d → 4d |  |  |

## Version 6 (saved 2006-05-11)

Note of the change: Update w/ changes due to resource reallocation

Last finish 2006-07-11 → 2006-06-15 (-26d).

Added:

| ID | Task | Duration | Start | Finish | Predecessors | Constraint | Resources |
| --- | --- | --- | --- | --- | --- | --- | --- |
| 32 | Change caMOD to use new EVSTree | 2d | 2006-05-03 | 2006-05-04 |  | start no earlier than 2006-05-03 |  |
| 33 | Change caMOD to use caBIO version 3.1 | 2d | 2006-05-05 | 2006-05-08 | 32 | start no earlier than 2006-05-04 |  |
| 35 | **caMOD RemoteAPI/GRID** | 110d | 2005-12-29 | 2006-05-31 |  |  |  |
| 36 | #369 - Create remote interface for caMOD object model | 5mo | 2005-12-29 | 2006-05-17 |  |  |  |
| 42 | #225 - Clear Organ name on screens where it is not required | 1d | 2005-12-29 | 2005-12-29 |  |  | Nick |
| 56 | Cascade 2.1 OM changes through code | 2w | 2006-04-03 | 2006-04-17 |  |  | David |
| 58 | #249 - No "other" can be choose from Donor Species | 0.5d | 2006-04-18 | 2006-04-18 | 57 |  | Sima |
| 86 | Deploy to Staging Server | 1d | 2006-06-13 | 2006-06-13 |  | finish no earlier than 2006-06-13 | QA |
| 94 | Update online help documentation | 4d | 2006-05-23 | 2006-05-26 | 93 |  | Ulli [50%]; Srini [50%]; Jill [50%]; David [50%] |

Removed: 31 EVS Tree modification; 32 #37 - EVS Tree - Why does a search for synonyms in anatomy tree return disease and drugs?; 33 #274 - EVS Tree - restore the association between organ and diagnosis; 34 #276 - EVS Tree - use display name instead of concept name; 35 #277 - EVS Tree - develop procedure to inform EVS team about newly entered diagnostic terms; 36 #278 - EVS Tree - change skin to match caMOD application; 37 #279 - EVS Tree - remove the word Done from the tree; 39 #273 - Improve the way the drop down lists work; 40 #304 - Provide link to MTB record at Jax on the Search General Info page; 44 #291 - Genetic Des - Induced Mutation search inconsistency; 45 #171 - Gene Delivery can be a way other than virus; 48 #243 - DB - No "other" can be choose from Donor Species; 55 #332 - DB - clean up field names; 62 #342 - DB - Modify/Clean up the way we handle units; 67 Tag build and deploy to QA server; 68 Test; 70 Iteration 2; 71 Requirements Analysis; 72 Design; 73 Code; 74 caMOD usibility enhancements; 76 #234 - Allow snapshot of cancer model for reference in publications; 78 caMOD enhancements; 80 #225 - Clear Organ name on screens where it is not required -; 81 #235 - Make comments that are submitted in the retrieval page searchable; 87 #356 - Find a solution for entering the nomenclature and genotype information.; 92 #371 - EVS Tree- make display of EVS tree generic; 93 Tag build and deploy to QA server; 94 Test; 95 Milestone: Iteration2 completed; 96 Iteration 3; 97 Requirements Analysis; 98 Design; 99 Code; 100 caMOD usibility enhancements; 103 #321 - Log updates to Edited-approved models; 104 #329 - Data Issue - current genetic background; 105 #330 - Display the DTP in vivo and yeast models as animal models; 106 #347 - Move the e-mail code to its own utility - Consolidate; 107 #369 - Create remote interface for caMOD object model; 108 #360 - steps to make caMod OM depreciated in caCore; 109 caMOD enhancements; 110 #67 - Access to site without accepting the agreement; 111 #87 - Date Formating issue; 112 #132 - For existing sid images, get the URL from the thumbnail; 114 #245 - Admin part - display messages when no search results returned; 116 #301 - Add link to additional info about clinical trials such as types of cancer the trial is conducted for; 118 #314 - make comments fields on all pages searchable; 119 #335 - The inhibition rate field in the screening_results table for the yeast data is not used.; 120 #375 - Make caMOD available on download center; 121 Tag build and deploy to QA server; 122 Test; 123 Milestone: Iteration3 completed; 127 Develop Iteration 2 Test Plan; 141 Regenerate JavaDocs

Changed:

| ID | Task | Start | Finish | Duration | Complete | Total float | Predecessors | Other |
| --- | --- | --- | --- | --- | --- | --- | --- | --- |
| 1 | **caMOD Version 2.1** | 2005-12-29 A → 2005-12-29 | 2006-07-11 → 2006-06-15 (-26d) | 138.25d → 121d | 1% → 0% |  |  | was named caMOD Version 2.X |
| 3 | Identify caMOD 2.1 requirements |  |  |  |  | 0d → 17.6d |  | was named Identify caMOD 2.x requirements |
| 5 | **Elaboration** | 2006-01-02 A → 2006-01-02 | 2006-06-22 → 2006-06-06 (-16d) | 123.2d → 111.1d | 2% → 0% | 12.65d → 7.5d |  |  |
| 6 | Draft caMOD 2.1 Test Cases |  |  |  |  | 130.85d → 113.6d |  | was named Draft caMOD 2.x Test Cases |
| 7 | Draft caMOD 2.1 Usability Enhancement Use Cases |  | 2006-01-30 → 2006-01-16 (-14d) | 4w → 2w |  | 0d → 108.6d |  | was named Draft caMOD 2.x Usability Enhancement Use Cases |
| 8 | Draft caMOD 2.1 Use Cases |  | 2006-03-27 → 2006-01-16 (-70d) | 12w → 2w |  | 12.65d → 45.4d |  | was named Draft caMOD 2.x Use Cases |
| 9 | Review Use Cases, including CCMG members | 2006-03-27 → 2006-01-16 (-70d) | 2006-06-22 → 2006-04-13 (-70d) |  |  | 12.65d → 45.4d |  |  |
| 10 | **caMOD database enhancements** | 2006-01-02 A → 2006-01-02 | 2006-01-16 → 2006-02-23 (+38d) | 10.5d → 38.5d | 36% → 0% | 100.85d → 15.6d |  |  |
| 11 | Consolidate all DB changes | 2006-01-02 A → 2006-01-02 |  |  | 50% → 0% | 57.85d → 17.6d |  |  |
| 12 | Updated Object Model |  | 2006-01-13 → 2006-02-09 (+27d) | 1d → 4w |  | 57.85d → 17.6d |  |  |
| 13 | Updated Data Model | 2006-01-13 → 2006-02-09 (+27d) | 2006-01-16 → 2006-02-16 (+31d) | 1d → 1w |  | 57.85d → 17.6d |  |  |
| 14 | Milestone: Completed ER document | 2006-01-16 → 2006-02-16 (+31d) | 2006-01-16 → 2006-02-23 (+38d) | 0d → 1w |  | 57.85d → 17.6d |  |  |
| 15 | **Interface with caDSR** | 2006-01-16 → 2006-05-09 (+113d) | 2006-02-20 → 2006-06-06 (+106d) | 24.5d → 20.5d |  | 100.85d → 7.5d | 10 → none |  |
| 16 | Annotate UML model with well formed names and definitions | 2006-01-16 → 2006-05-09 (+113d) | 2006-01-19 → 2006-05-11 (+112d) |  |  | 57.85d → 7.5d | 10 → none | constraint none → start no earlier than 2006-05-09 |
| 17 | Review semantic connector output | 2006-01-19 → 2006-05-12 (+113d) | 2006-01-20 → 2006-05-12 (+112d) |  |  | 57.85d → 7.5d |  |  |
| 18 | Perform semantic annotation of UML models | 2006-01-20 → 2006-05-12 (+112d) | 2006-01-24 → 2006-05-16 (+112d) |  |  | 57.85d → 7.5d |  |  |
| 19 | Run UML loader | 2006-01-24 → 2006-05-16 (+112d) | 2006-02-07 → 2006-05-30 (+112d) |  |  | 57.85d → 7.5d |  |  |
| 20 | Review CDEs in staging | 2006-02-07 → 2006-05-30 (+112d) | 2006-02-09 → 2006-06-01 (+112d) |  |  | 57.85d → 7.5d |  |  |
| 21 | Curate additional metadata | 2006-02-09 → 2006-06-01 (+112d) | 2006-02-13 → 2006-06-05 (+112d) |  |  | 57.85d → 7.5d |  |  |
| 22 | Establish baseline documentation and prepare submission package | 2006-02-13 → 2006-06-05 (+112d) | 2006-02-20 → 2006-06-06 (+106d) | 1w → 1d |  | 57.85d → 7.5d |  |  |
| 23 | **Construction** | 2006-01-16 → 2005-12-29 (-18d) | 2006-07-03 → 2006-05-31 (-33d) | 119.35d → 110d |  | 6d → 4.5d |  |  |
| 24 | **Iteration 1** | 2006-01-16 → 2005-12-29 (-18d) | 2006-04-10 → 2006-05-31 (+51d) | 59.35d → 110d |  | 9.5d → 4.5d |  |  |
| 25 | Requirements Analysis | 2006-01-30 → 2005-12-29 (-32d) | 2006-02-02 → 2006-01-02 (-31d) |  |  | 0d → 107d | 7 → none |  |
| 26 | Design | 2006-02-02 → 2006-01-03 (-30d) | 2006-02-06 → 2006-01-05 (-32d) |  |  | 0d → 107d |  |  |
| 27 | Data cleanup | 2006-01-16 → 2006-02-23 (+38d) | 2006-01-18 → 2006-02-27 (+40d) |  |  | 80.35d → 17.6d | 10 → 14 |  |
| 28 | Create schema migration scripts | 2006-02-06 → 2006-02-27 (+21d) | 2006-02-13 → 2006-03-06 (+21d) |  |  | 0d → 17.6d | 26 → 27 |  |
| 29 | Hibernate Mapping changes | 2006-02-13 → 2006-03-06 (+21d) | 2006-02-16 → 2006-04-03 (+46d) | 2.25d → 4w |  | 0d → 17.6d |  |  |
| 30 | **Code** | 2006-02-16 → 2005-12-29 (-49d) | 2006-04-04 → 2006-05-31 (+57d) | 33.1d → 110d |  | 0d → 4.5d | 29 → none |  |
| 31 | **caMOD usibility enhancements** | 2006-02-16 → 2006-01-05 (-42d) | 2006-02-23 → 2006-05-08 (+74d) | 5d → 87.5d |  | 28.1d → 21.5d | 29 → none |  |
| 34 | #345 - Viewing/submitting images while in https mode has nag message in IE | 2006-02-16 → 2006-01-05 (-42d) | 2006-02-20 → 2006-01-09 (-42d) |  |  | 31.1d → 107d |  | resources David → none |
| 37 | #359 - Make caMod available in the grid | 2006-02-16 → 2006-05-18 (+91d) | 2006-03-23 → 2006-05-31 (+69d) | 5w → 2w |  | 8.1d → 4.5d | none → 36 | resources Marc P. → Marc |
| 38 | **caMOD enhancements** | 2006-02-16 → 2005-12-29 (-49d) | 2006-03-23 → 2006-05-17 (+55d) | 25d → 100d |  | 8.1d → 14.5d | 3 → none |  |
| 39 | #43 - Gene ID in spon mutation page | 2006-03-21 → 2005-12-29 (-82d) | 2006-03-22 → 2005-12-29 (-83d) | 1d → 0.5d |  | 0d → 113d | 66 → none | was named #336 - DB - Delete "inherited" attributes isCMAP_agent and source from the agent object; resources none → Nick |
| 40 | #55 - Feature request - highlight keyword in search result | 2006-04-05 → 2005-12-29 (-97d) | 2006-04-10 → 2006-01-04 (-96d) | 3d → 1w |  | 14.5d → 109.5d |  |  |
| 41 | #61 - Sequence Id field on search detail page not populated | 2006-04-05 → 2005-12-29 (-97d) | 2006-04-06 → 2005-12-29 (-98d) |  |  | 16.5d → 113.5d |  |  |
| 43 | #229 - Add help button (=link to online help) to the title of every page | 2006-05-03 → 2006-05-15 (+12d) | 2006-05-04 → 2006-05-15 (+11d) | 0.5d → 1d |  | 18.5d → 16.5d | none → 39 | constraint none → start no earlier than 2006-05-15; resources David → Nick |
| 44 | #237 - Add the ability to remove an image from Eng. Trans, Gen. Seg or Targ. Mod. | 2006-04-06 → 2005-12-29 (-98d) | 2006-04-07 → 2005-12-29 (-99d) |  |  | 15.5d → 113.5d | #225 - Clear Organ name on screens where it is not required - → none |  |
| 45 | #238 - Make search result list configurable | 2006-04-05 → 2006-02-20 (-44d) | 2006-04-12 → 2006-03-03 (-40d) | 1w → 2w |  | 0d → 66d |  | constraint none → start no earlier than 2006-02-20 |
| 46 | #249 - No "other" can be choose from Donor Species | 2006-02-17 → 2006-03-06 (+17d) | 2006-02-20 → 2006-03-06 (+14d) |  |  | 0d → 67d | #243 - DB - No "other" can be choose from Donor Species, 57 → 45 |  |
| 47 | #261 - Add the ability to save search queries for reuse | 2006-05-03 → 2006-03-30 (-34d) |  | 2w → 7w |  | 9d → 14.5d |  | constraint none → start no earlier than 2006-03-30 |
| 48 | #272 - Add diagnosis to the summary on the histopath search page | 2006-04-12 → 2006-03-06 (-37d) | 2006-04-12 → 2006-03-06 (-37d) |  |  | 0d → 66d |  |  |
| 49 | #289 - information if mouse is a tool mouse doesn't show up on mod char search page | 2006-04-05 → 2005-12-29 (-97d) | 2006-04-05 → 2005-12-29 (-97d) |  |  | 17d → 114d | 46 → none |  |
| 50 | #290 - Cell Line Publication - throws uncaught connection error | 2006-05-03 → 2006-05-11 (+8d) | 2006-05-04 → 2006-05-12 (+8d) | 1d → 2d |  | 18d → 17.5d |  | constraint none → start no earlier than 2006-05-11 |
| 51 | #295 - Verify all free text fields allow html markup | 2006-04-12 → 2006-05-11 (+29d) | 2006-04-13 → 2006-05-11 (+28d) |  |  | 0d → 18.5d |  | constraint none → start no earlier than 2006-05-11 |
| 52 | #297 - Missed camod:shorten tag for therapeutic approaches | 2006-04-13 → 2006-02-27 (-45d) | 2006-04-14 → 2006-02-28 (-45d) |  |  | 0d → 71.1d | 51 → 27 |  |
| 53 | #302 - Allow user to search for metastasis in specific organ or for metastatic models in general on Advanced Search page | 2006-05-03 → 2006-05-15 (+12d) | 2006-05-04 → 2006-05-16 (+12d) | 1d → 2d |  | 18d → 15.5d |  | constraint none → start no earlier than 2006-05-15 |
| 54 | #371 - Force/validate lowercase usernames on entry | 2006-04-28 → 2006-05-17 (+19d) | 2006-04-28 → 2006-05-17 (+19d) |  |  | 0d → 15d | #356 - Find a solution for entering the nomenclature and genotype information., 52 → none | constraint none → start no earlier than 2006-05-17 |
| 55 | **caMOD database enhancements** | 2006-02-16 → 2006-04-03 (+46d) | 2006-04-04 → 2006-05-16 (+42d) | 33.1d → 31d |  | 0d → 15.6d |  |  |
| 57 | #43 - DB - Gene ID in spon mutation page | 2006-02-16 → 2006-04-17 (+60d) | 2006-02-16 → 2006-04-18 (+61d) |  |  | 0d → 15.6d | none → 56 |  |
| 59 | #296 - DB - wrong display of targeted vs random integration of transgene and genomic segment | 2006-02-20 → 2006-04-18 (+57d) | 2006-02-21 → 2006-04-19 (+57d) |  |  | 0d → 15.6d | 46 → 58 |  |
| 60 | #303 - DB - Add field to publication table to store the J number | 2006-02-21 → 2006-04-19 (+57d) | 2006-02-22 → 2006-04-20 (+57d) |  |  | 0d → 15.6d |  |  |
| 61 | #326 - DB - Remove Duplicates in the taxon table and consider splitting the taxon table in species and strain table (back to what we... | 2006-02-22 → 2006-04-20 (+57d) | 2006-03-01 → 2006-04-25 (+55d) | 1w → 3d |  | 0d → 15.6d | 60, 59 → 60 |  |
| 62 | #327 - DB - Investigate enhancing the design for organ/disease table relations | 2006-03-01 → 2006-04-25 (+55d) | 2006-03-03 → 2006-04-27 (+55d) |  |  | 0d → 15.6d |  |  |
| 63 | #328 - DB - Remove any unecessary cross-reference tables | 2006-03-03 → 2006-04-27 (+55d) | 2006-03-10 → 2006-05-02 (+53d) | 1w → 3d |  | 0d → 15.6d |  |  |
| 64 | #333 - DB - Tackle env factor vs agent and therapy vs carcinogenic intervention problems | 2006-03-14 → 2006-05-02 (+49d) | 2006-03-21 → 2006-05-09 (+49d) |  |  | 0d → 15.6d | #332 - DB - clean up field names, 63 → 63 |  |
| 65 | #334 - DB - Change “tumorProgression” to “tumorResponse” in the therapy object | 2006-03-21 → 2006-05-09 (+49d) | 2006-03-21 → 2006-05-10 (+50d) |  |  | 0d → 15.6d |  |  |
| 66 | #335 - DB - The inhibition rate field in the screening_results table for the yeast data is not used. | 2006-03-21 → 2006-05-10 (+50d) | 2006-03-21 → 2006-05-11 (+51d) | 0.1d → 1d |  | 0d → 15.6d |  | resources none → Nick |
| 67 | #338 - DB - Add an other option to the drop-down list of clinical marker | 2006-03-22 → 2006-05-11 (+50d) | 2006-03-23 → 2006-05-11 (+49d) |  |  | 0d → 15.6d | 39, 65 → 66 |  |
| 68 | #340 - DB - Change the relationship between animal_availibility and animal_distributor objects | 2006-03-23 → 2006-05-11 (+49d) | 2006-03-24 → 2006-05-12 (+49d) |  |  | 0d → 15.6d |  |  |
| 69 | #343 - DB - Change Harvest_date from a date field to a varchar | 2006-03-31 → 2006-05-12 (+42d) | 2006-03-31 → 2006-05-15 (+45d) |  |  | 0d → 15.6d | #342 - DB - Modify/Clean up the way we handle units, 68 → 68 |  |
| 70 | #346 - DB - Change MGI number to a varchar field | 2006-03-31 → 2006-05-15 (+45d) | 2006-04-03 → 2006-05-15 (+42d) |  |  | 0d → 15.6d |  |  |
| 71 | #348 - DB - Add an uncontrolledVocab for administative route to Ab Cancer Model for Xenograft. | 2006-04-03 → 2006-05-15 (+42d) | 2006-04-04 → 2006-05-16 (+42d) |  |  | 0d → 15.6d |  |  |
| 72 | #376 - Update caMOD for JDK 1.5 collections and change from List to Set | 2006-03-10 → 2006-04-03 (+24d) | 2006-03-17 → 2006-04-10 (+24d) |  |  | 12.1d → 41.6d | 63 → none |  |
| 73 | **EVS modifications** | 2006-04-05 → 2005-12-29 (-97d) | 2006-04-19 → 2006-01-11 (-98d) |  |  | 7.5d → 104.5d |  | was named EVS Tree modification |
| 74 | #280 - EVS Tree - show species specific anatomy vocabularies | 2006-04-05 → 2005-12-29 (-97d) | 2006-04-12 → 2005-12-30 (-103d) | 1w → 2d |  | 12.5d → 104.5d |  |  |
| 75 | #320 - Find ways to speed up the entry of organs and diagnoses | 2006-05-03 → 2006-01-02 (-121d) | 2006-05-10 → 2006-01-06 (-124d) |  |  | 0d → 104.5d | none → 74 |  |
| 76 | #281 - EVS Tree - utilize the staining vocabulary | 2006-04-05 → 2006-01-09 (-86d) | 2006-04-10 → 2006-01-11 (-89d) |  |  | 14.5d → 104.5d | none → 75 |  |
| 77 | Milestone: coding completed | 2006-04-10 → 2006-05-31 (+51d) | 2006-04-13 → 2006-05-31 (+48d) | 3d → 0d |  | 63d → 4.5d | Test → 30 | was named Milestone: Iteration1 completed |
| 78 | **Integration Testing Schedule** | 2006-06-12 → 2005-12-29 (-165d) | 2006-07-03 → 2006-06-13 (-20d) | 14.5d → 119d |  | 0d → 2d | Milestone: Iteration3 completed → none |  |
| 79 | **Develop Test Plan** | 2006-06-12 → 2005-12-29 (-165d) | 2006-06-26 → 2006-01-11 (-166d) |  |  | 10.5d → 111d |  |  |

| ID | Task | Start | Finish | Duration | Total float | Predecessors | Other |
| --- | --- | --- | --- | --- | --- | --- | --- |
| 80 | Develop release Test Plan | 2006-06-12 → 2005-12-29 (-165d) | 2006-06-20 → 2006-01-05 (-166d) |  | 14.5d → 115d |  | was named Develop Iteration 1 Test Plan |
| 81 | Develop Integration Test Plan | 2006-06-12 → 2005-12-29 (-165d) | 2006-06-26 → 2006-01-11 (-166d) |  | 10.5d → 111d |  |  |
| 82 | Deploy to Development Server | 2006-06-12 → 2005-12-29 (-165d) | 2006-06-13 → 2005-12-29 (-166d) |  | 19.5d → 120d |  | was named Deploy All Iterations to Development Server |
| 83 | Development Test | 2006-06-12 → 2005-12-29 (-165d) | 2006-06-20 → 2006-01-05 (-166d) |  | 14.9d → 115.4d |  | was named Development Test All Iterations |
| 84 | Deploy to Integration Test Server | 2006-06-12 → 2006-06-01 (-11d) | 2006-06-14 → 2006-06-02 (-12d) |  | 0d → 4.5d | none → 77 | was named Deploy All Iteration to Integration Test Server |
| 85 | Integration Test | 2006-06-12 → 2006-06-02 (-10d) | 2006-06-22 → 2006-06-09 (-13d) | 8d → 5d | 12.5d → 4.5d | none → 84 | was named Integration Test All Iterations |
| 87 | Test on Staging Server | 2006-06-14 → 2006-06-12 (-2d) | 2006-06-15 → 2006-06-13 (-2d) | 1d → 2d | 0d → 1d | 84 → none | was named Deploy All Iterations to Staging Server; constraint none → finish no earlier than 2006-06-13 |
| 88 | **Transition** | 2006-07-03 → 2006-05-15 (-49d) | 2006-07-11 → 2006-06-15 (-26d) | 6d → 24d |  | 89 → none |  |
| 89 | Milestone: Test All Iterations | 2006-06-15 → 2006-06-13 (-2d) | 2006-07-03 → 2006-06-13 (-20d) | 12d → 0d | 0d → 1d |  | was named Test All Iterations |
| 90 | Milestone: Code Freeze | 2006-07-03 → 2006-06-01 (-32d) | 2006-07-04 → 2006-06-01 (-33d) |  | 5d → 10d | Milestone: Iteration3 completed → 23 | was named Code Freeze |
| 91 | Milestone: Deploy Iteration to Production | 2006-07-03 → 2006-06-15 (-18d) | 2006-07-05 → 2006-06-15 (-20d) | 2d → 1d | 4d → 0d |  | was named Deploy Iteration to Production; constraint none → start no earlier than 2006-06-15 |
| 92 | **Document Iteration** | 2006-07-03 → 2006-05-15 (-49d) | 2006-07-11 → 2006-06-05 (-36d) | 6d → 16d | 0d → 8d |  |  |
| 93 | Create User Guides | 2006-07-03 → 2006-05-15 (-49d) | 2006-07-11 → 2006-05-22 (-50d) |  | 0d → 8d | Milestone: Iteration3 completed → none | was named Update User Guides; constraint none → start no earlier than 2006-05-15 |
| 95 | Update technical / design documentation | 2006-07-03 → 2006-05-29 (-35d) | 2006-07-06 → 2006-06-01 (-35d) | 3.56d → 4d | 2.44d → 8d | none → 94 |  |
| 96 | Create Release Notes | 2006-07-03 → 2006-06-02 (-31d) | 2006-07-03 → 2006-06-02 (-31d) |  | 5.5d → 8d | none → 95 |  |
| 97 | Create Known Issues document | 2006-07-03 → 2006-06-02 (-31d) | 2006-07-03 → 2006-06-02 (-31d) |  | 5.5d → 8d | none → 96 |  |
| 98 | Create Fixed defects document | 2006-07-03 → 2006-06-05 (-28d) | 2006-07-03 → 2006-06-05 (-28d) |  | 5.5d → 8d | none → 97 |  |
| 99 | Create What's New Document | 2006-07-03 → 2006-06-05 (-28d) | 2006-07-03 → 2006-06-05 (-28d) |  | 5.5d → 8d | none → 98 |  |
| 100 | Milestone: Complete Version 2.1 | 2006-07-05 → 2006-06-15 (-20d) | 2006-07-05 → 2006-06-15 (-20d) |  | 4d → 0d | 91 → 91, 99 |  |

## Version 7 (saved 2006-05-15)

Note of the change: *** empty log message ***

Last finish 2006-06-15 → 2006-05-31 (-15d). Complete tasks 0 → 41.

Added:

| ID | Task | Duration | Start | Finish | Predecessors | Resources |
| --- | --- | --- | --- | --- | --- | --- |
| 46 | #273 - Improve the way the serach text screen works -Auto completion | 6d | 2006-04-04 A | 2006-05-26 | 42 | Ajay |

Removed: 41 #61 - Sequence Id field on search detail page not populated; 43 #229 - Add help button (=link to online help) to the title of every page; 44 #237 - Add the ability to remove an image from Eng. Trans, Gen. Seg or Targ. Mod.; 74 #280 - EVS Tree - show species specific anatomy vocabularies; 75 #320 - Find ways to speed up the entry of organs and diagnoses; 84 Deploy to Integration Test Server; 85 Integration Test; 92 Document Iteration; 93 Create User Guides; 94 Update online help documentation; 95 Update technical / design documentation; 96 Create Release Notes; 97 Create Known Issues document; 98 Create Fixed defects document; 99 Create What's New Document

Changed:

| ID | Task | Start | Finish | Duration | Complete | Total float | Predecessors | Other |
| --- | --- | --- | --- | --- | --- | --- | --- | --- |
| 1 | **caMOD Version 2.1** | 2005-12-29 A | 2006-06-15 → 2006-05-31 (-15d) | 121d → 109.5d | 0% → 85% |  |  |  |
| 2 | **Inception** | 2005-12-29 A | 2006-01-02 A |  | 0% → 100% | 15.6d → none |  |  |
| 3 | Identify caMOD 2.1 requirements | 2005-12-29 A | 2006-01-02 A |  | 0% → 100% | 17.6d → none |  |  |
| 4 | Identify usability enhancement requirements | 2005-12-29 A | 2006-01-02 A |  | 0% → 100% | 17.6d → none |  |  |
| 5 | **Elaboration** | 2006-01-02 A | 2006-06-06 → 2006-05-31 (-6d) | 111.1d → 107.1d | 0% → 74% | 7.5d → 0d |  |  |
| 6 | Draft caMOD 2.1 Test Cases | 2006-01-02 A |  |  | 0% → 20% |  |  |  |
| 7 | Draft caMOD 2.1 Usability Enhancement Use Cases | 2006-01-02 A |  |  | 0% → 20% |  |  |  |
| 8 | Draft caMOD 2.1 Use Cases | 2006-01-02 A | 2006-01-16 A |  | 0% → 100% | 45.4d → none |  |  |
| 9 | Review Use Cases, including CCMG members | 2006-01-16 A | 2006-04-13 A |  | 0% → 100% | 45.4d → none |  |  |
| 10 | **caMOD database enhancements** | 2006-01-02 A | 2006-02-23 A |  | 0% → 100% | 15.6d → none |  |  |
| 11 | Consolidate all DB changes | 2006-01-02 A | 2006-01-09 A |  | 0% → 100% | 17.6d → none |  |  |
| 12 | Updated Object Model | 2006-01-09 A | 2006-02-09 A |  | 0% → 100% | 17.6d → none |  |  |
| 13 | Updated Data Model | 2006-02-09 A | 2006-02-16 A |  | 0% → 100% | 17.6d → none |  |  |
| 14 | Milestone: Completed ER document | 2006-02-16 A | 2006-02-23 A |  | 0% → 100% | 17.6d → none |  |  |
| 15 | **Interface with caDSR** | 2006-05-09 → 2006-04-27 A (-12d) | 2006-06-06 → 2006-05-31 (-6d) | 20.5d → 24.5d | 0% → 52% | 7.5d → 0d |  |  |
| 16 | Establish baseline documentation and prepare submission package | 2006-06-05 → 2006-04-27 A (-39d) | 2006-06-06 → 2006-04-27 A (-40d) |  | 0% → 100% | 7.5d → none | 22 → none | resources Srini; Ulli → Srini; David |
| 17 | Annotate UML model with well formed names and definitions | 2006-05-09 → 2006-05-04 A (-5d) | 2006-05-11 → 2006-05-19 (+8d) | 3d → 9d | 0% → 90% | 7.5d → 0d |  | constraint start no earlier than 2006-05-09 → finish no earlier than 2006-05-19; resources Ulli → David |
| 18 | Review semantic connector output | 2006-05-12 → 2006-05-22 (+10d) | 2006-05-12 → 2006-05-22 (+10d) |  |  | 7.5d → 0d |  |  |
| 19 | Perform semantic annotation of UML models | 2006-05-12 → 2006-05-22 (+10d) | 2006-05-16 → 2006-05-24 (+8d) |  |  | 7.5d → 0d |  | resources Ulli → NCICB |
| 20 | Run UML loader | 2006-05-16 → 2006-05-24 (+8d) | 2006-05-30 → 2006-05-25 (-5d) | 2w → 1d |  | 7.5d → 0d |  |  |
| 21 | Review CDEs in staging | 2006-05-30 → 2006-05-25 (-5d) | 2006-06-01 → 2006-05-29 (-3d) |  |  | 7.5d → 0d |  | resources Ulli → NCICB |
| 22 | Curate additional metadata | 2006-06-01 → 2006-05-29 (-3d) | 2006-06-05 → 2006-05-31 (-5d) |  |  | 7.5d → 0d |  | resources Ulli → NCICB |
| 23 | **Construction** | 2005-12-29 A | 2006-05-31 → 2006-05-26 (-5d) | 110d → 107d | 0% → 93% | 4.5d → 1.5d |  |  |
| 24 | **Iteration 1** | 2005-12-29 A | 2006-05-31 → 2006-05-26 (-5d) | 110d → 107d | 0% → 93% | 4.5d → 1.5d |  |  |
| 25 | Requirements Analysis | 2005-12-29 A | 2006-01-02 A |  | 0% → 100% | 107d → none |  |  |
| 26 | Design | 2006-01-03 A | 2006-01-05 A |  | 0% → 100% | 107d → none |  |  |
| 27 | Data cleanup | 2006-02-23 A | 2006-02-27 A |  | 0% → 100% | 17.6d → none |  |  |
| 28 | Create schema migration scripts | 2006-02-27 A | 2006-03-06 A |  | 0% → 100% | 17.6d → none |  |  |
| 29 | Hibernate Mapping changes | 2006-03-06 A | 2006-04-03 A |  | 0% → 100% | 17.6d → none |  |  |
| 30 | **Code** | 2005-12-29 A | 2006-05-31 → 2006-05-26 (-5d) | 110d → 107d | 0% → 92% | 4.5d → 1.5d |  |  |
| 31 | **caMOD usibility enhancements** | 2006-01-05 A | 2006-05-08 A |  | 0% → 100% | 21.5d → none |  |  |
| 32 | Change caMOD to use new EVSTree | 2006-05-03 A | 2006-05-04 A |  | 0% → 100% | 21.5d → none |  |  |
| 33 | Change caMOD to use caBIO version 3.1 | 2006-05-05 A | 2006-05-08 A |  | 0% → 100% | 21.5d → none |  |  |
| 34 | #345 - Viewing/submitting images while in https mode has nag message in IE | 2006-01-05 A | 2006-01-09 A |  | 0% → 100% | 107d → none |  |  |
| 35 | **caMOD RemoteAPI/GRID** | 2005-12-29 A | 2006-05-31 → 2006-05-24 (-7d) | 110d → 105d | 0% → 90% | 4.5d → 3.5d |  |  |
| 36 | #369 - Create remote interface for caMOD object model | 2005-12-29 A |  |  | 0% → 90% | 4.5d → 13.5d |  | resources none → Marc |
| 37 | #359 - Make caMod available in the grid | 2006-05-18 A | 2006-05-31 → 2006-05-24 A (-7d) | 2w → 1w | 0% → 100% | 4.5d → none |  |  |
| 38 | **caMOD enhancements** | 2005-12-29 A | 2006-05-17 → 2006-05-26 (+9d) | 100d → 107d | 0% → 91% | 14.5d → 1.5d |  |  |
| 39 | #43 - Gene ID in spon mutation page | 2005-12-29 → 2006-01-24 A (+26d) | 2005-12-29 → 2006-01-24 A (+26d) |  | 0% → 100% | 113d → none |  |  |
| 40 | #55 - Feature request - highlight keyword in search result | 2005-12-29 → 2006-02-21 A (+54d) | 2006-01-04 → 2006-02-27 A (+54d) |  | 0% → 100% | 109.5d → none |  |  |
| 41 | #225 - Clear Organ name on screens where it is not required |  |  | 1d → 0.5d |  | 113.5d → 114d |  | resources Nick → Sima |
| 42 | #238 - Make search result list configurable | 2006-02-20 A | 2006-03-03 → 2006-05-18 (+76d) | 2w → 12.8w | 0% → 95% | 66d → 6d |  | constraint start no earlier than 2006-02-20 → finish no earlier than 2006-05-18; resources Sima [50%]; David [25%]; Nick [50%] → Nick |
| 43 | #249 - No "other" can be choose from Donor Species | 2006-03-06 → 2006-05-19 (+74d) | 2006-03-06 → 2006-05-19 (+74d) |  |  | 67d → 13d |  |  |
| 44 | #261 - Add the ability to save search queries for reuse | 2006-03-30 A |  |  | 0% → 95% |  |  |  |
| 45 | #272 - Add diagnosis to the summary on the histopath search page | 2006-03-06 → 2006-03-15 A (+9d) | 2006-03-06 → 2006-03-15 A (+9d) |  | 0% → 100% | 66d → none | 42 → none |  |
| 47 | #289 - information if mouse is a tool mouse doesn't show up on mod char search page | 2005-12-29 → 2006-04-03 A (+95d) | 2005-12-29 → 2006-04-03 A (+95d) |  | 0% → 100% | 114d → none |  | constraint none → start no earlier than 2006-02-15 |
| 48 | #290 - Cell Line Publication - throws uncaught connection error | 2006-05-11 → 2006-05-16 (+5d) | 2006-05-12 → 2006-05-16 (+4d) | 2d → 0.5d |  | 17.5d → 16d |  | constraint start no earlier than 2006-05-11 → start no earlier than 2006-05-16 |
| 49 | #295 - Verify all free text fields allow html markup | 2006-05-11 → 2006-05-15 (+4d) | 2006-05-11 → 2006-05-15 (+4d) |  |  | 18.5d → 10.5d | 45 → none | constraint start no earlier than 2006-05-11 → start no earlier than 2006-05-15 |
| 50 | #297 - Missed camod:shorten tag for therapeutic approaches | 2006-02-27 → 2006-01-11 A (-47d) | 2006-02-28 → 2006-01-11 A (-48d) |  | 0% → 100% | 71.1d → none |  |  |
| 51 | #302 - Allow user to search for metastasis in specific organ or for metastatic models in general on Advanced Search page |  | 2006-05-16 → 2006-05-15 (-1d) | 2d → 1d |  | 15.5d → 16.5d |  |  |
| 52 | #371 - Force/validate lowercase usernames on entry | 2006-05-17 → 2006-05-15 A (-2d) | 2006-05-17 → 2006-05-15 A (-2d) |  | 0% → 100% | 15d → none |  | constraint start no earlier than 2006-05-17 → start no earlier than 2006-05-15 |
| 53 | **caMOD database enhancements** | 2006-04-03 A | 2006-05-16 A |  | 0% → 100% | 15.6d → none |  |  |
| 54 | Cascade 2.1 OM changes through code | 2006-04-03 A | 2006-04-17 A |  | 0% → 100% | 15.6d → none |  |  |
| 55 | #43 - DB - Gene ID in spon mutation page | 2006-04-17 A | 2006-04-18 A |  | 0% → 100% | 15.6d → none |  |  |
| 56 | #249 - No "other" can be choose from Donor Species | 2006-04-18 A | 2006-04-18 A |  | 0% → 100% | 15.6d → none |  |  |
| 57 | #296 - DB - wrong display of targeted vs random integration of transgene and genomic segment | 2006-04-18 A | 2006-04-19 A |  | 0% → 100% | 15.6d → none |  |  |
| 58 | #303 - DB - Add field to publication table to store the J number | 2006-04-19 A | 2006-04-20 A |  | 0% → 100% | 15.6d → none |  |  |
| 59 | #326 - DB - Remove Duplicates in the taxon table and consider splitting the taxon table in species and strain table (back to what we... | 2006-04-20 A | 2006-04-25 A |  | 0% → 100% | 15.6d → none |  |  |
| 60 | #327 - DB - Investigate enhancing the design for organ/disease table relations | 2006-04-25 A | 2006-04-27 A |  | 0% → 100% | 15.6d → none |  |  |
| 61 | #328 - DB - Remove any unecessary cross-reference tables | 2006-04-27 A | 2006-05-02 A |  | 0% → 100% | 15.6d → none |  |  |
| 62 | #333 - DB - Tackle env factor vs agent and therapy vs carcinogenic intervention problems | 2006-05-02 A | 2006-05-09 A |  | 0% → 100% | 15.6d → none |  |  |
| 63 | #334 - DB - Change “tumorProgression” to “tumorResponse” in the therapy object | 2006-05-09 A | 2006-05-10 A |  | 0% → 100% | 15.6d → none |  |  |
| 64 | #335 - DB - The inhibition rate field in the screening_results table for the yeast data is not used. | 2006-05-10 A | 2006-05-11 A |  | 0% → 100% | 15.6d → none |  |  |
| 65 | #338 - DB - Add an other option to the drop-down list of clinical marker | 2006-05-11 A | 2006-05-11 A |  | 0% → 100% | 15.6d → none |  |  |
| 66 | #340 - DB - Change the relationship between animal_availibility and animal_distributor objects | 2006-05-11 A | 2006-05-12 A |  | 0% → 100% | 15.6d → none |  |  |
| 67 | #343 - DB - Change Harvest_date from a date field to a varchar | 2006-05-12 A | 2006-05-15 A |  | 0% → 100% | 15.6d → none |  |  |
| 68 | #346 - DB - Change MGI number to a varchar field | 2006-05-15 A | 2006-05-15 A |  | 0% → 100% | 15.6d → none |  |  |
| 69 | #348 - DB - Add an uncontrolledVocab for administative route to Ab Cancer Model for Xenograft. | 2006-05-15 A | 2006-05-16 A |  | 0% → 100% | 15.6d → none |  |  |
| 70 | #376 - Update caMOD for JDK 1.5 collections and change from List to Set | 2006-04-03 A | 2006-04-10 A |  | 0% → 100% | 41.6d → none |  |  |
| 71 | **EVS modifications** | 2005-12-29 → 2006-05-17 A (+139d) | 2006-01-11 → 2006-05-19 (+128d) | 10d → 3d | 0% → 50% | 104.5d → 6.5d |  |  |

| ID | Task | Start | Finish | Duration | Complete | Total float | Predecessors | Other |
| --- | --- | --- | --- | --- | --- | --- | --- | --- |
| 72 | #281 - EVS Tree - utilize the staining vocabulary | 2006-01-09 → 2006-05-17 A (+128d) | 2006-01-11 → 2006-05-19 (+128d) |  | 0% → 50% | 104.5d → 6.5d | #320 - Find ways to speed up the entry of organs and diagnoses → none | constraint none → start no earlier than 2006-05-17; resources none → David |
| 73 | Milestone: coding completed | 2006-05-31 → 2006-05-26 (-5d) | 2006-05-31 → 2006-05-26 (-5d) |  |  | 4.5d → 1.5d |  |  |
| 74 | **Integration Testing Schedule** |  | 2006-06-13 → 2006-05-29 (-15d) | 119d → 107.5d |  |  |  |  |
| 76 | Develop release Test Plan |  | 2006-01-05 → 2005-12-30 (-6d) | 6d → 2d |  | 115d → 107.5d |  |  |
| 78 | Deploy to Development Server | 2005-12-29 → 2006-05-19 (+141d) | 2005-12-29 → 2006-05-19 (+141d) | 1d → 0d |  | 120d → 6.5d |  | constraint none → start no earlier than 2006-05-19 |
| 79 | Development Test | 2005-12-29 → 2006-05-19 (+141d) | 2006-01-05 → 2006-05-22 (+137d) | 5.6d → 2d |  | 115.4d → 6.5d | none → 78 | resources QA; Ulli; Nick; Sima; David → QA; Juergen |
| 80 | Deploy to Staging Server | 2006-06-13 → 2006-05-26 (-18d) | 2006-06-13 → 2006-05-26 (-18d) |  |  | 2d → 1d |  | constraint finish no earlier than 2006-06-13 → start no earlier than 2006-05-26 |
| 81 | Test on Staging Server | 2006-06-12 → 2006-05-29 (-14d) | 2006-06-13 → 2006-05-29 (-15d) | 2d → 0.5d |  |  | none → 80 | constraint finish no earlier than 2006-06-13 → start no earlier than 2006-05-26; resources QA → QA; Juergen |
| 82 | **Transition** | 2006-05-15 → 2006-05-29 (+14d) | 2006-06-15 → 2006-05-30 (-16d) | 24d → 2d |  | 0d → 0.5d |  |  |
| 83 | Milestone: Test All Iterations | 2006-06-13 → 2006-05-29 (-15d) | 2006-06-13 → 2006-05-29 (-15d) |  |  |  |  |  |
| 84 | Milestone: Code Freeze | 2006-06-01 → 2006-05-29 (-3d) | 2006-06-01 → 2006-05-29 (-3d) |  |  | 10d → 1.5d |  |  |
| 85 | Milestone: Deploy Iteration to Production | 2006-06-15 → 2006-05-30 (-16d) | 2006-06-15 → 2006-05-30 (-16d) |  |  | 0d → 0.5d |  | constraint start no earlier than 2006-06-15 → start no earlier than 2006-05-30 |
| 86 | Milestone: Complete Version 2.1 | 2006-06-15 → 2006-05-30 (-16d) | 2006-06-15 → 2006-05-30 (-16d) |  |  | 0d → 0.5d | 85, Create What's New Document → 85 | resources Ulli → QA; Juergen |
