# caMOD 2.2

How a schedule from MS Project changed from version to version. A marks actual dates.

## Version 1 (saved 2007-01-19)

Note of the change: Initial draft with tasks, resources, and dependencies - Dates need corrected

| ID | WBS | Task | Duration | Start | Finish | Predecessors | Total float | Constraint |
| --- | --- | --- | --- | --- | --- | --- | --- | --- |
| 1 | 1 | **caMOD 2.3 Release** | 231d? | 2006-06-26 | 2007-05-14 |  | 0d |  |
| 2 | 1.1 | **Project Management and Control** | 80d | 2006-06-26 | 2006-10-13 |  | 2d |  |
| 3 |  | Project Management | 80d | 2006-06-26 | 2006-10-13 |  | 2d |  |
| 4 |  | Project Control | 80d | 2006-06-26 | 2006-10-13 |  | 2d |  |
| 5 | 1.2 | **Inception Phase** | 154d | 2006-06-26 | 2007-01-25 |  | 77d |  |
| 6 | 1.2.1 | **Requirements Gathering** | 138d | 2006-06-26 | 2007-01-03 |  | 0d |  |
| 7 |  | NCICB/MMHCC team | 1w | 2006-12-20 | 2006-12-26 |  | 5d | start no earlier than 2006-12-20 |
| 8 |  | Determine Basic Use Cases | 1w | 2006-06-26 | 2006-06-30 |  | 13d |  |
| 9 |  | Prioritize Use Cases | 1d | 2007-01-03 | 2007-01-03 | 7, 8 | 0d | start no earlier than 2007-01-03 |
| 10 | 1.2.2 | **Documentation** | 16d | 2007-01-04 | 2007-01-25 |  | 0d |  |
| 11 |  | Draft Project Plan | 5d | 2007-01-19 | 2007-01-25 |  | 52d | start no earlier than 2007-01-19 |
| 12 |  | Draft Requirements Specification Document | 1w | 2007-01-04 | 2007-01-10 | 9 | 0d |  |
| 13 |  | Draft Test Plan | 1w | 2007-01-11 | 2007-01-17 | 12 | 78d |  |
| 14 |  | Draft Test Cases | 1w | 2007-01-18 | 2007-01-24 | 13 | 78d |  |
| 15 |  | Milestone: General Requirements Captured & Priortized | 0d | 2007-01-10 | 2007-01-10 | 12 | 0d |  |
| 16 | 1.3 | **Elaboration Phase** | 66d? | 2007-01-10 | 2007-04-12 |  | 0d |  |
| 17 | 1.3.1 | **Architecture** | 6d | 2007-01-10 | 2007-01-18 |  | 0d |  |
| 18 |  | Internal review with MMHCC Team | 0d | 2007-01-10 | 2007-01-10 | 15 | 0d |  |
| 19 |  | Incorporate Comments/Feedback from the team review | 1d | 2007-01-11 | 2007-01-11 | 18 | 0d |  |
| 20 |  | Review use cases / design with the "Review Board" | 0d | 2007-01-11 | 2007-01-11 | 19 | 0d |  |
| 21 |  | Draft design document (caBIG template) | 1w | 2007-01-12 | 2007-01-18 | 20 | 0d |  |
| 22 |  | Milestone: Completed Design document | 0d | 2007-01-18 | 2007-01-18 | 21 | 0d |  |
| 23 | 1.3.2 | **Database Cleanup** | 3d? | 2007-01-26 | 2007-01-30 | 11 | 52d |  |
| 24 |  | Data Issue - current genetic background | 1d? | 2007-01-26 | 2007-01-26 |  | 54d |  |
| 25 |  | Data Issue - review and if reasonable delete all records that have been in the incomplete state for more than 2 years | 1d? | 2007-01-26 | 2007-01-26 |  | 54d |  |
| 26 |  | Data - inactivate screened-rejected records submitted by intramural researchers | 1d? | 2007-01-26 | 2007-01-26 |  | 54d |  |
| 27 |  | Clean up files | 1d? | 2007-01-26 | 2007-01-26 |  | 54d |  |
| 28 |  | Modify Data - need to assign zebrafish organs instead of mouse organs on histopath page | 3d | 2007-01-26 | 2007-01-30 |  | 52d |  |
| 29 | 1.3.3 | **Itreration 1: Bug fixes & usability enhancements** | 8d | 2007-01-19 | 2007-01-30 | 22 | 52d |  |
| 30 | 1.3.3.1 | **Search Features** | 8d | 2007-01-19 | 2007-01-30 |  | 52d |  |
| 31 |  | Customizing search results doesn't work when carcinogen is selected | 1w | 2007-01-19 | 2007-01-25 |  | 55d |  |
| 32 |  | Adv search for carcinogens does not include data from Jackson Lab | 1w | 2007-01-19 | 2007-01-25 |  | 55d |  |
| 33 |  | Fix Jax lab availability link and data | 1d | 2007-01-19 | 2007-01-19 |  | 59d |  |
| 34 |  | Fix searches - table of contents shows only selection of organ systems | 8d | 2007-01-19 | 2007-01-30 |  | 52d |  |
| 35 |  | Fix MGI link on genetic description pages and at the same time fix existing data | 3d | 2007-01-19 | 2007-01-23 |  | 57d |  |
| 36 |  | Fix model records with missing PI | 2d | 2007-01-19 | 2007-01-22 |  | 58d |  |
| 37 |  | MTB radiation data are not shown | 2d | 2007-01-19 | 2007-01-22 |  | 58d |  |
| 38 | 1.3.3.2 | **Submission Features** | 3d | 2007-01-19 | 2007-01-23 | 22 | 57d |  |
| 39 |  | Can not delete nomenclature on model char submission page | 2d | 2007-01-19 | 2007-01-22 |  | 58d |  |
| 40 |  | Nomenclature submssion field adds data when model is edited | 3d | 2007-01-19 | 2007-01-23 |  | 57d |  |
| 41 | 1.3.4 | **Iteration 2: Additional Features Added to caMOD** | 60d | 2007-01-19 | 2007-04-12 | 22 | 0d |  |
| 42 |  | Admin Section Needs Additional Filters | 2w | 2007-01-19 | 2007-02-01 |  | 50d |  |
| 43 |  | Use improved PubMed fetch script on publication submission page | 3d | 2007-01-19 | 2007-01-23 |  | 57d |  |
| 44 |  | Do not delete EnvironmentalFactor objects - instead reuse and leave in DB | 2d | 2007-01-19 | 2007-01-22 |  | 58d |  |
| 45 |  | Upgrade to a new version of struts | 1w | 2007-01-19 | 2007-01-25 |  | 55d |  |
| 46 |  | Configure our app to use a JNDI data source | 1w | 2007-01-19 | 2007-01-25 |  | 55d |  |
| 47 | 1.3.4.6 | **EVSTree - caMOD-side work** | 10d | 2007-02-02 | 2007-02-15 |  | 40d |  |
| 48 |  | Show species specific anatomy vocabularies (caMOD changes) | 1w | 2007-02-09 | 2007-02-15 | 68 | 40d |  |
| 49 |  | Utilize the staining vocabulary (caMOD changes) | 1w | 2007-02-02 | 2007-02-08 | 69 | 45d |  |
| 50 |  | Use mouse and rat strains from NCI Thesaurus (caMOD changes) | 1w | 2007-02-02 | 2007-02-08 | 71 | 45d |  |
| 51 | 1.3.4.7 | **ZEBRAFISH Specific Support in caMOD** | 5d | 2007-01-19 | 2007-01-25 |  | 55d |  |
| 52 |  | Add age drop down list to model characteristics submission and search page | 3d | 2007-01-19 | 2007-01-23 |  | 57d |  |
| 53 |  | Add drop down list for Site to morpholino submission and search page | 3d | 2007-01-19 | 2007-01-23 |  | 57d |  |
| 54 |  | Add drop down list for delivery method to morpholino submission and search page | 3d | 2007-01-19 | 2007-01-23 |  | 57d |  |
| 55 |  | Modify histopathology page - make diagnosis field free text or used Hatem's list | 1w | 2007-01-19 | 2007-01-25 |  | 55d |  |
| 56 |  | Modify availability pages - add page for zfin, keep investigator page | 3d | 2007-01-19 | 2007-01-23 |  | 57d |  |
| 57 |  | Modify genetic description pages - link to zfin.org for allele details | 3d | 2007-01-19 | 2007-01-23 |  | 57d |  |
| 58 |  | Modify therapy page - add drop down list for developmental stage | 3d | 2007-01-19 | 2007-01-23 |  | 57d |  |
| 59 |  | Add "small molecules" to chemical class list on therapy submission page | 1d | 2007-01-19 | 2007-01-19 |  | 59d |  |
| 60 |  | Add conditioning regimen dropdown to xenograft page | 3d | 2007-01-19 | 2007-01-23 |  | 57d |  |
| 61 | 1.3.4.8 | **Iteration : Additional Features Outside caMOD Application Code** | 60d | 2007-01-19 | 2007-04-12 |  | 0d |  |
| 62 | 1.3.4.8.1 | **EVSTree** | 40d | 2007-01-19 | 2007-03-15 |  | 0d |  |
| 63 | 1.3.4.8.1.1 | **Architecture and Design** | 5d | 2007-01-19 | 2007-01-25 |  | 35d |  |
| 64 |  | Use Case and Design Doc (caBIG template) | 1w | 2007-01-19 | 2007-01-25 |  | 35d |  |
| 65 |  | Review use cases / design with the "Review Board" | 1d | 2007-01-19 | 2007-01-19 |  | 39d |  |
| 66 | 1.3.4.8.1.2 | **Implementation and Testing** | 40d | 2007-01-19 | 2007-03-15 |  | 0d |  |
| 67 |  | Restore the association between organ and diagnosis | 8w | 2007-01-19 | 2007-03-15 |  | 0d |  |
| 68 |  | Show species specific anatomy vocabularies | 3w | 2007-01-19 | 2007-02-08 |  | 25d |  |
| 69 |  | Utilize the staining vocabulary | 2w | 2007-01-19 | 2007-02-01 |  | 30d |  |
| 70 |  | Annoyances with EVS organ tree | 4w | 2007-01-19 | 2007-02-15 |  | 20d |  |

| ID | WBS | Task | Duration | Start | Finish | Predecessors | Total float |
| --- | --- | --- | --- | --- | --- | --- | --- |
| 71 |  | Use mouse and rat strains from NCI Thesaurus | 2w | 2007-01-19 | 2007-02-01 |  | 30d |
| 72 |  | Selecting search results in tree causes HTTP 404 Error | 3d | 2007-01-19 | 2007-01-23 |  | 37d |
| 73 |  | Crash - when trying to select search result page crashes | 1w | 2007-01-19 | 2007-01-25 |  | 35d |
| 74 | 1.3.4.8.2 | **Remote API / Grid** | 55d | 2007-01-19 | 2007-04-05 |  | 5d |
| 75 |  | Remote API - Upgrade to 1.0 of Tool Kit | 1w | 2007-01-19 | 2007-01-25 |  | 55d |
| 76 |  | Make caMod available in the grid (production) | 1w | 2007-01-19 | 2007-01-25 |  | 55d |
| 77 |  | Map API to latest OM (2.2) | 2w | 2007-01-19 | 2007-02-01 |  | 50d |
| 78 |  | Make only edited-approved models available through API | 3w | 2007-03-16 | 2007-04-05 | 62 | 0d |
| 79 | 1.3.4.8.3 | **Configuration Tasks** | 60d | 2007-01-19 | 2007-04-12 |  | 0d |
| 80 |  | Create automated deployment enviroment on dev server | 1w | 2007-01-19 | 2007-01-25 |  | 55d |
| 81 |  | Move caMOD to Gforge | 1w | 2007-04-06 | 2007-04-12 | 78 | 0d |
| 82 | 1.4 | **Transition Phase** | 22d | 2007-04-13 | 2007-05-14 | 16 | 0d |
| 83 | 1.4.1 | **QA** | 5d | 2007-04-13 | 2007-04-19 |  | 0d |
| 84 |  | Finalize Testplan | 1w | 2007-04-13 | 2007-04-19 |  | 0d |
| 85 |  | Finalize Test Cases | 1w | 2007-04-13 | 2007-04-19 |  | 0d |
| 86 | 1.4.2 | **Deploy** | 17d | 2007-04-20 | 2007-05-14 | 83 | 0d |
| 87 | 1.4.2.1 | **QA Server Deployment** | 10d | 2007-04-20 | 2007-05-03 |  | 0d |
| 88 |  | QA Testing | 2w | 2007-04-20 | 2007-05-03 |  | 0d |
| 89 | 1.4.2.2 | **Staging Server Deployment** | 5d | 2007-05-04 | 2007-05-10 |  | 0d |
| 90 |  | Staging Testing | 1w | 2007-05-04 | 2007-05-10 | 88 | 0d |
| 91 | 1.4.2.3 | **Production Server Deployment** | 2d | 2007-05-11 | 2007-05-14 |  | 0d |
| 92 |  | Production Verification | 2d | 2007-05-11 | 2007-05-14 | 90 | 0d |

## Version 2 (saved 2007-01-19)

Note of the change: Saved in Porject 2000 - 2003 format

Last finish stays 2007-05-14.

Changed:

| ID | Task | Start | Finish | Duration | Total float | Other |
| --- | --- | --- | --- | --- | --- | --- |
| 16 | **Elaboration Phase** | 2007-01-10 → 2006-06-26 (-198d) |  | 66d? → 209d? |  |  |
| 29 | **Iteration 1: Remote API / Grid** | 2007-01-19 → 2006-06-26 (-207d) |  | 55d → 204d |  | was named Remote API / Grid |
| 30 | Remote API - Upgrade to 1.0 of Tool Kit | 2007-01-19 → 2006-06-26 (-207d) | 2007-01-25 → 2006-06-30 (-209d) |  | 55d → 204d |  |
| 31 | Make caMod available in the grid (production) | 2007-01-19 → 2006-06-26 (-207d) | 2007-01-25 → 2006-06-30 (-209d) |  | 55d → 204d |  |
| 32 | Map API to latest OM (2.2) | 2007-01-19 → 2006-06-26 (-207d) | 2007-02-01 → 2006-07-07 (-209d) |  | 50d → 199d |  |
| 34 | **Itreration 2: Bug fixes & usability enhancements** |  | 2007-01-30 → 2007-03-15 (+44d) | 8d → 40d | 52d → 0d | was named Itreration 1: Bug fixes & usability enhancements |
| 46 | **Iteration 3: Additional Features Outside caMOD Application Code** |  | 2007-04-12 → 2007-03-15 (-28d) | 60d → 40d |  | was named Iteration : Additional Features Outside caMOD Application Code |
| 59 | **Iteration 3: Additional Features Added to caMOD** |  |  |  |  | was named Iteration 2: Additional Features Added to caMOD |
| 60 | **EVSTree - caMOD-side work** | 2007-02-02 → 2007-01-19 (-14d) |  | 10d → 20d |  |  |
