# caMOD 2.2

How a schedule from MS Project changed from version to version. A marks actual dates.

## Version 1 (saved 2007-05-30)

Note of the change: Updated plan with completion percents

| ID | WBS | Task | Duration | Start | Finish | Predecessors | Complete | Total float |
| --- | --- | --- | --- | --- | --- | --- | --- | --- |
| 1 | 1 | **caMOD 2.3 Release** | 147d | 2007-02-15 A | 2007-09-10 |  | 38% | 150d |
| 2 | 1.1 | **Inception Phase** | 17d | 2007-02-15 A | 2007-03-09 |  | 37% | 280d |
| 3 | 1.1.1 | **Requirements Gathering** | 2d | 2007-02-15 A | 2007-02-16 A |  | 100% |  |
| 4 |  | Determine Basic Use Cases | 1d | 2007-02-15 A | 2007-02-15 A |  | 100% |  |
| 5 |  | Prioritize Use Cases | 1d | 2007-02-16 A | 2007-02-16 A | 4 | 100% |  |
| 6 | 1.1.2 | **Documentation** | 15d | 2007-02-19 A | 2007-03-09 |  | 29% | 280d |
| 7 |  | Draft Requirements Specification Document | 1w | 2007-02-19 A | 2007-02-23 A | 5 | 100% |  |
| 8 |  | Draft Test Plan | 1w | 2007-02-26 | 2007-03-02 | 7 |  | 148d |
| 9 |  | Draft Test Cases | 1w | 2007-03-05 | 2007-03-09 | 8 |  | 148d |
| 10 |  | Update Project Plan | 2d | 2007-02-26 | 2007-02-27 | 7 |  | 1d |
| 11 |  | Milestone: General Requirements Captured & Priortized | 0d | 2007-02-27 | 2007-02-27 | 10 |  | 287d |
| 12 | 1.2 | **Elaboration Phase** | 116d | 2007-02-27 A | 2007-08-09 |  | 25% | 172d |
| 13 | 1.2.1 | **Design / Architecture** | 116d | 2007-02-27 A | 2007-08-09 |  | 21% | 172d |
| 14 |  | Review with Development Team | 0d | 2007-02-27 A | 2007-02-27 A | 11 | 100% |  |
| 15 |  | Incorporate Comments/Feedback from the team review | 1d | 2007-02-28 A | 2007-02-28 A | 14 | 100% |  |
| 16 |  | Draft design document (caBIG template) | 3d | 2007-03-08 A | 2007-03-12 A | 15 | 100% |  |
| 17 |  | Milestone: Completed Design document | 0d | 2007-03-12 A | 2007-03-12 A | 16 | 100% |  |
| 18 |  | Incorporate changes to the Object Model | 2d | 2007-03-13 A | 2007-03-14 A | 16 | 100% |  |
| 19 |  | Milestone: Soft Freeze Object Model | 0d | 2007-03-14 A | 2007-03-14 A | 18 | 100% |  |
| 20 |  | Round Trip, Import XMI into EA | 2w | 2007-03-15 A | 2007-03-28 A |  | 100% |  |
| 21 |  | Update EA according to VCDE responses- Resubmit | 20w | 2007-03-08 A | 2007-07-26 | 27 | 10% | 172d |
| 22 |  | Register Model in caDSR | 2w | 2007-07-27 | 2007-08-09 | 21 |  | 172d |
| 23 | 1.2.2 | **Database Cleanup** | 32d | 2007-03-05 A | 2007-04-17 A | 10 | 100% |  |
| 24 |  | Data Issue - current genetic background | 1d | 2007-04-12 A | 2007-04-12 A | 20FS+2w | 100% |  |
| 25 |  | Data Issue - review and if reasonable delete all records that have been in the incomplete state for more than 2 years | 3d | 2007-04-13 A | 2007-04-17 A | 24 | 100% |  |
| 26 |  | Data - inactivate screened-rejected records submitted by intramural researchers | 2d | 2007-03-05 A | 2007-03-06 A | 25 | 100% |  |
| 27 |  | Clean up files | 1d | 2007-03-07 A | 2007-03-07 A | 26 | 100% |  |
| 28 |  | Fix searches - table of contents shows only selection of organ systems | 13d | 2007-03-15 | 2007-04-02 | 18 |  | 232.5d |
| 29 |  | Move caMOD to Gforge | 1w | 2007-04-19 A | 2007-04-25 A | 27FS+6w | 100% |  |
| 30 | 1.3 | **Construction Phase** | 97d | 2007-04-03 A | 2007-08-16 | 28 | 68% | 167d |
| 31 | 1.3.1 | **iteration 1: ZEBRAFISH Specific Support in caMOD** | 57d | 2007-04-03 A | 2007-06-21 |  | 75% | 207d |
| 32 |  | Add age drop down list to model characteristics submission and search page | 8d | 2007-04-03 A | 2007-04-12 A |  | 100% |  |
| 33 |  | Add drop down list for Site to morpholino submission and search page | 8d | 2007-04-13 A | 2007-04-24 A | 32 | 100% |  |
| 34 |  | Add drop down list for delivery method to morpholino submission and search page | 3d | 2007-04-25 A | 2007-04-27 A | 33 | 100% |  |
| 35 |  | Modify histopathology page - make diagnosis field free text or used Hatem's list | 2w | 2007-04-30 A | 2007-05-11 | 34 | 90% | 235d |
| 36 |  | Modify availability pages - add page for zfin, keep investigator page | 3d | 2007-05-14 A | 2007-05-16 A | 35 | 100% |  |
| 37 |  | Modify genetic description pages - link to zfin.org for allele details | 3d | 2007-05-17 A | 2007-05-21 A | 36 | 100% |  |
| 38 |  | Add conditioning regimen dropdown to xenograft page | 3d | 2007-05-22 A | 2007-05-24 A | 37 | 100% |  |
| 39 |  | Add "small molecules" to chemical class list on therapy submission page | 1d | 2007-05-25 A | 2007-05-25 A | 38 | 100% |  |
| 40 |  | Modify therapy page - add drop down list for developmental stage | 3d | 2007-05-29 A | 2007-05-31 | 39 | 90% | 201.8d |
| 41 |  | ZEBRAFISH - anatomy vocabulary for histopathology page | 2d | 2007-06-01 A | 2007-06-04 | 40 | 90% | 200d |
| 42 | 1.3.1.11 | **Test** | 13d | 2007-06-05 | 2007-06-21 | 40 |  | 200d |
| 43 |  | Deploy iteration on DEV Server | 1d | 2007-06-05 | 2007-06-05 | 41 |  | 200d |
| 44 |  | Test on DEV tier | 3d | 2007-06-06 | 2007-06-08 | 43 |  | 200d |
| 45 |  | Deploy iteration on QA Server | 1d | 2007-06-11 | 2007-06-11 | 44 |  | 200d |
| 46 |  | Test on QA | 1w | 2007-06-12 | 2007-06-18 | 45 |  | 200d |
| 47 |  | Deploy iteration on Staging Server | 3d | 2007-06-19 | 2007-06-21 | 46 |  | 200d |
| 48 |  | Milestone: ZebraFish feature available on the staging Tier | 0d | 2007-06-21 | 2007-06-21 | 47 |  | 200d |
| 49 | 1.3.2 | **Iteration 2: Bug fixes & usability enhancements** | 40d | 2007-06-22 A | 2007-08-16 |  | 57% | 167d |
| 50 |  | Update online help | 1w | 2007-06-22 | 2007-06-28 | 48 |  | 200d |
| 51 |  | Incorporate online help changes to the webApp | 2d | 2007-06-29 | 2007-07-02 | 50 |  | 200d |
| 53 | 1.3.2.3 | **Search Features** | 24d | 2007-07-03 A | 2007-08-03 |  | 75% | 35d |
| 54 |  | Customizing search results doesn't work when carcinogen is selected | 1w | 2007-07-03 A | 2007-07-09 A | 51 | 100% |  |
| 55 |  | Adv search for carcinogens does not include data from Jackson Lab | 1w | 2007-07-10 A | 2007-07-16 A | 54 | 100% |  |
| 56 |  | Fix Jax lab availability link and data | 1d | 2007-07-17 A | 2007-07-17 A | 55 | 100% |  |
| 57 |  | Fix MGI link on genetic description pages and at the same time fix existing data | 3d | 2007-07-18 A | 2007-07-20 A | 56 | 100% |  |
| 58 |  | Fix model records with missing PI | 2d | 2007-07-23 A | 2007-07-24 A | 57 | 100% |  |
| 59 |  | MTB radiation data are not shown | 2d | 2007-07-25 A | 2007-07-26 A | 58 | 100% |  |
| 60 |  | Admin editor assigned emails go to person who is not assigned as editor | 3d | 2007-07-27 | 2007-07-31 | 59 |  | 35d |
| 61 |  | Admin - 2 people with coordinator privileges see different things on their to-do list | 3d | 2007-08-01 | 2007-08-03 | 60 |  | 35d |
| 62 | 1.3.2.4 | **Submission Features** | 5d | 2007-08-06 A | 2007-08-10 A |  | 100% |  |
| 63 |  | Can not delete genotype on model char submission page | 2d | 2007-08-06 A | 2007-08-07 A | 61 | 100% |  |
| 64 |  | Nomenclature submssion field adds data when model is edited | 3d | 2007-08-08 A | 2007-08-10 A | 63 | 100% |  |
| 65 | 1.3.2.5 | **Test** | 4d | 2007-08-13 | 2007-08-16 |  |  | 30d |
| 66 |  | Deploy iteration on DEV Server | 1d | 2007-08-13 | 2007-08-13 | 53, 62 |  | 30d |
| 67 |  | Test on DEV tier | 3d | 2007-08-14 | 2007-08-16 | 66 |  | 30d |
| 68 | 1.4 | **Transition Phase** | 60d | 2007-06-19 | 2007-09-10 |  |  | 73d |
| 69 | 1.4.1 | **QA** | 10d | 2007-06-19 | 2007-07-02 |  |  | 200d |
| 70 |  | Finalize Testplan | 1w | 2007-06-19 | 2007-06-25 | 46 |  | 200d |
| 71 |  | Finalize Test Cases | 1w | 2007-06-26 | 2007-07-02 | 70 |  | 200d |

| ID | WBS | Task | Duration | Start | Finish | Predecessors | Complete | Total float |
| --- | --- | --- | --- | --- | --- | --- | --- | --- |
| 72 | 1.4.2 | **Deploy** | 17d | 2007-08-17 | 2007-09-10 | 67 |  | 30d |
| 73 | 1.4.2.1 | **QA Server Deployment** | 10d | 2007-08-17 | 2007-08-30 |  |  | 30d |
| 74 |  | QA Testing | 2w | 2007-08-17 | 2007-08-30 |  |  | 30d |
| 75 | 1.4.2.2 | **Staging Server Deployment** | 5d | 2007-08-31 | 2007-09-06 |  |  | 30d |
| 76 |  | Staging Testing | 1w | 2007-08-31 | 2007-09-06 | 74 |  | 30d |
| 77 | 1.4.2.3 | **Production Server Deployment** | 2d | 2007-09-07 | 2007-09-10 |  |  | 30d |
| 78 |  | Production Verification | 2d | 2007-09-07 | 2007-09-10 | 76 |  | 30d |
| 79 |  | caMOD 2.3 - Closeout | 0d | 2007-09-10 | 2007-09-10 | 78 |  | 150d |
| 80 | 2 | **caMOD 2.4 Release** | 150d | 2007-09-11 A | 2008-04-07 | 78 | 11% | 0d |
| 81 | 2.1 | **Architecture and Design** | 16d | 2007-09-11 | 2007-10-02 |  |  | 30d |
| 82 |  | Use Case and Design Doc (caBIG template) | 2w | 2007-09-11 | 2007-09-24 |  |  | 30d |
| 83 |  | Review use cases / design with the "Review Board" | 6d | 2007-09-25 | 2007-10-02 | 82 |  | 134d |
| 84 | 2.2 | **iteration 1: Admin Features & misc. enhancements** | 35d | 2007-09-25 | 2007-11-12 |  |  | 30d |
| 85 |  | Admin Section Needs Additional Filters | 2w | 2007-09-25 | 2007-10-08 | 82 |  | 30d |
| 86 |  | Admin - comments made by admin people need to be shown | 1w | 2007-10-09 | 2007-10-15 | 85 |  | 30d |
| 87 |  | Admin - Coordinator needs to see what models have been assigned to what editor or screener | 1w | 2007-10-16 | 2007-10-22 | 86 |  | 30d |
| 88 |  | Use improved PubMed fetch script on publication submission page | 3d | 2007-10-23 | 2007-10-25 | 87 |  | 30d |
| 89 |  | Do not delete EnvironmentalFactor objects - instead reuse and leave in DB | 2d | 2007-10-26 | 2007-10-29 | 88 |  | 30d |
| 90 |  | Upgrade to a new version of struts | 1w | 2007-10-30 | 2007-11-05 | 89 |  | 30d |
| 91 |  | Configure our app to use a JNDI data source | 1w | 2007-11-06 | 2007-11-12 | 90 |  | 30d |
| 92 | 2.3 | **Iteration 2: EVS & caGrid Support** | 88d | 2007-11-13 A | 2008-03-13 | 91 | 17% | 0d |
| 93 | 2.3.1 | **EVSTree** | 88d | 2007-11-13 A | 2008-03-13 |  | 28% | 0d |
| 94 | 2.3.1.1 | **Implementation and Testing** | 88d | 2007-11-13 A | 2008-03-13 |  | 28% | 0d |
| 95 |  | Restore the association between organ and diagnosis | 2w | 2007-11-13 | 2007-11-26 |  |  | 58d |
| 96 |  | Show species specific anatomy vocabularies | 4w | 2007-11-27 | 2007-12-24 | 95 |  | 58d |
| 97 |  | Utilize the staining vocabulary | 3w | 2007-12-25 A | 2008-01-14 A | 96 | 100% |  |
| 98 |  | Annoyances with EVS organ tree | 5w | 2008-01-15 | 2008-02-18 | 97 |  | 18d |
| 99 |  | Use mouse and rat strains from NCI Thesaurus | 2w | 2008-02-19 A | 2008-03-03 A | 98 | 100% |  |
| 100 |  | Selecting search results in tree causes HTTP 404 Error | 3d | 2008-03-04 | 2008-03-06 | 99 |  | 0d |
| 101 |  | Crash - when trying to select search result page crashes | 1w | 2008-03-07 | 2008-03-13 | 100 |  | 0d |
| 102 | 2.3.2 | **Remote API / Grid** | 40d | 2007-11-13 | 2008-01-07 | 7 |  | 36d |
| 103 |  | Leverage caCORE 3.2 for remote API | 1w | 2007-11-13 | 2007-11-19 |  |  | 36d |
| 104 |  | Remote API - Upgrade to 1.0 of Tool Kit | 1w | 2007-11-20 | 2007-11-26 | 103 |  | 36d |
| 105 |  | Make caMod available in the grid (production) | 1w | 2007-11-27 | 2007-12-03 | 104 |  | 36d |
| 106 |  | Map API to latest OM (2.2) | 2w | 2007-12-04 | 2007-12-17 | 105 |  | 36d |
| 107 |  | Make only edited-approved models available through API | 3w | 2007-12-18 | 2008-01-07 | 106 |  | 36d |
| 108 | 2.3.3 | **Configuration Tasks** | 5d | 2007-11-13 | 2007-11-19 |  |  | 83d |
| 109 |  | Create automated deployment enviroment on dev server | 1w | 2007-11-13 | 2007-11-19 |  |  | 83d |
| 110 | 2.3.4 | **EVSTree - caMOD-side work** | 12d | 2008-01-08 | 2008-01-23 | 107 |  | 36d |
| 111 |  | Show species specific anatomy vocabularies (caMOD changes) | 4d | 2008-01-08 | 2008-01-11 |  |  | 36d |
| 112 |  | Utilize the staining vocabulary (caMOD changes) | 4d | 2008-01-14 | 2008-01-17 | 111 |  | 36d |
| 113 |  | Use mouse and rat strains from NCI Thesaurus (caMOD changes) | 4d | 2008-01-18 | 2008-01-23 | 112 |  | 36d |
| 114 | 2.4 | **Transition Phase** | 110d | 2007-11-06 | 2008-04-07 |  |  | 0d |
| 115 | 2.4.1 | **QA** | 10d | 2007-11-06 | 2007-11-19 |  |  | 100d |
| 116 |  | Finalize Testplan | 1w | 2007-11-06 | 2007-11-12 | 90 |  | 100d |
| 117 |  | Finalize Test Cases | 1w | 2007-11-13 | 2007-11-19 | 116 |  | 100d |
| 118 | 2.4.2 | **Deploy** | 17d | 2008-03-14 | 2008-04-07 |  |  | 0d |
| 119 | 2.4.2.1 | **QA Server Deployment** | 10d | 2008-03-14 | 2008-03-27 |  |  | 0d |
| 120 |  | QA Testing | 2w | 2008-03-14 | 2008-03-27 | 92 |  | 0d |
| 121 | 2.4.2.2 | **Staging Server Deployment** | 5d | 2008-03-28 | 2008-04-03 |  |  | 0d |
| 122 |  | Staging Testing | 1w | 2008-03-28 | 2008-04-03 | 120 |  | 0d |
| 123 | 2.4.2.3 | **Production Server Deployment** | 2d | 2008-04-04 | 2008-04-07 |  |  | 0d |
| 124 |  | Production Verification | 2d | 2008-04-04 | 2008-04-07 | 122 |  | 0d |
| 125 |  | caMOD 2.4 - Closeout | 0d | 2008-04-07 | 2008-04-07 | 124 |  | 0d |

## Version 2 (saved 2007-06-04)

Note of the change: Updated plan with completion percents

Last finish stays 2008-04-07. Complete tasks 32 → 34.

Changed:

| ID | Task | Start | Finish | Complete | Total float | Other |
| --- | --- | --- | --- | --- | --- | --- |
| 1 | **caMOD 2.3 Release** |  |  | 38% → 68% |  |  |
| 2 | **Inception Phase** |  |  | 37% → 82% |  |  |
| 6 | **Documentation** |  |  | 29% → 79% |  |  |
| 8 | Draft Test Plan | 2007-02-26 A |  | 0% → 75% | 148d → 283.75d |  |
| 9 | Draft Test Cases | 2007-03-05 A |  | 0% → 75% | 148d → 280d |  |
| 10 | Update Project Plan | 2007-02-26 A |  | 0% → 50% | 1d → 287d |  |
| 12 | **Elaboration Phase** |  |  | 25% → 75% |  |  |
| 13 | **Design / Architecture** |  |  | 21% → 72% |  |  |
| 21 | Update EA according to VCDE responses- Resubmit |  |  | 10% → 75% |  |  |
| 28 | Show species specific anatomy vocabularies - EVSTree changes | 2007-03-15 A |  | 0% → 75% |  | was named Fix searches - table of contents shows only selection of organ systems |
| 30 | **Construction Phase** |  |  | 68% → 75% |  |  |
| 49 | **Iteration 2: Bug fixes & usability enhancements** |  |  | 57% → 75% | 167d → 30d |  |
| 50 | Update online help | 2007-06-22 A | 2007-06-28 A | 0% → 100% | 200d → none |  |
| 51 | Incorporate online help changes to the webApp | 2007-06-29 A | 2007-07-02 A | 0% → 100% | 200d → none |  |

## Version 3 (saved 2007-06-07)

Note of the change: Modified dev testing start date to allow for EVS team to get server running (new cacore 3.2 url given to us by Rob/Gilberto/Tracy being worked on by Shazyia)

Last finish stays 2008-04-07.

Changed:

| ID | Task | Start | Finish | Duration | Complete | Total float | Predecessors |
| --- | --- | --- | --- | --- | --- | --- | --- |
| 30 | **Construction Phase** |  |  |  | 75% → 74% |  |  |
| 31 | **iteration 1: ZEBRAFISH Specific Support in caMOD** |  | 2007-06-21 → 2007-06-28 (+7d) | 57d → 62d | 75% → 74% | 207d → 202d |  |
| 42 | **Test** | 2007-06-05 A | 2007-06-21 → 2007-06-28 (+7d) | 13d → 18d | 0% → 6% | 200d → 195d |  |
| 43 | Deploy iteration on DEV Server | 2007-06-05 A |  |  | 0% → 90% | 200d → 195d |  |
| 44 | Test on DEV tier | 2007-06-06 → 2007-06-11 (+5d) | 2007-06-08 → 2007-06-15 (+7d) | 3d → 1w |  | 200d → 195d | 43 → 43FS+3d |
| 45 | Deploy iteration on QA Server | 2007-06-11 → 2007-06-18 (+7d) | 2007-06-11 → 2007-06-18 (+7d) |  |  | 200d → 195d |  |
| 46 | Test on QA | 2007-06-12 → 2007-06-19 (+7d) | 2007-06-18 → 2007-06-25 (+7d) |  |  | 200d → 195d |  |
| 47 | Deploy iteration on Staging Server | 2007-06-19 → 2007-06-26 (+7d) | 2007-06-21 → 2007-06-28 (+7d) |  |  | 200d → 195d |  |
| 48 | Milestone: ZebraFish feature available on the staging Tier | 2007-06-21 → 2007-06-28 (+7d) | 2007-06-21 → 2007-06-28 (+7d) |  |  | 200d → 195d |  |
| 68 | **Transition Phase** | 2007-06-19 → 2007-06-26 (+7d) |  | 60d → 55d |  | 73d → 68d |  |
| 69 | **QA** | 2007-06-19 → 2007-06-26 (+7d) | 2007-07-02 → 2007-07-09 (+7d) |  |  | 200d → 195d |  |
| 70 | Finalize Testplan | 2007-06-19 → 2007-06-26 (+7d) | 2007-06-25 → 2007-07-02 (+7d) |  |  | 200d → 195d |  |
| 71 | Finalize Test Cases | 2007-06-26 → 2007-07-03 (+7d) | 2007-07-02 → 2007-07-09 (+7d) |  |  | 200d → 195d |  |

## Version 4 (saved 2007-06-20)

Note of the change: Updated task percents

Last finish stays 2008-04-07. Complete tasks 34 → 39.

Changed:

| ID | Task | Start | Finish | Complete | Total float |
| --- | --- | --- | --- | --- | --- |
| 1 | **caMOD 2.3 Release** |  |  | 68% → 70% |  |
| 2 | **Inception Phase** |  |  | 82% → 97% |  |
| 6 | **Documentation** |  |  | 79% → 97% |  |
| 8 | Draft Test Plan |  | 2007-03-02 A | 75% → 100% | 283.75d → none |
| 9 | Draft Test Cases |  | 2007-03-09 A | 75% → 100% | 280d → none |
| 10 | Update Project Plan |  |  | 50% → 75% | 287d → 288d |
| 30 | **Construction Phase** |  |  | 74% → 76% |  |
| 31 | **iteration 1: ZEBRAFISH Specific Support in caMOD** |  |  | 74% → 77% |  |
| 40 | Modify therapy page - add drop down list for developmental stage |  | 2007-05-31 A | 90% → 100% | 201.8d → none |
| 41 | ZEBRAFISH - anatomy vocabulary for histopathology page |  | 2007-06-04 A | 90% → 100% | 200d → none |
| 42 | **Test** |  |  | 6% → 15% |  |
| 43 | Deploy iteration on DEV Server |  | 2007-06-05 A | 90% → 100% | 195d → none |
| 44 | Test on DEV tier | 2007-06-11 A |  | 0% → 25% |  |

## Version 5 (saved 2007-08-01)

Note of the change: Added 2 more days to dev testing - must move stage date forward to take in cover vacation time not in project plan

Last finish stays 2008-04-07. Complete tasks 39 → 48.

Changed:

| ID | Task | Start | Finish | Duration | Complete | Total float | Other |
| --- | --- | --- | --- | --- | --- | --- | --- |
| 1 | **caMOD 2.3 Release** |  | 2007-09-10 → 2007-09-12 (+2d) | 147d → 149d | 70% → 88% | 150d → 148d |  |
| 12 | **Elaboration Phase** |  | 2007-08-09 A |  | 75% → 100% | 172d → none |  |
| 13 | **Design / Architecture** |  | 2007-08-09 A |  | 72% → 100% | 172d → none |  |
| 21 | Update EA according to VCDE responses- Resubmit |  | 2007-07-26 A |  | 75% → 100% | 172d → none |  |
| 22 | Register Model in caDSR | 2007-07-27 A | 2007-08-09 A |  | 0% → 100% | 172d → none |  |
| 28 | Show species specific anatomy vocabularies - EVSTree changes |  | 2007-04-02 A |  | 75% → 100% | 232.5d → none |  |
| 30 | **Construction Phase** |  | 2007-08-16 → 2007-08-20 (+4d) | 97d → 99d | 76% → 90% | 167d → 28d |  |
| 31 | **iteration 1: ZEBRAFISH Specific Support in caMOD** |  | 2007-06-28 A |  | 77% → 100% | 202d → none |  |
| 35 | Modify histopathology page - make diagnosis field free text or used Hatem's list |  | 2007-05-11 A |  | 90% → 100% | 235d → none |  |
| 42 | **Test** |  | 2007-06-28 A |  | 15% → 100% | 195d → none |  |
| 44 | Test on DEV tier |  | 2007-06-15 A |  | 25% → 100% | 195d → none |  |
| 45 | Deploy iteration on QA Server | 2007-06-18 A | 2007-06-18 A |  | 0% → 100% | 195d → none |  |
| 46 | Test on QA | 2007-06-19 A | 2007-06-25 A |  | 0% → 100% | 195d → none |  |
| 47 | Deploy iteration on Staging Server | 2007-06-26 A | 2007-06-28 A |  | 0% → 100% | 195d → none |  |
| 48 | Milestone: ZebraFish feature available on the staging Tier | 2007-06-28 A | 2007-06-28 A |  | 0% → 100% | 195d → none |  |
| 49 | **Iteration 2: Bug fixes & usability enhancements** |  | 2007-08-16 → 2007-08-20 (+4d) | 40d → 42d | 75% → 77% | 30d → 28d |  |
| 53 | **Search Features** |  |  |  | 75% → 84% | 35d → 33d |  |
| 60 | Admin pages need additional filters | 2007-07-27 A |  |  | 0% → 75% | 35d → 33d | was named Admin editor assigned emails go to person who is not assigned as editor |
| 61 | Upgrade to Jboss 4.0.5 and Ant 1.6 (tech stack requirement) |  |  |  |  | 35d → 33d | was named Admin - 2 people with coordinator privileges see different things on their to-do list |
| 65 | **Test** |  | 2007-08-16 → 2007-08-20 (+4d) | 4d → 6d |  | 30d → 28d |  |
| 67 | Test on DEV tier |  | 2007-08-16 → 2007-08-20 (+4d) | 3d → 5d |  | 30d → 28d |  |
| 68 | **Transition Phase** |  | 2007-09-10 → 2007-09-12 (+2d) | 55d → 57d |  |  |  |
| 72 | **Deploy** | 2007-08-17 → 2007-08-21 (+4d) | 2007-09-10 → 2007-09-12 (+2d) |  |  | 30d → 28d |  |
| 73 | **QA Server Deployment** | 2007-08-17 → 2007-08-21 (+4d) | 2007-08-30 → 2007-09-03 (+4d) |  |  | 30d → 28d |  |
| 74 | QA Testing | 2007-08-17 → 2007-08-21 (+4d) | 2007-08-30 → 2007-09-03 (+4d) |  |  | 30d → 28d |  |
| 75 | **Staging Server Deployment** | 2007-08-31 → 2007-09-04 (+4d) | 2007-09-06 → 2007-09-10 (+4d) |  |  | 30d → 28d |  |
| 76 | Staging Testing | 2007-08-31 → 2007-09-04 (+4d) | 2007-09-06 → 2007-09-10 (+4d) |  |  | 30d → 28d |  |
| 77 | **Production Server Deployment** | 2007-09-07 → 2007-09-11 (+4d) | 2007-09-10 → 2007-09-12 (+2d) |  |  | 30d → 28d |  |
| 78 | Production Verification | 2007-09-07 → 2007-09-11 (+4d) | 2007-09-10 → 2007-09-12 (+2d) |  |  | 30d → 28d |  |
| 79 | caMOD 2.3 - Closeout | 2007-09-10 → 2007-09-12 (+2d) | 2007-09-10 → 2007-09-12 (+2d) |  |  | 150d → 148d |  |
| 80 | **caMOD 2.4 Release** | 2007-09-11 A → 2007-09-13 A (+2d) |  | 150d → 148d |  |  |  |
| 81 | **Architecture and Design** | 2007-09-11 → 2007-09-13 (+2d) | 2007-10-02 → 2007-10-04 (+2d) |  |  | 30d → 28d |  |
| 82 | Use Case and Design Doc (caBIG template) | 2007-09-11 → 2007-09-13 (+2d) | 2007-09-24 → 2007-09-26 (+2d) |  |  | 30d → 28d |  |
| 83 | Review use cases / design with the "Review Board" | 2007-09-25 → 2007-09-27 (+2d) | 2007-10-02 → 2007-10-04 (+2d) |  |  | 134d → 132d |  |
| 84 | **iteration 1: Admin Features & misc. enhancements** | 2007-09-25 → 2007-09-27 (+2d) | 2007-11-12 → 2007-11-14 (+2d) |  |  | 30d → 28d |  |
| 85 | Admin Section Needs Additional Filters | 2007-09-25 → 2007-09-27 (+2d) | 2007-10-08 → 2007-10-10 (+2d) |  |  | 30d → 28d |  |
| 86 | Admin - comments made by admin people need to be shown | 2007-10-09 → 2007-10-11 (+2d) | 2007-10-15 → 2007-10-17 (+2d) |  |  | 30d → 28d |  |
| 87 | Admin - Coordinator needs to see what models have been assigned to what editor or screener | 2007-10-16 → 2007-10-18 (+2d) | 2007-10-22 → 2007-10-24 (+2d) |  |  | 30d → 28d |  |
| 88 | Use improved PubMed fetch script on publication submission page | 2007-10-23 → 2007-10-25 (+2d) | 2007-10-25 → 2007-10-29 (+4d) |  |  | 30d → 28d |  |
| 89 | Do not delete EnvironmentalFactor objects - instead reuse and leave in DB | 2007-10-26 → 2007-10-30 (+4d) | 2007-10-29 → 2007-10-31 (+2d) |  |  | 30d → 28d |  |
| 90 | Upgrade to a new version of struts | 2007-10-30 → 2007-11-01 (+2d) | 2007-11-05 → 2007-11-07 (+2d) |  |  | 30d → 28d |  |
| 91 | Configure our app to use a JNDI data source | 2007-11-06 → 2007-11-08 (+2d) | 2007-11-12 → 2007-11-14 (+2d) |  |  | 30d → 28d |  |
| 92 | **Iteration 2: EVS & caGrid Support** | 2007-11-13 A → 2007-11-15 A (+2d) |  | 88d → 86d |  |  |  |
| 93 | **EVSTree** | 2007-11-13 A → 2007-11-15 A (+2d) |  | 88d → 86d |  |  |  |
| 94 | **Implementation and Testing** | 2007-11-13 A → 2007-11-15 A (+2d) |  | 88d → 86d |  |  |  |
| 95 | Restore the association between organ and diagnosis | 2007-11-13 → 2007-11-15 (+2d) | 2007-11-26 → 2007-11-28 (+2d) |  |  | 58d → 56d |  |
| 96 | Show species specific anatomy vocabularies | 2007-11-27 → 2007-11-29 (+2d) | 2007-12-24 → 2007-12-26 (+2d) |  |  | 58d → 56d |  |
| 102 | **Remote API / Grid** | 2007-11-13 → 2007-11-15 (+2d) | 2008-01-07 → 2008-01-09 (+2d) |  |  | 36d → 34d |  |
| 103 | Leverage caCORE 3.2 for remote API | 2007-11-13 → 2007-11-15 (+2d) | 2007-11-19 → 2007-11-21 (+2d) |  |  | 36d → 34d |  |
| 104 | Remote API - Upgrade to 1.0 of Tool Kit | 2007-11-20 → 2007-11-22 (+2d) | 2007-11-26 → 2007-11-28 (+2d) |  |  | 36d → 34d |  |
| 105 | Make caMod available in the grid (production) | 2007-11-27 → 2007-11-29 (+2d) | 2007-12-03 → 2007-12-05 (+2d) |  |  | 36d → 34d |  |
| 106 | Map API to latest OM (2.2) | 2007-12-04 → 2007-12-06 (+2d) | 2007-12-17 → 2007-12-19 (+2d) |  |  | 36d → 34d |  |
| 107 | Make only edited-approved models available through API | 2007-12-18 → 2007-12-20 (+2d) | 2008-01-07 → 2008-01-09 (+2d) |  |  | 36d → 34d |  |
| 108 | **Configuration Tasks** | 2007-11-13 → 2007-11-15 (+2d) | 2007-11-19 → 2007-11-21 (+2d) |  |  | 83d → 81d |  |
| 109 | Create automated deployment enviroment on dev server | 2007-11-13 → 2007-11-15 (+2d) | 2007-11-19 → 2007-11-21 (+2d) |  |  | 83d → 81d |  |
| 110 | **EVSTree - caMOD-side work** | 2008-01-08 → 2008-01-10 (+2d) | 2008-01-23 → 2008-01-25 (+2d) |  |  | 36d → 34d |  |
| 111 | Show species specific anatomy vocabularies (caMOD changes) | 2008-01-08 → 2008-01-10 (+2d) | 2008-01-11 → 2008-01-15 (+4d) |  |  | 36d → 34d |  |
| 112 | Utilize the staining vocabulary (caMOD changes) | 2008-01-14 → 2008-01-16 (+2d) | 2008-01-17 → 2008-01-21 (+4d) |  |  | 36d → 34d |  |
| 113 | Use mouse and rat strains from NCI Thesaurus (caMOD changes) | 2008-01-18 → 2008-01-22 (+4d) | 2008-01-23 → 2008-01-25 (+2d) |  |  | 36d → 34d |  |
| 114 | **Transition Phase** | 2007-11-06 → 2007-11-08 (+2d) |  | 110d → 108d |  |  |  |
| 115 | **QA** | 2007-11-06 → 2007-11-08 (+2d) | 2007-11-19 → 2007-11-21 (+2d) |  |  | 100d → 98d |  |
| 116 | Finalize Testplan | 2007-11-06 → 2007-11-08 (+2d) | 2007-11-12 → 2007-11-14 (+2d) |  |  | 100d → 98d |  |
| 117 | Finalize Test Cases | 2007-11-13 → 2007-11-15 (+2d) | 2007-11-19 → 2007-11-21 (+2d) |  |  | 100d → 98d |  |

## Version 6 (saved 2007-08-08)

Note of the change: moved duration to cover vacartion time

Last finish stays 2008-04-07.

Changed:

| ID | Task | Start | Finish | Duration | Complete | Total float |
| --- | --- | --- | --- | --- | --- | --- |
| 1 | **caMOD 2.3 Release** |  | 2007-09-12 → 2007-09-19 (+7d) | 149d → 154d | 88% → 86% | 148d → 143d |
| 30 | **Construction Phase** |  | 2007-08-20 → 2007-08-21 (+1d) | 99d → 100d | 90% → 89% | 28d → 23d |
| 49 | **Iteration 2: Bug fixes & usability enhancements** |  | 2007-08-20 → 2007-08-21 (+1d) | 42d → 43d | 77% → 75% | 28d → 23d |
| 65 | **Test** |  | 2007-08-20 → 2007-08-21 (+1d) | 6d → 7d |  | 28d → 23d |
| 67 | Test on DEV tier |  | 2007-08-20 → 2007-08-21 (+1d) | 5d → 6d |  | 28d → 23d |
| 68 | **Transition Phase** |  | 2007-09-12 → 2007-09-19 (+7d) | 57d → 62d |  | 68d → 64d |
| 72 | **Deploy** | 2007-08-21 → 2007-08-22 (+1d) | 2007-09-12 → 2007-09-19 (+7d) | 17d → 21d |  | 28d → 23d |
| 73 | **QA Server Deployment** | 2007-08-21 → 2007-08-22 (+1d) | 2007-09-03 → 2007-09-10 (+7d) | 10d → 14d |  | 28d → 23d |
| 74 | QA Testing | 2007-08-21 → 2007-08-22 (+1d) | 2007-09-03 → 2007-09-10 (+7d) | 2w → 14d |  | 28d → 23d |
| 75 | **Staging Server Deployment** | 2007-09-04 → 2007-09-11 (+7d) | 2007-09-10 → 2007-09-17 (+7d) |  |  | 28d → 23d |
| 76 | Staging Testing | 2007-09-04 → 2007-09-11 (+7d) | 2007-09-10 → 2007-09-17 (+7d) |  |  | 28d → 23d |
| 77 | **Production Server Deployment** | 2007-09-11 → 2007-09-18 (+7d) | 2007-09-12 → 2007-09-19 (+7d) |  |  | 28d → 23d |
| 78 | Production Verification | 2007-09-11 → 2007-09-18 (+7d) | 2007-09-12 → 2007-09-19 (+7d) |  |  | 28d → 23d |
| 79 | caMOD 2.3 - Closeout | 2007-09-12 → 2007-09-19 (+7d) | 2007-09-12 → 2007-09-19 (+7d) |  |  | 148d → 143d |
| 80 | **caMOD 2.4 Release** | 2007-09-13 A → 2007-09-20 A (+7d) |  | 148d → 143d |  |  |
| 81 | **Architecture and Design** | 2007-09-13 → 2007-09-20 (+7d) | 2007-10-04 → 2007-10-11 (+7d) |  |  | 28d → 23d |
| 82 | Use Case and Design Doc (caBIG template) | 2007-09-13 → 2007-09-20 (+7d) | 2007-09-26 → 2007-10-03 (+7d) |  |  | 28d → 23d |
| 83 | Review use cases / design with the "Review Board" | 2007-09-27 → 2007-10-04 (+7d) | 2007-10-04 → 2007-10-11 (+7d) |  |  | 132d → 127d |
| 84 | **iteration 1: Admin Features & misc. enhancements** | 2007-09-27 → 2007-10-04 (+7d) | 2007-11-14 → 2007-11-21 (+7d) |  |  | 28d → 23d |
| 85 | Admin Section Needs Additional Filters | 2007-09-27 → 2007-10-04 (+7d) | 2007-10-10 → 2007-10-17 (+7d) |  |  | 28d → 23d |
| 86 | Admin - comments made by admin people need to be shown | 2007-10-11 → 2007-10-18 (+7d) | 2007-10-17 → 2007-10-24 (+7d) |  |  | 28d → 23d |
| 87 | Admin - Coordinator needs to see what models have been assigned to what editor or screener | 2007-10-18 → 2007-10-25 (+7d) | 2007-10-24 → 2007-10-31 (+7d) |  |  | 28d → 23d |
| 88 | Use improved PubMed fetch script on publication submission page | 2007-10-25 → 2007-11-01 (+7d) | 2007-10-29 → 2007-11-05 (+7d) |  |  | 28d → 23d |
| 89 | Do not delete EnvironmentalFactor objects - instead reuse and leave in DB | 2007-10-30 → 2007-11-06 (+7d) | 2007-10-31 → 2007-11-07 (+7d) |  |  | 28d → 23d |
| 90 | Upgrade to a new version of struts | 2007-11-01 → 2007-11-08 (+7d) | 2007-11-07 → 2007-11-14 (+7d) |  |  | 28d → 23d |
| 91 | Configure our app to use a JNDI data source | 2007-11-08 → 2007-11-15 (+7d) | 2007-11-14 → 2007-11-21 (+7d) |  |  | 28d → 23d |
| 92 | **Iteration 2: EVS & caGrid Support** | 2007-11-15 A → 2007-11-22 A (+7d) |  | 86d → 81d |  |  |
| 93 | **EVSTree** | 2007-11-15 A → 2007-11-22 A (+7d) |  | 86d → 81d |  |  |
| 94 | **Implementation and Testing** | 2007-11-15 A → 2007-11-22 A (+7d) |  | 86d → 81d |  |  |
| 95 | Restore the association between organ and diagnosis | 2007-11-15 → 2007-11-22 (+7d) | 2007-11-28 → 2007-12-05 (+7d) |  |  | 56d → 51d |
| 96 | Show species specific anatomy vocabularies | 2007-11-29 → 2007-12-06 (+7d) | 2007-12-26 → 2008-01-02 (+7d) |  |  | 56d → 51d |
| 102 | **Remote API / Grid** | 2007-11-15 → 2007-11-22 (+7d) | 2008-01-09 → 2008-01-16 (+7d) |  |  | 34d → 29d |
| 103 | Leverage caCORE 3.2 for remote API | 2007-11-15 → 2007-11-22 (+7d) | 2007-11-21 → 2007-11-28 (+7d) |  |  | 34d → 29d |
| 104 | Remote API - Upgrade to 1.0 of Tool Kit | 2007-11-22 → 2007-11-29 (+7d) | 2007-11-28 → 2007-12-05 (+7d) |  |  | 34d → 29d |
| 105 | Make caMod available in the grid (production) | 2007-11-29 → 2007-12-06 (+7d) | 2007-12-05 → 2007-12-12 (+7d) |  |  | 34d → 29d |
| 106 | Map API to latest OM (2.2) | 2007-12-06 → 2007-12-13 (+7d) | 2007-12-19 → 2007-12-26 (+7d) |  |  | 34d → 29d |
| 107 | Make only edited-approved models available through API | 2007-12-20 → 2007-12-27 (+7d) | 2008-01-09 → 2008-01-16 (+7d) |  |  | 34d → 29d |
| 108 | **Configuration Tasks** | 2007-11-15 → 2007-11-22 (+7d) | 2007-11-21 → 2007-11-28 (+7d) |  |  | 81d → 76d |
| 109 | Create automated deployment enviroment on dev server | 2007-11-15 → 2007-11-22 (+7d) | 2007-11-21 → 2007-11-28 (+7d) |  |  | 81d → 76d |
| 110 | **EVSTree - caMOD-side work** | 2008-01-10 → 2008-01-17 (+7d) | 2008-01-25 → 2008-02-01 (+7d) |  |  | 34d → 29d |
| 111 | Show species specific anatomy vocabularies (caMOD changes) | 2008-01-10 → 2008-01-17 (+7d) | 2008-01-15 → 2008-01-22 (+7d) |  |  | 34d → 29d |
| 112 | Utilize the staining vocabulary (caMOD changes) | 2008-01-16 → 2008-01-23 (+7d) | 2008-01-21 → 2008-01-28 (+7d) |  |  | 34d → 29d |
| 113 | Use mouse and rat strains from NCI Thesaurus (caMOD changes) | 2008-01-22 → 2008-01-29 (+7d) | 2008-01-25 → 2008-02-01 (+7d) |  |  | 34d → 29d |
| 114 | **Transition Phase** | 2007-11-08 → 2007-11-15 (+7d) |  | 108d → 103d |  |  |
| 115 | **QA** | 2007-11-08 → 2007-11-15 (+7d) | 2007-11-21 → 2007-11-28 (+7d) |  |  | 98d → 93d |
| 116 | Finalize Testplan | 2007-11-08 → 2007-11-15 (+7d) | 2007-11-14 → 2007-11-21 (+7d) |  |  | 98d → 93d |
| 117 | Finalize Test Cases | 2007-11-15 → 2007-11-22 (+7d) | 2007-11-21 → 2007-11-28 (+7d) |  |  | 98d → 93d |

## Version 7 (saved 2007-08-14)

Note of the change: Updated project plan - new JBoss instance needed more days to complete by apps support (SSL move not working correctly)

Last finish stays 2008-04-07. Complete tasks 48 → 50.

Changed:

| ID | Task | Start | Finish | Duration | Complete | Total float | Other |
| --- | --- | --- | --- | --- | --- | --- | --- |
| 1 | **caMOD 2.3 Release** |  | 2007-09-19 → 2007-09-21 (+2d) | 154d → 156d | 86% → 87% | 143d → 141d |  |
| 10 | Update Project Plan |  |  |  |  |  | resources Srini → Sima [400%] |
| 30 | **Construction Phase** |  | 2007-08-21 → 2007-08-23 (+2d) | 100d → 102d | 89% → 91% | 23d → 21d |  |
| 49 | **Iteration 2: Bug fixes & usability enhancements** |  | 2007-08-21 → 2007-08-23 (+2d) | 43d → 45d | 75% → 80% | 23d → 21d |  |
| 53 | **Search Features** |  | 2007-08-03 A |  | 84% → 100% | 33d → none |  |
| 60 | Admin pages need additional filters |  | 2007-07-31 A |  | 75% → 100% | 33d → none |  |
| 61 | Upgrade to Jboss 4.0.5 and Ant 1.6 (tech stack requirement) | 2007-08-01 A | 2007-08-03 A |  | 0% → 100% | 33d → none |  |
| 65 | **Test** |  | 2007-08-21 → 2007-08-23 (+2d) | 7d → 9d |  | 23d → 21d |  |
| 66 | Deploy iteration on DEV Server - new instance not ready on Mon |  | 2007-08-13 → 2007-08-15 (+2d) | 1d → 3d |  | 30d → 21d | was named Deploy iteration on DEV Server |
| 67 | Test on DEV tier | 2007-08-14 → 2007-08-16 (+2d) | 2007-08-21 → 2007-08-23 (+2d) |  |  | 23d → 21d |  |
| 68 | **Transition Phase** |  | 2007-09-19 → 2007-09-21 (+2d) | 62d → 64d |  |  |  |
| 72 | **Deploy** | 2007-08-22 → 2007-08-24 (+2d) | 2007-09-19 → 2007-09-21 (+2d) |  |  | 23d → 21d |  |
| 73 | **QA Server Deployment** | 2007-08-22 → 2007-08-24 (+2d) | 2007-09-10 → 2007-09-12 (+2d) |  |  | 23d → 21d |  |
| 74 | QA Testing | 2007-08-22 → 2007-08-24 (+2d) | 2007-09-10 → 2007-09-12 (+2d) |  |  | 23d → 21d |  |
| 75 | **Staging Server Deployment** | 2007-09-11 → 2007-09-13 (+2d) | 2007-09-17 → 2007-09-19 (+2d) |  |  | 23d → 21d |  |
| 76 | Staging Testing | 2007-09-11 → 2007-09-13 (+2d) | 2007-09-17 → 2007-09-19 (+2d) |  |  | 23d → 21d |  |
| 77 | **Production Server Deployment** | 2007-09-18 → 2007-09-20 (+2d) | 2007-09-19 → 2007-09-21 (+2d) |  |  | 23d → 21d |  |
| 78 | Production Verification | 2007-09-18 → 2007-09-20 (+2d) | 2007-09-19 → 2007-09-21 (+2d) |  |  | 23d → 21d |  |
| 79 | caMOD 2.3 - Closeout | 2007-09-19 → 2007-09-21 (+2d) | 2007-09-19 → 2007-09-21 (+2d) |  |  | 143d → 141d |  |
| 80 | **caMOD 2.4 Release** | 2007-09-20 A → 2007-09-24 A (+4d) |  | 143d → 141d |  |  |  |
| 81 | **Architecture and Design** | 2007-09-20 → 2007-09-24 (+4d) | 2007-10-11 → 2007-10-15 (+4d) |  |  | 23d → 21d |  |
| 82 | Use Case and Design Doc (caBIG template) | 2007-09-20 → 2007-09-24 (+4d) | 2007-10-03 → 2007-10-05 (+2d) |  |  | 23d → 21d |  |
| 83 | Review use cases / design with the "Review Board" | 2007-10-04 → 2007-10-08 (+4d) | 2007-10-11 → 2007-10-15 (+4d) |  |  | 127d → 125d |  |
| 84 | **iteration 1: Admin Features & misc. enhancements** | 2007-10-04 → 2007-10-08 (+4d) | 2007-11-21 → 2007-11-23 (+2d) |  |  | 23d → 21d |  |
| 85 | Admin Section Needs Additional Filters | 2007-10-04 → 2007-10-08 (+4d) | 2007-10-17 → 2007-10-19 (+2d) |  |  | 23d → 21d |  |
| 86 | Admin - comments made by admin people need to be shown | 2007-10-18 → 2007-10-22 (+4d) | 2007-10-24 → 2007-10-26 (+2d) |  |  | 23d → 21d |  |
| 87 | Admin - Coordinator needs to see what models have been assigned to what editor or screener | 2007-10-25 → 2007-10-29 (+4d) | 2007-10-31 → 2007-11-02 (+2d) |  |  | 23d → 21d |  |
| 88 | Use improved PubMed fetch script on publication submission page | 2007-11-01 → 2007-11-05 (+4d) | 2007-11-05 → 2007-11-07 (+2d) |  |  | 23d → 21d |  |
| 89 | Do not delete EnvironmentalFactor objects - instead reuse and leave in DB | 2007-11-06 → 2007-11-08 (+2d) | 2007-11-07 → 2007-11-09 (+2d) |  |  | 23d → 21d |  |
| 90 | Upgrade to a new version of struts | 2007-11-08 → 2007-11-12 (+4d) | 2007-11-14 → 2007-11-16 (+2d) |  |  | 23d → 21d |  |
| 91 | Configure our app to use a JNDI data source | 2007-11-15 → 2007-11-19 (+4d) | 2007-11-21 → 2007-11-23 (+2d) |  |  | 23d → 21d |  |
| 92 | **Iteration 2: EVS & caGrid Support** | 2007-11-22 A → 2007-11-26 A (+4d) |  | 81d → 79d |  |  |  |
| 93 | **EVSTree** | 2007-11-22 A → 2007-11-26 A (+4d) |  | 81d → 79d |  |  |  |
| 94 | **Implementation and Testing** | 2007-11-22 A → 2007-11-26 A (+4d) |  | 81d → 79d |  |  |  |
| 95 | Restore the association between organ and diagnosis | 2007-11-22 → 2007-11-26 (+4d) | 2007-12-05 → 2007-12-07 (+2d) |  |  | 51d → 49d |  |
| 96 | Show species specific anatomy vocabularies | 2007-12-06 → 2007-12-10 (+4d) | 2008-01-02 → 2008-01-04 (+2d) |  |  | 51d → 49d |  |
| 102 | **Remote API / Grid** | 2007-11-22 → 2007-11-26 (+4d) | 2008-01-16 → 2008-01-18 (+2d) |  |  | 29d → 27d |  |
| 103 | Leverage caCORE 3.2 for remote API | 2007-11-22 → 2007-11-26 (+4d) | 2007-11-28 → 2007-11-30 (+2d) |  |  | 29d → 27d |  |
| 104 | Remote API - Upgrade to 1.0 of Tool Kit | 2007-11-29 → 2007-12-03 (+4d) | 2007-12-05 → 2007-12-07 (+2d) |  |  | 29d → 27d |  |
| 105 | Make caMod available in the grid (production) | 2007-12-06 → 2007-12-10 (+4d) | 2007-12-12 → 2007-12-14 (+2d) |  |  | 29d → 27d |  |
| 106 | Map API to latest OM (2.2) | 2007-12-13 → 2007-12-17 (+4d) | 2007-12-26 → 2007-12-28 (+2d) |  |  | 29d → 27d |  |
| 107 | Make only edited-approved models available through API | 2007-12-27 → 2007-12-31 (+4d) | 2008-01-16 → 2008-01-18 (+2d) |  |  | 29d → 27d |  |
| 108 | **Configuration Tasks** | 2007-11-22 → 2007-11-26 (+4d) | 2007-11-28 → 2007-11-30 (+2d) |  |  | 76d → 74d |  |
| 109 | Create automated deployment enviroment on dev server | 2007-11-22 → 2007-11-26 (+4d) | 2007-11-28 → 2007-11-30 (+2d) |  |  | 76d → 74d |  |
| 110 | **EVSTree - caMOD-side work** | 2008-01-17 → 2008-01-21 (+4d) | 2008-02-01 → 2008-02-05 (+4d) |  |  | 29d → 27d |  |
| 111 | Show species specific anatomy vocabularies (caMOD changes) | 2008-01-17 → 2008-01-21 (+4d) | 2008-01-22 → 2008-01-24 (+2d) |  |  | 29d → 27d |  |
| 112 | Utilize the staining vocabulary (caMOD changes) | 2008-01-23 → 2008-01-25 (+2d) | 2008-01-28 → 2008-01-30 (+2d) |  |  | 29d → 27d |  |
| 113 | Use mouse and rat strains from NCI Thesaurus (caMOD changes) | 2008-01-29 → 2008-01-31 (+2d) | 2008-02-01 → 2008-02-05 (+4d) |  |  | 29d → 27d |  |
| 114 | **Transition Phase** | 2007-11-15 → 2007-11-19 (+4d) |  | 103d → 101d |  |  |  |
| 115 | **QA** | 2007-11-15 → 2007-11-19 (+4d) | 2007-11-28 → 2007-11-30 (+2d) |  |  | 93d → 91d |  |
| 116 | Finalize Testplan | 2007-11-15 → 2007-11-19 (+4d) | 2007-11-21 → 2007-11-23 (+2d) |  |  | 93d → 91d |  |
| 117 | Finalize Test Cases | 2007-11-22 → 2007-11-26 (+4d) | 2007-11-28 → 2007-11-30 (+2d) |  |  | 93d → 91d |  |

## Version 8 (saved 2007-08-14)

Note of the change: added note to dev deployment

Last finish stays 2008-04-07.

Changed:

| ID | Task | Other |
| --- | --- | --- |
| 66 | Deploy iteration on DEV Server - new instance not ready on Mon 8/13 | was named Deploy iteration on DEV Server - new instance not ready on Mon |
