# caMOD 2.2

How a schedule from MS Project changed from version to version. A marks actual dates.

## Version 1 (saved 2007-08-24)

Note of the change: Initial version for 2.4

| ID | WBS | Task | Duration | Start | Finish | Predecessors | Total float |
| --- | --- | --- | --- | --- | --- | --- | --- |
| 1 | 1 | **caMOD 2.4 Release** | 188d | 2007-09-28 | 2008-06-17 |  | 0d |
| 2 | 1.1 | **Inception Phase** | 16d | 2007-09-28 | 2007-10-19 |  | 55d |
| 3 |  | Use Case and Design Doc (caBIG template) | 2w | 2007-09-28 | 2007-10-11 |  | 21d |
| 4 |  | Review use cases / design with the "Review Board" | 6d | 2007-10-12 | 2007-10-19 | 3 | 21d |
| 5 |  | Milestone: Completed Design document | 0d | 2007-10-19 | 2007-10-19 | 4 | 21d |
| 6 | 1.3 | **Elaboration Phase** | 21d | 2007-10-22 | 2007-11-19 |  | 55d |
| 7 |  | Incorporate changes to the Object Model | 2d | 2007-10-22 | 2007-10-23 | 5 | 21d |
| 8 |  | Make code changes due to Object Model changes | 5d | 2007-10-24 | 2007-10-30 | 7 | 21d |
| 9 |  | Milestone: Soft Freeze Object Model | 2d | 2007-10-31 | 2007-11-01 | 8 | 21d |
| 10 |  | Round Trip, Import XMI into EA | 2d | 2007-11-02 | 2007-11-05 | 9 | 21d |
| 11 |  | Register Model in caDSR | 10d | 2007-11-06 | 2007-11-19 | 10 | 21d |
| 12 |  | Milestone: Model Registered in CADSR | 0d | 2007-09-28 | 2007-09-28 |  | 58d |
| 13 | 1.5 | **iteration 1:** | 188d | 2007-09-28 | 2008-06-17 |  | 0d |
| 14 | 1.5.1 | **Admin Features and Misc bugs** | 32d | 2007-09-28 | 2007-11-12 |  | 0d |
| 15 |  | Admin - comments made by admin people need to be shown | 1w | 2007-09-28 | 2007-10-04 |  | 0d |
| 16 |  | Admin - Coordinator needs to see what models have been assigned to what editor or screener | 1w | 2007-10-05 | 2007-10-11 | 15 | 0d |
| 17 |  | Use improved PubMed fetch script on publication submission page | 3d | 2007-10-12 | 2007-10-16 | 16 | 0d |
| 18 |  | Do not delete EnvironmentalFactor objects - instead reuse and leave in DB | 2d | 2007-10-17 | 2007-10-18 | 17 | 0d |
| 19 |  | Upgrade to a new version of struts | 1w | 2007-10-19 | 2007-10-25 | 18 | 0d |
| 20 |  | Editors do not receive assignment emails | 1w | 2007-10-26 | 2007-11-01 | 19 | 0d |
| 21 |  | Keyword search shows models that have not been edited-approved | 5d | 2007-11-02 | 2007-11-08 | 20 | 0d |
| 22 |  | data conversion and html code result in funny signs in text | 2d | 2007-11-09 | 2007-11-12 | 21 | 0d |
| 23 | 1.5.2 | **EVSTree Application-side work** | 63d | 2007-11-13 | 2008-02-07 |  | 0d |
| 24 | 1.5.2.1 | **Implementation and Testing** | 63d | 2007-11-13 | 2008-02-07 |  | 0d |
| 25 |  | Restore the association between organ and diagnosis | 3w | 2007-11-13 | 2007-12-03 | 22 | 0d |
| 26 |  | Letting a user add and view staining methods that are not part of the vocabulary; affects old and new entries | 1w | 2007-12-04 | 2007-12-10 | 25 | 0d |
| 27 |  | Annoyances with EVS organ tree | 5w | 2007-12-11 | 2008-01-14 | 26 | 0d |
| 28 |  | Use mouse and rat strains from NCI Thesaurus | 2w | 2008-01-15 | 2008-01-28 | 27 | 0d |
| 29 |  | Selecting search results in tree causes HTTP 404 Error | 3d | 2008-01-29 | 2008-01-31 | 28 | 0d |
| 30 |  | Crash - when trying to select search result page crashes | 1w | 2008-02-01 | 2008-02-07 | 29 | 0d |
| 31 | 1.5.3 | **EVSTree - caMOD-side work** | 6d | 2008-02-08 | 2008-02-15 |  | 0d |
| 32 |  | Implement new EVSTree changes in caMOD | 6d | 2008-02-08 | 2008-02-15 | 30 | 0d |
| 33 | 1.5.4 | **Remote API / Grid** | 35d | 2008-02-18 | 2008-04-04 |  | 0d |
| 34 |  | Leverage caCORE 3.2 for remote API | 1w | 2008-02-18 | 2008-02-22 | 32 | 0d |
| 35 |  | Remote API - Redo API to 1.0 of Tool Kit | 2w | 2008-02-25 | 2008-03-07 | 34 | 0d |
| 36 |  | Make caMod available in the grid (production) | 1w | 2008-03-10 | 2008-03-14 | 35 | 0d |
| 37 |  | Map API to latest OM (2.4) | 2w | 2008-03-17 | 2008-03-28 | 36 | 0d |
| 38 |  | Make only edited-approved models available through API | 1w | 2008-03-31 | 2008-04-04 | 37 | 0d |
| 39 | 1.5.5 | **caMOD - caELMIR Integration Tasks** | 28d | 2008-04-07 | 2008-05-14 |  | 0d |
| 40 |  | Implement Therapy Screen for caELMIR data | 2w | 2008-04-07 | 2008-04-18 | 38 | 0d |
| 44 | 1.5.6 | **Testing** | 172d | 2007-10-22 | 2008-06-17 |  | 0d |
| 45 |  | Deploy iteration on DEV Server | 2d | 2008-05-15 | 2008-05-16 |  | 0d |
| 46 |  | Test on DEV tier | 1w | 2008-05-19 | 2008-05-23 | 45 | 0d |
| 47 | 1.5.6.3 | **Transition Phase** | 172d | 2007-10-22 | 2008-06-17 |  | 0d |
| 48 | 1.5.6.3.1 | **QA** | 10d | 2007-10-22 | 2007-11-02 | 5 | 66d |
| 49 |  | Finalize Testplan | 1w | 2007-10-22 | 2007-10-26 | 5 | 66d |
| 50 |  | Finalize Test Cases | 1w | 2007-10-29 | 2007-11-02 | 49 | 66d |
| 51 | 1.5.6.3.2 | **Deploy** | 17d | 2008-05-26 | 2008-06-17 |  | 0d |
| 52 | 1.5.6.3.2.1 | **QA Server Deployment** | 10d | 2008-05-26 | 2008-06-06 | 46 | 0d |
| 53 |  | QA Testing | 2w | 2008-05-26 | 2008-06-06 |  | 0d |
| 54 | 1.5.6.3.2.2 | **Staging Server Deployment** | 5d | 2008-06-09 | 2008-06-13 | 53 | 0d |
| 55 |  | Staging Testing | 1w | 2008-06-09 | 2008-06-13 |  | 0d |
| 56 | 1.5.6.3.2.3 | **Production Server Deployment** | 2d | 2008-06-16 | 2008-06-17 |  | 0d |
| 57 |  | Production Verification | 2d | 2008-06-16 | 2008-06-17 | 55 | 0d |
| 58 |  | caMOD 2.4 - Closeout | 0d | 2008-06-17 | 2008-06-17 | 57 | 0d |

## Version 2 (saved 2007-09-11)

Note of the change: second version

Last finish 2008-06-17 → 2008-04-28 (-50d).

Removed: 19 Upgrade to a new version of struts; 25 Restore the association between organ and diagnosis; 28 Use mouse and rat strains from NCI Thesaurus; 31 EVSTree - caMOD-side work; 32 Implement new EVSTree changes in caMOD

Changed:

| ID | Task | Start | Finish | Duration | Predecessors |
| --- | --- | --- | --- | --- | --- |
| 1 | **caMOD 2.4 Release** |  | 2008-06-17 → 2008-04-28 (-50d) | 188d → 152d |  |
| 13 | **iteration 1:** |  | 2008-06-17 → 2008-04-28 (-50d) | 188d → 152d |  |
| 14 | **Admin Features and Misc bugs** |  | 2007-11-12 → 2007-11-05 (-7d) | 32d → 27d |  |
| 19 | Editors do not receive assignment emails | 2007-10-26 → 2007-10-19 (-7d) | 2007-11-01 → 2007-10-25 (-7d) |  | Upgrade to a new version of struts → 18 |
| 20 | Keyword search shows models that have not been edited-approved | 2007-11-02 → 2007-10-26 (-7d) | 2007-11-08 → 2007-11-01 (-7d) |  |  |
| 21 | data conversion and html code result in funny signs in text | 2007-11-09 → 2007-11-02 (-7d) | 2007-11-12 → 2007-11-05 (-7d) |  |  |
| 22 | **EVSTree Application-side work** | 2007-11-13 → 2007-11-06 (-7d) | 2008-02-07 → 2007-12-27 (-42d) | 63d → 38d |  |
| 23 | **Implementation and Testing** | 2007-11-13 → 2007-11-06 (-7d) | 2008-02-07 → 2007-12-27 (-42d) | 63d → 38d |  |
| 24 | Letting a user add and view staining methods that are not part of the vocabulary; affects old and new entries | 2007-12-04 → 2007-11-06 (-28d) | 2007-12-10 → 2007-11-12 (-28d) |  | Restore the association between organ and diagnosis → 21 |
| 25 | Annoyances with EVS organ tree | 2007-12-11 → 2007-11-13 (-28d) | 2008-01-14 → 2007-12-17 (-28d) |  |  |
| 26 | Selecting search results in tree causes HTTP 404 Error | 2008-01-29 → 2007-12-18 (-42d) | 2008-01-31 → 2007-12-20 (-42d) |  | Use mouse and rat strains from NCI Thesaurus → 25 |
| 27 | Crash - when trying to select search result page crashes | 2008-02-01 → 2007-12-21 (-42d) | 2008-02-07 → 2007-12-27 (-42d) |  |  |
| 28 | **Remote API / Grid** | 2008-02-18 → 2007-12-28 (-52d) | 2008-04-04 → 2008-02-14 (-50d) |  |  |
| 29 | Leverage caCORE 3.2 for remote API | 2008-02-18 → 2007-12-28 (-52d) | 2008-02-22 → 2008-01-03 (-50d) |  | Implement new EVSTree changes in caMOD → 27 |
| 30 | Remote API - Redo API to 1.0 of Tool Kit | 2008-02-25 → 2008-01-04 (-52d) | 2008-03-07 → 2008-01-17 (-50d) |  |  |
| 31 | Make caMod available in the grid (production) | 2008-03-10 → 2008-01-18 (-52d) | 2008-03-14 → 2008-01-24 (-50d) |  |  |
| 32 | Map API to latest OM (2.4) | 2008-03-17 → 2008-01-25 (-52d) | 2008-03-28 → 2008-02-07 (-50d) |  |  |
| 33 | Make only edited-approved models available through API | 2008-03-31 → 2008-02-08 (-52d) | 2008-04-04 → 2008-02-14 (-50d) |  |  |
| 34 | **caMOD - caELMIR Integration Tasks** | 2008-04-07 → 2008-02-15 (-52d) | 2008-05-14 → 2008-03-25 (-50d) |  |  |
| 35 | Implement Therapy Screen for caELMIR data | 2008-04-07 → 2008-02-15 (-52d) | 2008-04-18 → 2008-02-28 (-50d) |  |  |
| 39 | **Testing** |  | 2008-06-17 → 2008-04-28 (-50d) | 172d → 136d |  |
| 40 | Deploy iteration on DEV Server | 2008-05-15 → 2008-03-26 (-50d) | 2008-05-16 → 2008-03-27 (-50d) |  |  |
| 41 | Test on DEV tier | 2008-05-19 → 2008-03-28 (-52d) | 2008-05-23 → 2008-04-03 (-50d) |  |  |
| 42 | **Transition Phase** |  | 2008-06-17 → 2008-04-28 (-50d) | 172d → 136d |  |
| 46 | **Deploy** | 2008-05-26 → 2008-04-04 (-52d) | 2008-06-17 → 2008-04-28 (-50d) |  |  |
| 47 | **QA Server Deployment** | 2008-05-26 → 2008-04-04 (-52d) | 2008-06-06 → 2008-04-17 (-50d) |  |  |
| 48 | QA Testing | 2008-05-26 → 2008-04-04 (-52d) | 2008-06-06 → 2008-04-17 (-50d) |  |  |
| 49 | **Staging Server Deployment** | 2008-06-09 → 2008-04-18 (-52d) | 2008-06-13 → 2008-04-24 (-50d) |  |  |
| 50 | Staging Testing | 2008-06-09 → 2008-04-18 (-52d) | 2008-06-13 → 2008-04-24 (-50d) |  |  |
| 51 | **Production Server Deployment** | 2008-06-16 → 2008-04-25 (-52d) | 2008-06-17 → 2008-04-28 (-50d) |  |  |
| 52 | Production Verification | 2008-06-16 → 2008-04-25 (-52d) | 2008-06-17 → 2008-04-28 (-50d) |  |  |
| 53 | caMOD 2.4 - Closeout | 2008-06-17 → 2008-04-28 (-50d) | 2008-06-17 → 2008-04-28 (-50d) |  |  |

## Version 3 (saved 2007-09-12)

Note of the change: Deleted tasks and reorded priorities

Last finish 2008-04-28 → 2008-04-30 (+2d).

Removed: 15 Admin - comments made by admin people need to be shown; 16 Admin - Coordinator needs to see what models have been assigned to what editor or screener; 17 Use improved PubMed fetch script on publication submission page; 20 Keyword search shows models that have not been edited-approved

Changed:

| ID | Task | Start | Finish | Duration | Predecessors | Other |
| --- | --- | --- | --- | --- | --- | --- |
| 1 | **caMOD 2.4 Release** |  | 2008-04-28 → 2008-04-30 (+2d) | 152d → 154d |  |  |
| 13 | **iteration 1:** | 2007-09-28 → 2007-10-22 (+24d) | 2008-04-28 → 2008-04-30 (+2d) | 152d → 138d |  |  |
| 14 | **EVSTree Application-side work** | 2007-11-06 → 2007-11-02 (-4d) | 2007-12-27 → 2007-12-18 (-9d) | 38d → 33d |  |  |
| 15 | **Implementation and Testing** | 2007-11-06 → 2007-11-02 (-4d) | 2007-12-27 → 2007-12-18 (-9d) | 38d → 33d |  |  |
| 16 | Letting a user add and view staining methods that are not part of the vocabulary; affects old and new entries | 2007-11-06 → 2007-11-02 (-4d) | 2007-11-12 → 2007-11-08 (-4d) |  | 28 → 9 | resources Sima [75%] → Sima |
| 17 | Annoyances with EVS organ tree | 2007-11-13 → 2007-11-09 (-4d) | 2007-12-17 → 2007-12-06 (-11d) | 5w → 4w |  | resources Sima [80%] → Sima |
| 18 | Selecting search results in tree causes HTTP 404 Error | 2007-12-18 → 2007-12-07 (-11d) | 2007-12-20 → 2007-12-11 (-9d) |  |  |  |
| 19 | Crash - when trying to select search result page crashes | 2007-12-21 → 2007-12-12 (-9d) | 2007-12-27 → 2007-12-18 (-9d) |  |  |  |
| 20 | **caMOD - caELMIR Integration Tasks** | 2008-02-15 → 2007-12-19 (-58d) | 2008-03-25 → 2008-01-25 (-60d) |  |  |  |
| 21 | Implement Therapy Screen for caELMIR data | 2008-02-15 → 2007-12-19 (-58d) | 2008-02-28 → 2008-01-01 (-58d) |  | 34 → 19 | resources none → Sima |
| 25 | **Admin Features and Misc bugs** | 2007-09-28 → 2008-01-28 (+122d) | 2007-11-05 → 2008-02-07 (+94d) | 27d → 9d |  |  |
| 26 | Do not delete EnvironmentalFactor objects - instead reuse and leave in DB | 2007-10-17 → 2008-01-28 (+103d) | 2007-10-18 → 2008-01-29 (+103d) |  | Use improved PubMed fetch script on publication submission page → none |  |
| 27 | Editors do not receive assignment emails | 2007-10-19 → 2008-01-30 (+103d) | 2007-10-25 → 2008-02-05 (+103d) |  |  |  |
| 28 | data conversion and html code result in funny signs in text | 2007-11-02 → 2008-02-06 (+96d) | 2007-11-05 → 2008-02-07 (+94d) |  | Keyword search shows models that have not been edited-approved → 27 |  |
| 29 | **Remote API / Grid** | 2007-12-28 → 2008-02-08 (+42d) | 2008-02-14 → 2008-03-27 (+42d) |  |  |  |
| 30 | Leverage caCORE 3.2 for remote API | 2007-12-28 → 2008-02-08 (+42d) | 2008-01-03 → 2008-02-14 (+42d) |  | 19 → 28 |  |
| 31 | Remote API - Redo API to 1.0 of Tool Kit | 2008-01-04 → 2008-02-15 (+42d) | 2008-01-17 → 2008-02-28 (+42d) |  |  |  |
| 32 | Make caMod available in the grid (production) | 2008-01-18 → 2008-02-29 (+42d) | 2008-01-24 → 2008-03-06 (+42d) |  |  |  |
| 33 | Map API to latest OM (2.4) | 2008-01-25 → 2008-03-07 (+42d) | 2008-02-07 → 2008-03-20 (+42d) |  |  |  |
| 34 | Make only edited-approved models available through API | 2008-02-08 → 2008-03-21 (+42d) | 2008-02-14 → 2008-03-27 (+42d) |  |  |  |
| 35 | **Testing** |  | 2008-04-28 → 2008-04-30 (+2d) | 136d → 138d |  |  |
| 36 | Deploy iteration on DEV Server | 2008-03-26 → 2008-03-28 (+2d) | 2008-03-27 → 2008-03-31 (+4d) |  | none → 34 | resources none → Sima |
| 37 | Test on DEV tier | 2008-03-28 → 2008-04-01 (+4d) | 2008-04-03 → 2008-04-07 (+4d) |  |  | resources none → Ulli; Sima |
| 38 | **Transition Phase** |  | 2008-04-28 → 2008-04-30 (+2d) | 136d → 138d |  |  |
| 42 | **Deploy** | 2008-04-04 → 2008-04-08 (+4d) | 2008-04-28 → 2008-04-30 (+2d) |  |  |  |
| 43 | **QA Server Deployment** | 2008-04-04 → 2008-04-08 (+4d) | 2008-04-17 → 2008-04-21 (+4d) |  |  |  |
| 44 | QA Testing | 2008-04-04 → 2008-04-08 (+4d) | 2008-04-17 → 2008-04-21 (+4d) |  |  |  |
| 45 | **Staging Server Deployment** | 2008-04-18 → 2008-04-22 (+4d) | 2008-04-24 → 2008-04-28 (+4d) |  |  |  |
| 46 | Staging Testing | 2008-04-18 → 2008-04-22 (+4d) | 2008-04-24 → 2008-04-28 (+4d) |  |  |  |
| 47 | **Production Server Deployment** | 2008-04-25 → 2008-04-29 (+4d) | 2008-04-28 → 2008-04-30 (+2d) |  | none → 46 |  |
| 48 | Production Verification | 2008-04-25 → 2008-04-29 (+4d) | 2008-04-28 → 2008-04-30 (+2d) |  | 46 → none |  |
| 49 | caMOD 2.4 - Closeout | 2008-04-28 → 2008-04-30 (+2d) | 2008-04-28 → 2008-04-30 (+2d) |  |  |  |

## Version 4 (saved 2007-09-13)

Note of the change: Removed grid client task - moved to 2.5

Last finish 2008-04-30 → 2008-03-10 (-51d).

Removed: 29 Remote API / Grid; 30 Leverage caCORE 3.2 for remote API; 31 Remote API - Redo API to 1.0 of Tool Kit; 32 Make caMod available in the grid (production); 33 Map API to latest OM (2.4); 34 Make only edited-approved models available through API

Changed:

| ID | Task | Start | Finish | Duration | Total float | Predecessors | Other |
| --- | --- | --- | --- | --- | --- | --- | --- |
| 1 | **caMOD 2.4 Release** |  | 2008-04-30 → 2008-03-10 (-51d) | 154d → 117d |  |  |  |
| 6 | **Elaboration Phase** |  | 2007-11-19 → 2007-11-20 (+1d) | 21d → 22d |  |  |  |
| 7 | Incorporate changes to the Object Model |  | 2007-10-23 → 2007-10-24 (+1d) | 2d → 3d |  |  |  |
| 8 | Make code changes due to Object Model changes | 2007-10-24 → 2007-10-25 (+1d) | 2007-10-30 → 2007-10-31 (+1d) |  |  |  |  |
| 9 | Milestone: Soft Freeze Object Model | 2007-10-31 → 2007-11-01 (+1d) | 2007-11-01 → 2007-11-02 (+1d) |  |  |  | resources Sima → Ulli |
| 10 | Round Trip, Import XMI into EA | 2007-11-02 → 2007-11-05 (+3d) | 2007-11-05 → 2007-11-06 (+1d) |  | 21d → 79d |  |  |
| 11 | Register Model in caDSR | 2007-11-06 → 2007-11-07 (+1d) | 2007-11-19 → 2007-11-20 (+1d) |  | 21d → 79d |  |  |
| 13 | **iteration 1:** |  | 2008-04-30 → 2008-03-10 (-51d) | 138d → 101d |  |  |  |
| 14 | **EVSTree Application-side work** | 2007-11-02 → 2007-11-05 (+3d) | 2007-12-18 → 2007-12-19 (+1d) |  |  |  |  |
| 15 | **Implementation and Testing** | 2007-11-02 → 2007-11-05 (+3d) | 2007-12-18 → 2007-12-19 (+1d) |  |  |  |  |
| 16 | Letting a user add and view staining methods that are not part of the vocabulary; affects old and new entries | 2007-11-02 → 2007-11-05 (+3d) | 2007-11-08 → 2007-11-09 (+1d) |  |  |  |  |
| 17 | Annoyances with EVS organ tree | 2007-11-09 → 2007-11-12 (+3d) | 2007-12-06 → 2007-12-07 (+1d) |  |  |  |  |
| 18 | Selecting search results in tree causes HTTP 404 Error | 2007-12-07 → 2007-12-10 (+3d) | 2007-12-11 → 2007-12-12 (+1d) |  |  |  |  |
| 19 | Crash - when trying to select search result page crashes | 2007-12-12 → 2007-12-13 (+1d) | 2007-12-18 → 2007-12-19 (+1d) |  |  |  |  |
| 20 | **caMOD - caELMIR Integration Tasks** | 2007-12-19 → 2007-12-20 (+1d) | 2008-01-25 → 2008-01-23 (-2d) | 28d → 25d |  |  |  |
| 21 | Implement Therapy Screen for caELMIR data | 2007-12-19 → 2007-12-20 (+1d) | 2008-01-01 → 2008-01-02 (+1d) |  |  |  |  |
| 24 | **Admin Features and Misc bugs** | 2008-01-28 → 2008-01-24 (-4d) | 2008-02-07 → 2008-02-05 (-2d) |  |  |  |  |
| 25 | Do not delete EnvironmentalFactor objects - instead reuse and leave in DB | 2008-01-28 → 2008-01-24 (-4d) | 2008-01-29 → 2008-01-25 (-4d) |  |  |  |  |
| 26 | Editors do not receive assignment emails | 2008-01-30 → 2008-01-28 (-2d) | 2008-02-05 → 2008-02-01 (-4d) |  |  |  |  |
| 27 | data conversion and html code result in funny signs in text | 2008-02-06 → 2008-02-04 (-2d) | 2008-02-07 → 2008-02-05 (-2d) |  |  |  |  |
| 28 | **Testing** |  | 2008-04-30 → 2008-03-10 (-51d) | 138d → 101d |  |  |  |
| 29 | Deploy iteration on DEV Server | 2008-03-28 → 2008-02-06 (-51d) | 2008-03-31 → 2008-02-07 (-53d) |  |  | Make only edited-approved models available through API → 27 |  |
| 30 | Test on DEV tier | 2008-04-01 → 2008-02-08 (-53d) | 2008-04-07 → 2008-02-14 (-53d) |  |  |  |  |
| 31 | **Transition Phase** |  | 2008-04-30 → 2008-03-10 (-51d) | 138d → 101d |  |  |  |
| 35 | **Deploy** | 2008-04-08 → 2008-02-15 (-53d) | 2008-04-30 → 2008-03-10 (-51d) |  |  |  |  |
| 36 | **QA Server Deployment** | 2008-04-08 → 2008-02-15 (-53d) | 2008-04-21 → 2008-02-28 (-53d) |  |  |  |  |
| 37 | QA Testing | 2008-04-08 → 2008-02-15 (-53d) | 2008-04-21 → 2008-02-28 (-53d) |  |  |  |  |
| 38 | **Staging Server Deployment** | 2008-04-22 → 2008-02-29 (-53d) | 2008-04-28 → 2008-03-06 (-53d) |  |  |  |  |
| 39 | Staging Testing | 2008-04-22 → 2008-02-29 (-53d) | 2008-04-28 → 2008-03-06 (-53d) |  |  |  |  |
| 40 | **Production Server Deployment** | 2008-04-29 → 2008-03-07 (-53d) | 2008-04-30 → 2008-03-10 (-51d) |  |  |  |  |
| 41 | Production Verification | 2008-04-29 → 2008-03-07 (-53d) | 2008-04-30 → 2008-03-10 (-51d) |  |  |  |  |
| 42 | caMOD 2.4 - Closeout | 2008-04-30 → 2008-03-10 (-51d) | 2008-04-30 → 2008-03-10 (-51d) |  |  |  |  |

## Version 5 (saved 2007-10-04)

Note of the change: Updated to include EVSTree and integration only

Last finish 2008-03-10 → 2008-03-04 (-6d).

Added:

| ID | Task | Duration | Start | Finish | Predecessors | Resources |
| --- | --- | --- | --- | --- | --- | --- |
| 20 | Search does not work for rat anatomy | 1w | 2007-12-20 | 2007-12-26 | 19 |  |
| 21 | search does not work for zebrafish vocabularies | 1w | 2007-12-27 | 2008-01-02 | 20 |  |
| 24 | Connecting to caELMIR to return results | 1w | 2008-01-17 | 2008-01-23 | 23 | Sima |
| 25 | Misc tasks for integration | 5d | 2008-01-24 | 2008-01-30 | 24 | Sima |

Removed: 24 Admin Features and Misc bugs; 25 Do not delete EnvironmentalFactor objects - instead reuse and leave in DB; 26 Editors do not receive assignment emails; 27 data conversion and html code result in funny signs in text

Changed:

| ID | Task | Start | Finish | Duration | Predecessors | Other |
| --- | --- | --- | --- | --- | --- | --- |
| 1 | **caMOD 2.4 Release** |  | 2008-03-10 → 2008-03-04 (-6d) | 117d → 113d |  |  |
| 13 | **iteration 1:** |  | 2008-03-10 → 2008-03-04 (-6d) | 101d → 97d |  |  |
| 14 | **EVSTree Application-side work** |  | 2007-12-19 → 2008-01-02 (+14d) | 33d → 43d |  |  |
| 15 | **Implementation and Testing** |  | 2007-12-19 → 2008-01-02 (+14d) | 33d → 43d |  |  |
| 16 | Cancelling selection gives error messages in Mozilla and no response in IE |  |  |  |  | was named Letting a user add and view staining methods that are not part of the vocabulary; affects old and new entries |
| 22 | **caMOD - caELMIR Integration Tasks** | 2007-12-20 → 2008-01-03 (+14d) | 2008-01-23 → 2008-01-30 (+7d) | 25d → 20d |  |  |
| 23 | Implement Therapy Screen for caELMIR data | 2007-12-20 → 2008-01-03 (+14d) | 2008-01-02 → 2008-01-16 (+14d) |  | 19 → 21 |  |
| 26 | **Testing** |  | 2008-03-10 → 2008-03-04 (-6d) | 101d → 97d |  |  |
| 27 | Deploy iteration on DEV Server | 2008-02-06 → 2008-01-31 (-6d) | 2008-02-07 → 2008-02-01 (-6d) |  | data conversion and html code result in funny signs in text → 25 |  |
| 28 | Test on DEV tier | 2008-02-08 → 2008-02-04 (-4d) | 2008-02-14 → 2008-02-08 (-6d) |  |  |  |
| 29 | **Transition Phase** |  | 2008-03-10 → 2008-03-04 (-6d) | 101d → 97d |  |  |
| 33 | **Deploy** | 2008-02-15 → 2008-02-11 (-4d) | 2008-03-10 → 2008-03-04 (-6d) |  |  |  |
| 34 | **QA Server Deployment** | 2008-02-15 → 2008-02-11 (-4d) | 2008-02-28 → 2008-02-22 (-6d) |  |  |  |
| 35 | QA Testing | 2008-02-15 → 2008-02-11 (-4d) | 2008-02-28 → 2008-02-22 (-6d) |  |  |  |
| 36 | **Staging Server Deployment** | 2008-02-29 → 2008-02-25 (-4d) | 2008-03-06 → 2008-02-29 (-6d) |  |  |  |
| 37 | Staging Testing | 2008-02-29 → 2008-02-25 (-4d) | 2008-03-06 → 2008-02-29 (-6d) |  |  |  |
| 38 | **Production Server Deployment** | 2008-03-07 → 2008-03-03 (-4d) | 2008-03-10 → 2008-03-04 (-6d) |  |  |  |
| 39 | Production Verification | 2008-03-07 → 2008-03-03 (-4d) | 2008-03-10 → 2008-03-04 (-6d) |  |  |  |
| 40 | caMOD 2.4 - Closeout | 2008-03-10 → 2008-03-04 (-6d) | 2008-03-10 → 2008-03-04 (-6d) |  |  |  |

## Version 6 (saved 2007-10-09)

Note of the change: Added vacation (PTO) for resources

Last finish 2008-03-04 → 2008-02-11 (-22d).

Added:

| ID | Task | Duration | Start | Finish | Predecessors |
| --- | --- | --- | --- | --- | --- |
| 21 | Alternate search terms are only shown when matches in the existing trees are found (#9277) | 1d | 2007-12-03 | 2007-12-03 | 20 |
| 22 | Tree doesn't jump to the highlighted term after performing search (#9274) | 5d | 2007-12-04 | 2007-12-10 | 21 |

Removed: 17 Annoyances with EVS organ tree

Changed:

| ID | Task | Start | Finish | Duration | Total float | Predecessors | Other |
| --- | --- | --- | --- | --- | --- | --- | --- |
| 1 | **caMOD 2.4 Release** |  | 2008-03-04 → 2008-02-11 (-22d) | 113d → 97d |  |  |  |
| 6 | **Elaboration Phase** |  | 2007-11-20 → 2007-11-21 (+1d) | 22d → 23d |  |  |  |
| 11 | Register Model in caDSR |  | 2007-11-20 → 2007-11-21 (+1d) | 10d → 11d | 79d → 59d |  |  |
| 13 | **iteration 1:** |  | 2008-03-04 → 2008-02-11 (-22d) | 97d → 81d |  |  |  |
| 14 | **EVSTree Application-side work** |  | 2008-01-02 → 2007-12-10 (-23d) | 43d → 26d |  |  |  |
| 15 | **Implementation and Testing** |  | 2008-01-02 → 2007-12-10 (-23d) | 43d → 26d |  |  |  |
| 16 | Cancelling selection gives error messages in Mozilla and no response in IE (#7451) |  | 2007-11-09 → 2007-11-12 (+3d) | 1w → 6d |  |  | was named Cancelling selection gives error messages in Mozilla and no response in IE |
| 17 | Selecting search results in tree causes HTTP 404 Error (#6388) | 2007-12-10 → 2007-11-13 (-27d) | 2007-12-12 → 2007-11-15 (-27d) |  |  | Annoyances with EVS organ tree → 16 | was named Selecting search results in tree causes HTTP 404 Error |
| 18 | Crash - when trying to select search result page crashes (#6389) | 2007-12-13 → 2007-11-16 (-27d) | 2007-12-19 → 2007-11-22 (-27d) |  |  |  | was named Crash - when trying to select search result page crashes |
| 19 | Search does not work for rat anatomy (#7790) | 2007-12-20 → 2007-11-23 (-27d) | 2007-12-26 → 2007-11-27 (-29d) | 1w → 3d |  |  | was named Search does not work for rat anatomy |
| 20 | Search does not work for zebrafish vocabularies (#7387) | 2007-12-27 → 2007-11-28 (-29d) | 2008-01-02 → 2007-11-30 (-33d) | 1w → 3d |  |  | was named search does not work for zebrafish vocabularies |
| 23 | **caMOD - caELMIR Integration Tasks** | 2008-01-03 → 2007-12-11 (-23d) | 2008-01-30 → 2008-01-08 (-22d) | 20d → 21d |  |  |  |
| 24 | Implement Therapy Screen for caELMIR data | 2008-01-03 → 2007-12-11 (-23d) | 2008-01-16 → 2007-12-25 (-22d) | 2w → 2.2w |  | 20 → 22 |  |
| 25 | Connecting to caELMIR to return results | 2008-01-17 → 2007-12-26 (-22d) | 2008-01-23 → 2008-01-01 (-22d) |  |  |  |  |
| 26 | Misc tasks for integration | 2008-01-24 → 2008-01-02 (-22d) | 2008-01-30 → 2008-01-08 (-22d) |  |  |  |  |
| 27 | **Testing** |  | 2008-03-04 → 2008-02-11 (-22d) | 97d → 81d |  |  |  |
| 28 | Deploy iteration on DEV Server | 2008-01-31 → 2008-01-09 (-22d) | 2008-02-01 → 2008-01-10 (-22d) |  |  |  |  |
| 29 | Test on DEV tier | 2008-02-04 → 2008-01-11 (-24d) | 2008-02-08 → 2008-01-17 (-22d) |  |  |  |  |
| 30 | **Transition Phase** |  | 2008-03-04 → 2008-02-11 (-22d) | 97d → 81d |  |  |  |
| 34 | **Deploy** | 2008-02-11 → 2008-01-18 (-24d) | 2008-03-04 → 2008-02-11 (-22d) |  |  |  |  |
| 35 | **QA Server Deployment** | 2008-02-11 → 2008-01-18 (-24d) | 2008-02-22 → 2008-01-31 (-22d) |  |  |  |  |
| 36 | QA Testing | 2008-02-11 → 2008-01-18 (-24d) | 2008-02-22 → 2008-01-31 (-22d) |  |  |  |  |
| 37 | **Staging Server Deployment** | 2008-02-25 → 2008-02-01 (-24d) | 2008-02-29 → 2008-02-07 (-22d) |  |  |  |  |
| 38 | Staging Testing | 2008-02-25 → 2008-02-01 (-24d) | 2008-02-29 → 2008-02-07 (-22d) |  |  |  |  |
| 39 | **Production Server Deployment** | 2008-03-03 → 2008-02-08 (-24d) | 2008-03-04 → 2008-02-11 (-22d) |  |  |  |  |
| 40 | Production Verification | 2008-03-03 → 2008-02-08 (-24d) | 2008-03-04 → 2008-02-11 (-22d) |  |  |  |  |
| 41 | caMOD 2.4 - Closeout | 2008-03-04 → 2008-02-11 (-22d) | 2008-03-04 → 2008-02-11 (-22d) |  |  |  |  |

## Version 7 (saved 2007-10-11)

Note of the change: Removed duplicate bug for HTTP 404 error in EVSTree application

Last finish 2008-02-11 → 2008-02-12 (+1d).

Removed: 17 Selecting search results in tree causes HTTP 404 Error (#6388)

Changed:

| ID | Task | Start | Finish | Duration | Predecessors |
| --- | --- | --- | --- | --- | --- |
| 1 | **caMOD 2.4 Release** |  | 2008-02-11 → 2008-02-12 (+1d) | 97d → 98d |  |
| 13 | **iteration 1:** |  | 2008-02-11 → 2008-02-12 (+1d) | 81d → 82d |  |
| 16 | Cancelling selection gives error messages in Mozilla and no response in IE (#7451) |  | 2007-11-12 → 2007-11-13 (+1d) | 6d → 7d |  |
| 17 | Crash - when trying to select search result page crashes (#6389) | 2007-11-16 → 2007-11-14 (-2d) |  | 1w → 1.4w | Selecting search results in tree causes HTTP 404 Error (#6388) → 16 |
| 22 | **caMOD - caELMIR Integration Tasks** |  | 2008-01-08 → 2008-01-09 (+1d) | 21d → 22d |  |
| 24 | Connecting to caELMIR to return results |  | 2008-01-01 → 2008-01-02 (+1d) | 1w → 1.2w |  |
| 25 | Misc tasks for integration | 2008-01-02 → 2008-01-03 (+1d) | 2008-01-08 → 2008-01-09 (+1d) |  |  |
| 26 | **Testing** |  | 2008-02-11 → 2008-02-12 (+1d) | 81d → 82d |  |
| 27 | Deploy iteration on DEV Server | 2008-01-09 → 2008-01-10 (+1d) | 2008-01-10 → 2008-01-11 (+1d) |  |  |
| 28 | Test on DEV tier | 2008-01-11 → 2008-01-14 (+3d) | 2008-01-17 → 2008-01-18 (+1d) |  |  |
| 29 | **Transition Phase** |  | 2008-02-11 → 2008-02-12 (+1d) | 81d → 82d |  |
| 33 | **Deploy** | 2008-01-18 → 2008-01-21 (+3d) | 2008-02-11 → 2008-02-12 (+1d) |  |  |
| 34 | **QA Server Deployment** | 2008-01-18 → 2008-01-21 (+3d) | 2008-01-31 → 2008-02-01 (+1d) |  |  |
| 35 | QA Testing | 2008-01-18 → 2008-01-21 (+3d) | 2008-01-31 → 2008-02-01 (+1d) |  |  |
| 36 | **Staging Server Deployment** | 2008-02-01 → 2008-02-04 (+3d) | 2008-02-07 → 2008-02-08 (+1d) |  |  |
| 37 | Staging Testing | 2008-02-01 → 2008-02-04 (+3d) | 2008-02-07 → 2008-02-08 (+1d) |  |  |
| 38 | **Production Server Deployment** | 2008-02-08 → 2008-02-11 (+3d) | 2008-02-11 → 2008-02-12 (+1d) |  |  |
| 39 | Production Verification | 2008-02-08 → 2008-02-11 (+3d) | 2008-02-11 → 2008-02-12 (+1d) |  |  |
| 40 | caMOD 2.4 - Closeout | 2008-02-11 → 2008-02-12 (+1d) | 2008-02-11 → 2008-02-12 (+1d) |  |  |

## Version 8 (saved 2007-11-01)

Note of the change: updated, changed caDSR submission to creating value domains, end date is now 02/05/2008

Last finish 2008-02-12 → 2008-02-05 (-7d).

Removed: 25 Misc tasks for integration

Changed:

| ID | Task | Start | Finish | Duration | Total float | Predecessors | Other |
| --- | --- | --- | --- | --- | --- | --- | --- |
| 1 | **caMOD 2.4 Release** |  | 2008-02-12 → 2008-02-05 (-7d) | 98d → 93d |  |  |  |
| 6 | **Elaboration Phase** |  | 2007-11-21 → 2008-01-03 (+43d) | 23d → 54d |  |  |  |
| 11 | Create valute domains for caDSR | 2007-11-07 → 2007-12-11 (+34d) | 2007-11-21 → 2008-01-03 (+43d) | 11d → 18d | 54d → 23d |  | was named Register Model in caDSR; constraint none → finish no earlier than 2008-01-03 |
| 13 | **iteration 1:** |  | 2008-02-12 → 2008-02-05 (-7d) | 82d → 77d |  |  |  |
| 22 | **caMOD - caELMIR Integration Tasks** |  | 2008-01-09 → 2008-01-02 (-7d) | 22d → 17d |  |  |  |
| 23 | Implement Therapy Screen for caELMIR data (#8816) |  |  |  |  |  | was named Implement Therapy Screen for caELMIR data |
| 24 | Connecting to caELMIR to return results (#8816) |  |  |  |  |  | was named Connecting to caELMIR to return results |
| 25 | **Testing** |  | 2008-02-12 → 2008-02-05 (-7d) | 82d → 77d |  |  |  |
| 26 | Deploy iteration on DEV Server | 2008-01-10 → 2008-01-03 (-7d) | 2008-01-11 → 2008-01-04 (-7d) |  |  | Misc tasks for integration → 24 |  |
| 27 | Test on DEV tier | 2008-01-14 → 2008-01-07 (-7d) | 2008-01-18 → 2008-01-11 (-7d) |  |  |  |  |
| 28 | **Transition Phase** |  | 2008-02-12 → 2008-02-05 (-7d) | 82d → 77d |  |  |  |
| 32 | **Deploy** | 2008-01-21 → 2008-01-14 (-7d) | 2008-02-12 → 2008-02-05 (-7d) |  |  |  |  |
| 33 | **QA Server Deployment** | 2008-01-21 → 2008-01-14 (-7d) | 2008-02-01 → 2008-01-25 (-7d) |  |  |  |  |
| 34 | QA Testing | 2008-01-21 → 2008-01-14 (-7d) | 2008-02-01 → 2008-01-25 (-7d) |  |  |  |  |
| 35 | **Staging Server Deployment** | 2008-02-04 → 2008-01-28 (-7d) | 2008-02-08 → 2008-02-01 (-7d) |  |  |  |  |
| 36 | Staging Testing | 2008-02-04 → 2008-01-28 (-7d) | 2008-02-08 → 2008-02-01 (-7d) |  |  |  |  |
| 37 | **Production Server Deployment** | 2008-02-11 → 2008-02-04 (-7d) | 2008-02-12 → 2008-02-05 (-7d) |  |  |  |  |
| 38 | Production Verification | 2008-02-11 → 2008-02-04 (-7d) | 2008-02-12 → 2008-02-05 (-7d) |  |  |  |  |
| 39 | caMOD 2.4 - Closeout | 2008-02-12 → 2008-02-05 (-7d) | 2008-02-12 → 2008-02-05 (-7d) |  |  |  |  |

## Version 9 (saved 2007-11-28)

Note of the change: added a new task to offer a downloadable tar fileto gForge as a deployment step. updated the most recent development task status.

Last finish stays 2008-02-05. Complete tasks 0 → 12.

Added:

| ID | Task | Duration | Start | Finish | Predecessors | Resources |
| --- | --- | --- | --- | --- | --- | --- |
| 35 | **Configuration and Change Management** | 1d? | 2008-01-28 | 2008-01-28 |  |  |
| 36 | Update gForge with application tar file | 1d? | 2008-01-28 | 2008-01-28 | 34 | Sima |

Changed:

| ID | Task | Start | Finish | Duration | Complete | Total float |
| --- | --- | --- | --- | --- | --- | --- |
| 1 | **caMOD 2.4 Release** | 2007-09-28 A |  | 93d → 93d? | 0% → 51% |  |
| 2 | **Inception Phase** | 2007-09-28 A | 2007-10-19 A |  | 0% → 100% | 0d → none |
| 3 | Use Case and Design Doc (caBIG template) | 2007-09-28 A | 2007-10-11 A |  | 0% → 100% | 0d → none |
| 4 | Review use cases / design with the "Review Board" | 2007-10-12 A | 2007-10-19 A |  | 0% → 100% | 0d → none |
| 5 | Milestone: Completed Design document | 2007-10-19 A | 2007-10-19 A |  | 0% → 100% | 0d → none |
| 6 | **Elaboration Phase** | 2007-10-22 A | 2008-01-03 A |  | 0% → 100% | 0d → none |
| 7 | Incorporate changes to the Object Model | 2007-10-22 A | 2007-10-24 A |  | 0% → 100% | 0d → none |
| 8 | Make code changes due to Object Model changes | 2007-10-25 A | 2007-10-31 A |  | 0% → 100% | 0d → none |
| 9 | Milestone: Soft Freeze Object Model | 2007-11-01 A | 2007-11-02 A |  | 0% → 100% | 0d → none |
| 10 | Round Trip, Import XMI into EA | 2007-11-05 A | 2007-11-06 A |  | 0% → 100% | 54d → none |
| 11 | Create valute domains for caDSR | 2007-12-11 A | 2008-01-03 A |  | 0% → 100% | 23d → none |
| 12 | Milestone: Model Registered in CADSR | 2007-09-28 A | 2007-09-28 A |  | 0% → 100% | 58d → none |
| 13 | **iteration 1:** | 2007-10-22 A |  | 77d → 77d? | 0% → 21% |  |
| 14 | **EVSTree Application-side work** | 2007-11-05 A |  |  | 0% → 51% | 0d → 41d |
| 15 | **Implementation and Testing** | 2007-11-05 A |  |  | 0% → 51% | 0d → 41d |
| 17 | Crash - when trying to select search result page crashes (#6389) | 2007-11-14 A |  |  | 0% → 75% | 0d → 53d |
| 18 | Search does not work for rat anatomy (#7790) | 2007-11-23 A | 2007-11-27 A |  | 0% → 100% | 0d → none |
| 19 | Search does not work for zebrafish vocabularies (#7387) | 2007-11-28 A | 2007-11-30 A |  | 0% → 100% | 0d → none |
| 20 | Alternate search terms are only shown when matches in the existing trees are found (#9277) | 2007-12-03 A | 2007-12-03 A |  | 0% → 100% | 0d → none |
| 21 | Tree doesn't jump to the highlighted term after performing search (#9274) | 2007-12-04 A |  |  | 0% → 20% | 0d → 3.4d |
| 22 | **caMOD - caELMIR Integration Tasks** | 2007-12-11 A |  |  | 0% → 20% |  |
| 23 | Implement Therapy Screen for caELMIR data (#8816) | 2007-12-11 A |  |  | 0% → 20% | 0d → 1.2d |
| 24 | Connecting to caELMIR to return results (#8816) | 2007-12-26 A |  |  | 0% → 20% |  |
| 25 | **Testing** |  |  | 77d → 77d? |  |  |
| 28 | **Transition Phase** |  |  | 77d → 77d? |  |  |
| 32 | **Deploy** |  |  | 17d → 17d? |  |  |

## Version 10 (saved 2007-12-14)

Note of the change: updated the task list with completion, moved "create value domains caDSR" task to 2.5 and replaced with screening models.

Last finish 2008-02-05 → 2008-01-11 (-25d). Complete tasks 12 → 11.

Added:

| ID | Task | Duration | Start | Finish | Constraint |
| --- | --- | --- | --- | --- | --- |
| 25 | **caMOD** | 3d? | 2007-12-03 A | 2007-12-05 A |  |
| 27 | Add summary table to newly designed publication search page (#10679) | 3d? | 2007-12-03 A | 2007-12-05 A | start no earlier than 2007-12-03 |

Removed: 35 Configuration and Change Management

Changed:

| ID | Task | Start | Finish | Duration | Complete | Total float | Predecessors | Other |
| --- | --- | --- | --- | --- | --- | --- | --- | --- |
| 1 | **caMOD 2.4 Release** |  | 2008-02-05 → 2008-01-11 (-25d) | 93d? → 76d? | 51% → 47% |  |  |  |
| 2 | **Inception Phase** | 2007-09-28 A → 2007-09-28 | 2007-10-19 A → 2007-10-12 (-7d) | 16d → 11d | 100% → 0% | none → 54d |  |  |
| 3 | Use Case and Design Doc (caBIG template) | 2007-09-28 A → 2007-09-28 | 2007-10-11 A → 2007-10-11 |  | 100% → 0% | none → 57d |  |  |
| 4 | Review use cases / design with the "Review Board" | 2007-10-12 A → 2007-10-12 | 2007-10-19 A → 2007-10-12 (-7d) | 6d → 1d | 100% → 0% | none → 58d |  |  |
| 5 | Milestone: Completed Design document | 2007-10-19 A → 2007-10-12 (-7d) | 2007-10-19 A → 2007-10-12 (-7d) |  | 100% → 0% | none → 58d |  |  |
| 6 | **Elaboration Phase** | 2007-10-22 A → 2007-10-15 A (-7d) | 2008-01-03 A → 2008-01-03 | 54d → 59d | 100% → 89% | none → 6d |  |  |
| 7 | Incorporate changes to the Object Model | 2007-10-22 A → 2007-10-15 A (-7d) | 2007-10-24 A → 2007-10-22 A (-2d) |  |  |  |  |  |
| 8 | Make code changes due to Object Model changes | 2007-10-25 A → 2007-10-23 A (-2d) | 2007-10-31 A → 2007-10-29 A (-2d) |  |  |  |  |  |
| 9 | Milestone: Soft Freeze Object Model | 2007-11-01 A → 2007-10-30 A (-2d) | 2007-11-02 A → 2007-10-31 A (-2d) |  |  |  |  |  |
| 10 | Round Trip, Import XMI into EA | 2007-11-05 A → 2007-11-01 A (-4d) | 2007-11-06 A → 2007-11-02 A (-4d) |  |  |  |  |  |
| 11 | screen models |  | 2008-01-03 A → 2008-01-03 | 18d → 10d | 100% → 75% | none → 6d |  | was named Create valute domains for caDSR |
| 12 | Milestone: Model Registered in CADSR | 2007-09-28 A → 2007-09-28 | 2007-09-28 A → 2007-09-28 |  | 100% → 0% | none → 58d |  |  |
| 13 | **iteration 1:** | 2007-10-22 A → 2007-10-15 A (-7d) | 2008-02-05 → 2008-01-11 (-25d) | 77d? → 65d? | 21% → 42% |  |  |  |
| 14 | **EVSTree Application-side work** | 2007-11-05 A → 2007-11-01 A (-4d) | 2007-12-10 → 2007-12-03 (-7d) | 26d → 23d | 51% → 90% | 41d → 29d |  |  |
| 15 | **Implementation and Testing** | 2007-11-05 A → 2007-11-01 A (-4d) | 2007-12-10 → 2007-12-03 (-7d) | 26d → 23d | 51% → 90% | 41d → 29d |  |  |
| 16 | Cancelling selection gives error messages in Mozilla and no response in IE (#7451) | 2007-11-05 → 2007-11-01 A (-4d) | 2007-11-13 → 2007-11-06 (-7d) | 7d → 4d | 0% → 50% | 58.25d → 48d |  |  |
| 17 | Remove link for search results (#10818) | 2007-11-14 A → 2007-11-12 A (-2d) | 2007-11-22 → 2007-11-15 A (-7d) | 1.4w → 0.8w | 75% → 100% | 53d → none |  | was named Crash - when trying to select search result page crashes (#6389) |
| 18 | Search does not work for rat anatomy (#7790) | 2007-11-23 A → 2007-11-16 A (-7d) | 2007-11-27 A → 2007-11-20 A (-7d) |  |  |  |  |  |
| 19 | Search does not work for zebrafish vocabularies (#7387) | 2007-11-28 A → 2007-11-21 A (-7d) | 2007-11-30 A → 2007-11-23 A (-7d) |  |  |  |  |  |
| 20 | Alternate search terms are only shown when matches in the existing trees are found (#9277) | 2007-12-03 A → 2007-11-26 A (-7d) | 2007-12-03 A → 2007-11-26 A (-7d) |  |  |  |  |  |
| 21 | Tree doesn't jump to the highlighted term after performing search (#9274) | 2007-12-04 A → 2007-11-27 A (-7d) | 2007-12-10 → 2007-12-03 A (-7d) |  | 20% → 100% | 3.4d → none |  |  |
| 22 | **caMOD - caELMIR Integration Tasks** | 2007-12-11 A → 2007-12-04 A (-7d) | 2008-01-02 → 2007-12-24 (-9d) | 17d → 15d | 20% → 50% | 0d → 14d |  |  |
| 23 | Implement Therapy Screen for caELMIR data (#8816) | 2007-12-11 A → 2007-12-04 A (-7d) | 2007-12-25 → 2007-12-17 (-8d) | 2.2w → 2w | 20% → 50% | 1.2d → 16.5d |  |  |
| 24 | Connecting to caELMIR to return results (#8816) | 2007-12-26 A → 2007-12-18 A (-8d) | 2008-01-02 → 2007-12-24 (-9d) | 1.2w → 1w | 20% → 50% | 0d → 14d |  |  |
| 26 | Change publication table on cell line and therapy search pages (#10683) | 2008-01-28 → 2007-12-03 A (-56d) | 2008-01-28 → 2007-12-05 A (-54d) | 1d? → 3d? | 0% → 100% | 6d → none | 39 → none | was named Update gForge with application tar file; constraint none → finish no earlier than 2007-12-05; resources Sima → none |
| 30 | **Testing** | 2007-10-22 → 2007-10-15 (-7d) | 2008-02-05 → 2008-01-11 (-25d) | 77d? → 65d |  |  |  |  |
| 31 | Deploy iteration on DEV Server | 2008-01-03 → 2007-12-06 (-28d) | 2008-01-04 → 2007-12-07 (-28d) |  |  | 0d → 3d | 24 → 25 |  |
| 32 | Test on DEV tier | 2008-01-07 → 2007-12-10 (-28d) | 2008-01-11 → 2007-12-14 (-28d) |  |  | 0d → 3d |  |  |
| 33 | **Transition Phase** | 2007-10-22 → 2007-10-15 (-7d) | 2008-02-05 → 2008-01-11 (-25d) | 77d? → 65d |  |  |  |  |
| 34 | **QA** | 2007-10-22 → 2007-10-15 (-7d) | 2007-11-02 → 2007-10-26 (-7d) |  |  | 67d → 55d |  |  |
| 35 | Finalize Testplan | 2007-10-22 → 2007-10-15 (-7d) | 2007-10-26 → 2007-10-19 (-7d) |  |  | 67d → 55d |  |  |
| 36 | Finalize Test Cases | 2007-10-29 → 2007-10-22 (-7d) | 2007-11-02 → 2007-10-26 (-7d) |  |  | 67d → 55d |  |  |
| 37 | **Deploy** | 2008-01-14 → 2007-12-17 (-28d) | 2008-02-05 → 2008-01-11 (-25d) | 17d? → 20d |  |  |  |  |
| 38 | **QA Server Deployment** | 2008-01-14 → 2007-12-17 (-28d) | 2008-01-25 → 2007-12-28 (-28d) |  |  | 0d → 3d |  |  |
| 39 | QA Testing | 2008-01-14 → 2007-12-17 (-28d) | 2008-01-25 → 2007-12-28 (-28d) |  |  | 0d → 3d |  |  |
| 40 | **Staging Server Deployment** | 2008-01-28 → 2008-01-03 (-25d) | 2008-02-01 → 2008-01-09 (-23d) |  |  |  |  |  |
| 41 | Staging Testing | 2008-01-28 → 2008-01-03 (-25d) | 2008-02-01 → 2008-01-09 (-23d) |  |  |  |  |  |
| 42 | **Production Server Deployment** | 2008-02-04 → 2008-01-10 (-25d) | 2008-02-05 → 2008-01-11 (-25d) |  |  |  |  |  |
| 43 | Production Verification | 2008-02-04 → 2008-01-10 (-25d) | 2008-02-05 → 2008-01-11 (-25d) |  |  |  |  |  |
| 44 | caMOD 2.4 - Closeout | 2008-02-05 → 2008-01-11 (-25d) | 2008-02-05 → 2008-01-11 (-25d) |  |  |  |  |  |

## Version 11 (saved 2007-12-18)

Note of the change: Updated percentages for project

Last finish 2008-01-11 → 2008-02-05 (+25d). Complete tasks 11 → 14.

Added:

| ID | Task | Duration | Start | Finish |
| --- | --- | --- | --- | --- |
| 35 | **Configuration and Change Management** | 1d? | 2008-01-28 | 2008-01-28 |

Removed: 25 caMOD; 27 Add summary table to newly designed publication search page (#10679)

Changed:

| ID | Task | Start | Finish | Duration | Complete | Total float | Predecessors | Other |
| --- | --- | --- | --- | --- | --- | --- | --- | --- |
| 1 | **caMOD 2.4 Release** |  | 2008-01-11 → 2008-02-05 (+25d) | 76d? → 93d? | 47% → 59% |  |  |  |
| 2 | **Inception Phase** | 2007-09-28 A | 2007-10-12 → 2007-10-19 A (+7d) | 11d → 16d | 0% → 100% | 54d → none |  |  |
| 3 | Use Case and Design Doc (caBIG template) | 2007-09-28 A | 2007-10-11 A |  | 0% → 100% | 57d → none |  |  |
| 4 | Review use cases / design with the "Review Board" | 2007-10-12 A | 2007-10-12 → 2007-10-19 A (+7d) | 1d → 6d | 0% → 100% | 58d → none |  |  |
| 5 | Milestone: Completed Design document | 2007-10-12 → 2007-10-19 A (+7d) | 2007-10-12 → 2007-10-19 A (+7d) |  | 0% → 100% | 58d → none |  |  |
| 6 | **Elaboration Phase** | 2007-10-15 A → 2007-10-22 A (+7d) | 2008-01-03 A | 59d → 54d | 89% → 100% | 6d → none |  |  |
| 7 | Incorporate changes to the Object Model | 2007-10-15 A → 2007-10-22 A (+7d) | 2007-10-22 A → 2007-10-24 A (+2d) |  |  |  |  |  |
| 8 | Make code changes due to Object Model changes | 2007-10-23 A → 2007-10-25 A (+2d) | 2007-10-29 A → 2007-10-31 A (+2d) |  |  |  |  |  |
| 9 | Milestone: Soft Freeze Object Model | 2007-10-30 A → 2007-11-01 A (+2d) | 2007-10-31 A → 2007-11-02 A (+2d) |  |  |  |  |  |
| 10 | Round Trip, Import XMI into EA | 2007-11-01 A → 2007-11-05 A (+4d) | 2007-11-02 A → 2007-11-06 A (+4d) |  |  |  |  |  |
| 11 | Create valute domains for caDSR |  | 2008-01-03 A | 10d → 18d | 75% → 100% | 6d → none |  | was named screen models |
| 12 | Milestone: Model Registered in CADSR | 2007-09-28 A | 2007-09-28 A |  | 0% → 100% | 58d → none |  |  |
| 13 | **iteration 1:** | 2007-10-15 A → 2007-10-22 A (+7d) | 2008-01-11 → 2008-02-05 (+25d) | 65d? → 77d? | 42% → 34% |  |  |  |
| 14 | **EVSTree Application-side work** | 2007-11-01 A → 2007-11-05 A (+4d) | 2007-12-03 → 2007-12-10 (+7d) | 23d → 26d | 90% → 71% | 29d → 41d |  |  |
| 15 | **Implementation and Testing** | 2007-11-01 A → 2007-11-05 A (+4d) | 2007-12-03 → 2007-12-10 (+7d) | 23d → 26d | 90% → 71% | 29d → 41d |  |  |
| 16 | Search does not work for Staining vocabulary (#11022) | 2007-11-01 A → 2007-11-05 (+4d) | 2007-11-06 → 2007-11-13 (+7d) | 4d → 7d | 50% → 0% | 48d → 60d |  | was named Cancelling selection gives error messages in Mozilla and no response in IE (#7451) |
| 17 | Remove link for search results (#10818) | 2007-11-12 A → 2007-11-14 A (+2d) | 2007-11-15 A → 2007-11-22 A (+7d) | 0.8w → 1.4w |  |  |  |  |
| 18 | Search does not work for rat anatomy (#7790) | 2007-11-16 A → 2007-11-23 A (+7d) | 2007-11-20 A → 2007-11-27 A (+7d) |  |  |  |  |  |
| 19 | Search does not work for zebrafish vocabularies (#7387) | 2007-11-21 A → 2007-11-28 A (+7d) | 2007-11-23 A → 2007-11-30 A (+7d) |  |  |  |  |  |
| 20 | Alternate search terms are only shown when matches in the existing trees are found (#9277) | 2007-11-26 A → 2007-12-03 A (+7d) | 2007-11-26 A → 2007-12-03 A (+7d) |  |  |  |  |  |
| 21 | Tree doesn't jump to the highlighted term after performing search (#9274) | 2007-11-27 A → 2007-12-04 A (+7d) | 2007-12-03 A → 2007-12-10 (+7d) |  | 100% → 90% | none → 32.2d |  |  |
| 22 | **caMOD - caELMIR Integration Tasks** | 2007-12-04 A → 2007-12-11 A (+7d) | 2007-12-24 → 2008-01-02 (+9d) | 15d → 17d | 50% → 48% | 14d → 24d |  |  |
| 23 | Implement Therapy Screen for caELMIR data (#8816) | 2007-12-04 A → 2007-12-11 A (+7d) | 2007-12-17 → 2007-12-25 (+8d) | 2w → 2.2w | 50% → 20% | 16.5d → 1.2d |  |  |
| 24 | Connecting to caELMIR to return results (#8816) | 2007-12-18 A → 2007-12-26 A (+8d) | 2007-12-24 → 2008-01-02 A (+9d) | 1w → 1.2w | 50% → 100% | 14d → none |  |  |
| 25 | **Testing** | 2007-10-15 → 2007-10-22 (+7d) | 2008-01-11 → 2008-02-05 (+25d) | 65d → 77d? |  |  |  |  |
| 26 | Deploy iteration on DEV Server | 2007-12-06 → 2008-01-03 (+28d) | 2007-12-07 → 2008-01-04 (+28d) |  |  | 3d → 0d | caMOD → 24 |  |
| 27 | Test on DEV tier | 2007-12-10 → 2008-01-07 (+28d) | 2007-12-14 → 2008-01-11 (+28d) |  |  | 3d → 0d |  |  |
| 28 | **Transition Phase** | 2007-10-15 → 2007-10-22 (+7d) | 2008-01-11 → 2008-02-05 (+25d) | 65d → 77d? |  |  |  |  |
| 29 | **QA** | 2007-10-15 → 2007-10-22 (+7d) | 2007-10-26 → 2007-11-02 (+7d) |  |  | 55d → 67d |  |  |
| 30 | Finalize Testplan | 2007-10-15 → 2007-10-22 (+7d) | 2007-10-19 → 2007-10-26 (+7d) |  |  | 55d → 67d |  |  |
| 31 | Finalize Test Cases | 2007-10-22 → 2007-10-29 (+7d) | 2007-10-26 → 2007-11-02 (+7d) |  |  | 55d → 67d |  |  |
| 32 | **Deploy** | 2007-12-17 → 2008-01-14 (+28d) | 2008-01-11 → 2008-02-05 (+25d) | 20d → 17d? |  |  |  |  |
| 33 | **QA Server Deployment** | 2007-12-17 → 2008-01-14 (+28d) | 2007-12-28 → 2008-01-25 (+28d) |  |  | 3d → 0d |  |  |
| 34 | QA Testing | 2007-12-17 → 2008-01-14 (+28d) | 2007-12-28 → 2008-01-25 (+28d) |  |  | 3d → 0d |  |  |
| 36 | Update gForge with application tar file | 2007-12-03 A → 2008-01-28 (+56d) | 2007-12-05 A → 2008-01-28 (+54d) | 3d? → 1d? | 100% → 0% | none → 6d | none → 34 | was named Change publication table on cell line and therapy search pages (#10683); constraint finish no earlier than 2007-12-05 → none; resources none → Sima |
| 37 | **Staging Server Deployment** | 2008-01-03 → 2008-01-28 (+25d) | 2008-01-09 → 2008-02-01 (+23d) |  |  |  |  |  |
| 38 | Staging Testing | 2008-01-03 → 2008-01-28 (+25d) | 2008-01-09 → 2008-02-01 (+23d) |  |  |  |  |  |
| 39 | **Production Server Deployment** | 2008-01-10 → 2008-02-04 (+25d) | 2008-01-11 → 2008-02-05 (+25d) |  |  |  |  |  |
| 40 | Production Verification | 2008-01-10 → 2008-02-04 (+25d) | 2008-01-11 → 2008-02-05 (+25d) |  |  |  |  |  |
| 41 | caMOD 2.4 - Closeout | 2008-01-11 → 2008-02-05 (+25d) | 2008-01-11 → 2008-02-05 (+25d) |  |  |  |  |  |

## Version 12 (saved 2008-01-08)

Note of the change: Updated task percentages

Last finish stays 2008-02-05. Complete tasks 14 → 18.

Changed:

| ID | Task | Start | Finish | Complete | Total float |
| --- | --- | --- | --- | --- | --- |
| 1 | **caMOD 2.4 Release** |  |  | 59% → 73% |  |
| 13 | **iteration 1:** |  |  | 34% → 58% |  |
| 14 | **EVSTree Application-side work** |  | 2007-12-10 A | 71% → 100% | 41d → none |
| 15 | **Implementation and Testing** |  | 2007-12-10 A | 71% → 100% | 41d → none |
| 16 | Search does not work for Staining vocabulary (#11022) | 2007-11-05 A | 2007-11-13 A | 0% → 100% | 60d → none |
| 21 | Tree doesn't jump to the highlighted term after performing search (#9274) |  | 2007-12-10 A | 90% → 100% | 32.2d → none |
| 22 | **caMOD - caELMIR Integration Tasks** |  | 2008-01-02 A | 48% → 100% | 24d → none |
| 23 | Implement Therapy Screen for caELMIR data (#8816) |  | 2007-12-25 A | 20% → 100% | 1.2d → none |
| 25 | **Testing** | 2007-10-22 A |  | 0% → 6% |  |
| 26 | Deploy iteration on DEV Server | 2008-01-03 A | 2008-01-04 A | 0% → 100% | 0d → none |
