# camod Release 2.5.1

How a schedule from MS Project changed from version to version. A marks actual dates.

## Version 1 (saved 2009-01-14)

Note of the change: 2.5.1 schedule draft.

| ID | WBS | Task | Duration | Start | Finish | Predecessors | Total float | Constraint |
| --- | --- | --- | --- | --- | --- | --- | --- | --- |
| 1 | 1 | **caMOD 2.5.1 Release** | 144d | 2009-01-05 | 2009-07-23 |  | 0d |  |
| 2 | 1.1 | **Inception Phase** | 10d | 2009-01-05 | 2009-01-16 |  | 0d |  |
| 3 |  | Scope 2.5.1 Release | 6d | 2009-01-05 | 2009-01-12 |  | 0d | start no earlier than 2009-01-05 |
| 4 |  | Schedule 2.5.1 Release | 4d | 2009-01-13 | 2009-01-16 | 3 | 0d | start no earlier than 2009-01-13 |
| 5 |  | Milestone: Inception Completed | 0d | 2009-01-16 | 2009-01-16 | 4 | 1d |  |
| 6 | 1.2 | **Elaboration Phase** | 10d | 2009-01-20 | 2009-02-02 | 5 | 0d |  |
| 7 |  | Use Case and Design Doc (caBIG template) | 7d | 2009-01-20 | 2009-01-28 |  | 0d | finish no earlier than 2009-01-22 |
| 8 |  | Review use cases / design with the "Review Board" | 3d | 2009-01-29 | 2009-02-02 | 7 | 0d | finish no earlier than 2009-01-27 |
| 9 |  | Milestone: Elaboration Completed | 0d | 2009-02-02 | 2009-02-02 | 7, 8 | 0d |  |
| 10 | 1.3 | **Construction Phase** | 91d | 2009-02-03 | 2009-06-09 | 6 | 0d |  |
| 11 | 1.3.1 | **Iteration 1** | 27d | 2009-02-03 | 2009-03-11 |  | 0d |  |
| 12 | 1.3.1.1 | **caMOD - Cancer Models Database - Feature Requests** | 22d | 2009-02-03 | 2009-03-04 |  | 0d |  |
| 13 |  | 4772-Make caMod available in the grid using newest technology | 10d | 2009-02-03 | 2009-02-18 |  | 0d |  |
| 14 |  | 17325-Upgrade caMOD to use caBIO 4.0 to get data | 10d | 2009-02-19 | 2009-03-04 | 13 | 0d |  |
| 15 | 1.3.1.2 | **EVS Tree** | 5d | 2009-03-05 | 2009-03-11 |  | 0d |  |
| 16 |  | 10957-Implement connection to EVS 4.x (Lexbig Vocabuarly System / Architecture) | 5d | 2009-03-05 | 2009-03-11 | 14 | 0d |  |
| 17 |  | Milestone: Iteration 1 Completed | 0d | 2009-03-11 | 2009-03-11 | 12, 15 | 0d |  |
| 18 | 1.3.2 | **Iteration 2** | 46d | 2009-03-12 | 2009-05-14 | 11 | 0d |  |
| 19 | 1.3.2.1 | **caMOD - Cancer Models Database - Feature Requests** | 1d | 2009-03-12 | 2009-03-12 |  | 45d |  |
| 20 |  | 17040-Make PMID field on advanced search page userfriendlier by adding a link to PubMed and trim functions | 1d | 2009-03-12 | 2009-03-12 |  | 45d |  |
| 21 | 1.3.2.2 | **caMOD - Cancer Models Database - Bugs** | 46d | 2009-03-12 | 2009-05-14 |  | 0d |  |
| 22 |  | 18754-MTB data not displayed - causing crash | 5d | 2009-03-12 | 2009-03-18 |  | 0d |  |
| 23 |  | 18717-Sort therapies in the order they are entered | 3d | 2009-03-19 | 2009-03-23 | 22 | 0d |  |
| 24 |  | 18694-Correct the spelling of Motility on Therapy/Biological Process page | 1d | 2009-03-24 | 2009-03-24 | 23 | 0d |  |
| 25 |  | 18267-No other zebrafish diagnosis shown on search page | 1d | 2009-03-25 | 2009-03-25 | 24 | 0d |  |
| 26 |  | 17993-autocomplete Servlet.service() throws java.lang.OutOfMemoryError: Java heap space | 5d | 2009-03-26 | 2009-04-01 | 25 | 0d |  |
| 27 |  | 17320-Make sure all filed sizes in database are validated correctly in validation.xml | 5d | 2009-04-02 | 2009-04-08 | 26 | 0d |  |
| 28 |  | 12483-why does &amp;amp;amp;amp;quot;unpublished&amp;amp;amp;amp;quot; entry not show up on publication search page | 1d | 2009-04-09 | 2009-04-09 | 27 | 0d |  |
| 29 |  | 11623-Construct sequence field on genetic description pages is independent of image submission | 2d | 2009-04-10 | 2009-04-13 | 28 | 0d |  |
| 30 |  | 8400-Duplication does not work for some fields | 10d | 2009-04-14 | 2009-04-27 | 29 | 0d |  |
| 31 |  | 5235-amount of cells on Transplantation needs to accept 10^6 instead of a number (validation) | 1d | 2009-04-28 | 2009-04-28 | 30 | 0d |  |
| 32 |  | 5172-Do not delete EnvironmentalFactor objects - instead reuse and leave in DB | 5d | 2009-04-29 | 2009-05-14 | 31 | 0d |  |
| 33 | 1.3.3 | **Testing** | 18d | 2009-05-15 | 2009-06-09 | 11, 18 | 0d |  |
| 34 |  | Update test cases | 5d | 2009-05-15 | 2009-05-21 | 21 | 0d |  |
| 35 |  | Deploy iteration on DEV Server | 2d | 2009-05-22 | 2009-05-26 | 34 | 0d |  |
| 36 |  | Test on DEV tier | 10d | 2009-05-27 | 2009-06-09 | 35 | 0d |  |
| 37 |  | Milestone: Iteration 2 Completed | 0d | 2009-06-09 | 2009-06-09 | 33 | 0d |  |
| 38 | 1.4 | **Transition Phase** | 32d | 2009-06-10 | 2009-07-23 | 37 | 0d |  |
| 39 | 1.4.1 | **QA** | 10d | 2009-06-10 | 2009-06-23 |  | 0d |  |
| 40 |  | Finalize Testplan | 5d | 2009-06-10 | 2009-06-16 |  | 0d |  |
| 41 |  | Finalize Test Cases | 5d | 2009-06-17 | 2009-06-23 | 40 | 0d |  |
| 42 | 1.4.2 | **Deploy** | 22d | 2009-06-24 | 2009-07-23 |  | 0d |  |
| 43 | 1.4.2.1 | **QA Server Deployment** | 9d | 2009-06-24 | 2009-07-06 |  | 0d |  |
| 44 |  | QA Testing | 5d | 2009-06-24 | 2009-06-30 | 39 | 0d |  |
| 45 |  | App scan on QA | 4d | 2009-07-01 | 2009-07-06 | 44 | 0d |  |
| 46 | 1.4.2.2 | **Staging Server Deployment** | 9d | 2009-07-07 | 2009-07-17 |  | 0d |  |
| 47 |  | Stage Testing | 5d | 2009-07-07 | 2009-07-13 | 45 | 0d |  |
| 48 |  | App scan on QA | 4d | 2009-07-14 | 2009-07-17 | 47 | 0d |  |
| 49 | 1.4.2.3 | **Production Server Deployment** | 4d | 2009-07-20 | 2009-07-23 |  | 0d |  |
| 50 |  | Production server deployment | 2d | 2009-07-20 | 2009-07-21 | 48 | 0d |  |
| 51 |  | Production Verification | 2d | 2009-07-22 | 2009-07-23 | 50 | 0d |  |
| 52 | 1.4.3 | **Documentation** | 5d | 2009-06-24 | 2009-06-30 |  | 17d |  |
| 53 |  | Documentation Edit by Documentation Team | 5d | 2009-06-24 | 2009-06-30 | 39 | 17d |  |
| 54 | 1.4.4 | **Content Page Update** | 3d | 2009-07-20 | 2009-07-22 |  | 1d |  |
| 55 |  | zope site update | 3d | 2009-07-20 | 2009-07-22 | 46 | 1d |  |
| 56 |  | gForge download site update | 3d | 2009-07-20 | 2009-07-22 | 46 | 1d |  |
| 57 |  | caMOD 2.5.1 - Closeout | 0d | 2009-07-23 | 2009-07-23 | 38 | 0d |  |

## Version 2 (saved 2009-01-14)

Note of the change: schedule update for 2.5.1 schedule.

Last finish 2009-07-23 → 2009-07-29 (+6d).

Added:

| ID | Task | Duration | Start | Finish | Predecessors |
| --- | --- | --- | --- | --- | --- |
| 37 | App scan on DEV | 4d | 2009-06-10 | 2009-06-15 | 36 |

Changed:

| ID | Task | Start | Finish | Duration |
| --- | --- | --- | --- | --- |
| 1 | **caMOD 2.5.1 Release** |  | 2009-07-23 → 2009-07-29 (+6d) | 144d → 148d |
| 10 | **Construction Phase** |  | 2009-06-09 → 2009-06-15 (+6d) | 91d → 95d |
| 33 | **Testing** |  | 2009-06-09 → 2009-06-15 (+6d) | 18d → 22d |
| 38 | Milestone: Iteration 2 Completed | 2009-06-09 → 2009-06-15 (+6d) | 2009-06-09 → 2009-06-15 (+6d) |  |
| 39 | **Transition Phase** | 2009-06-10 → 2009-06-16 (+6d) | 2009-07-23 → 2009-07-29 (+6d) |  |
| 40 | **QA** | 2009-06-10 → 2009-06-16 (+6d) | 2009-06-23 → 2009-06-29 (+6d) |  |
| 41 | Finalize Testplan | 2009-06-10 → 2009-06-16 (+6d) | 2009-06-16 → 2009-06-22 (+6d) |  |
| 42 | Finalize Test Cases | 2009-06-17 → 2009-06-23 (+6d) | 2009-06-23 → 2009-06-29 (+6d) |  |
| 43 | **Deploy** | 2009-06-24 → 2009-06-30 (+6d) | 2009-07-23 → 2009-07-29 (+6d) |  |
| 44 | **QA Server Deployment** | 2009-06-24 → 2009-06-30 (+6d) | 2009-07-06 → 2009-07-10 (+4d) |  |
| 45 | QA Testing | 2009-06-24 → 2009-06-30 (+6d) | 2009-06-30 → 2009-07-06 (+6d) |  |
| 46 | App scan on QA | 2009-07-01 → 2009-07-07 (+6d) | 2009-07-06 → 2009-07-10 (+4d) |  |
| 47 | **Staging Server Deployment** | 2009-07-07 → 2009-07-13 (+6d) | 2009-07-17 → 2009-07-23 (+6d) |  |
| 48 | Stage Testing | 2009-07-07 → 2009-07-13 (+6d) | 2009-07-13 → 2009-07-17 (+4d) |  |
| 49 | App scan on QA | 2009-07-14 → 2009-07-20 (+6d) | 2009-07-17 → 2009-07-23 (+6d) |  |
| 50 | **Production Server Deployment** | 2009-07-20 → 2009-07-24 (+4d) | 2009-07-23 → 2009-07-29 (+6d) |  |
| 51 | Production server deployment | 2009-07-20 → 2009-07-24 (+4d) | 2009-07-21 → 2009-07-27 (+6d) |  |
| 52 | Production Verification | 2009-07-22 → 2009-07-28 (+6d) | 2009-07-23 → 2009-07-29 (+6d) |  |
| 53 | **Documentation** | 2009-06-24 → 2009-06-30 (+6d) | 2009-06-30 → 2009-07-06 (+6d) |  |
| 54 | Documentation Edit by Documentation Team | 2009-06-24 → 2009-06-30 (+6d) | 2009-06-30 → 2009-07-06 (+6d) |  |
| 55 | **Content Page Update** | 2009-07-20 → 2009-07-24 (+4d) | 2009-07-22 → 2009-07-28 (+6d) |  |
| 56 | zope site update | 2009-07-20 → 2009-07-24 (+4d) | 2009-07-22 → 2009-07-28 (+6d) |  |
| 57 | gForge download site update | 2009-07-20 → 2009-07-24 (+4d) | 2009-07-22 → 2009-07-28 (+6d) |  |
| 58 | caMOD 2.5.1 - Closeout | 2009-07-23 → 2009-07-29 (+6d) | 2009-07-23 → 2009-07-29 (+6d) |  |

## Version 3 (saved 2009-01-15)

Note of the change: Modify 2.5.1 release scope.

Last finish 2009-07-29 → 2009-07-10 (-19d).

Added:

| ID | Task | Duration | Start | Finish | Predecessors |
| --- | --- | --- | --- | --- | --- |
| 37 | Milestone: Construction Completed | 0d | 2009-06-02 | 2009-06-02 | 33 |

Removed: 32 5172-Do not delete EnvironmentalFactor objects - instead reuse and leave in DB; 37 App scan on DEV

Changed:

| ID | Task | Start | Finish | Duration | Total float | Predecessors | Other |
| --- | --- | --- | --- | --- | --- | --- | --- |
| 1 | **caMOD 2.5.1 Release** |  | 2009-07-29 → 2009-07-10 (-19d) | 148d → 135d |  |  |  |
| 10 | **Construction Phase** |  | 2009-06-15 → 2009-06-02 (-13d) | 95d → 86d |  |  |  |
| 14 | 17325-Upgrade caMOD to use caBIO 4.1 to get data |  |  |  |  |  | was named 17325-Upgrade caMOD to use caBIO 4.0 to get data |
| 18 | **Iteration 2** |  | 2009-05-14 → 2009-04-28 (-16d) | 46d → 34d |  |  |  |
| 21 | **caMOD - Cancer Models Database - Bugs** |  | 2009-05-14 → 2009-04-28 (-16d) | 46d → 34d |  |  |  |
| 32 | Milestone: Iteration 2 Completed | 2009-06-15 → 2009-04-28 (-48d) | 2009-06-15 → 2009-04-28 (-48d) |  |  | 33 → 19, 21 |  |
| 33 | **Testing** | 2009-05-15 → 2009-04-29 (-16d) | 2009-06-15 → 2009-06-02 (-13d) | 22d → 25d |  |  |  |
| 34 | Update test cases | 2009-05-15 → 2009-04-29 (-16d) | 2009-05-21 → 2009-05-14 (-7d) | 5d → 9d |  |  |  |
| 35 | Deploy iteration on DEV Server | 2009-05-22 → 2009-05-15 (-7d) | 2009-05-26 → 2009-05-18 (-8d) |  |  |  |  |
| 36 | Test on DEV tier | 2009-05-27 → 2009-05-19 (-8d) | 2009-06-09 → 2009-06-02 (-7d) |  |  |  |  |
| 38 | **Transition Phase** | 2009-06-16 → 2009-06-03 (-13d) | 2009-07-29 → 2009-07-10 (-19d) | 32d → 28d |  | 32 → 37 |  |
| 39 | **QA** | 2009-06-16 → 2009-06-03 (-13d) | 2009-06-29 → 2009-06-16 (-13d) |  |  |  |  |
| 40 | Finalize Testplan | 2009-06-16 → 2009-06-03 (-13d) | 2009-06-22 → 2009-06-09 (-13d) |  |  |  |  |
| 41 | Finalize Test Cases | 2009-06-23 → 2009-06-10 (-13d) | 2009-06-29 → 2009-06-16 (-13d) |  |  |  |  |
| 42 | **Deploy** | 2009-06-30 → 2009-06-17 (-13d) | 2009-07-29 → 2009-07-10 (-19d) | 22d → 18d |  |  |  |
| 43 | **QA Server Deployment** | 2009-06-30 → 2009-06-17 (-13d) | 2009-07-10 → 2009-06-23 (-17d) | 9d → 5d |  |  |  |
| 44 | QA Testing | 2009-06-30 → 2009-06-17 (-13d) | 2009-07-06 → 2009-06-23 (-13d) |  |  |  |  |
| 45 | Milestone: QA Testing Completed | 2009-07-07 → 2009-06-23 (-14d) | 2009-07-10 → 2009-06-23 (-17d) | 4d → 0d |  |  | was named App scan on QA; resources Security Team → none |
| 46 | **Staging Server Deployment** | 2009-07-13 → 2009-06-24 (-19d) | 2009-07-23 → 2009-07-06 (-17d) |  |  |  |  |
| 47 | Stage Testing | 2009-07-13 → 2009-06-24 (-19d) | 2009-07-17 → 2009-06-30 (-17d) |  |  |  |  |
| 48 | App scan on QA | 2009-07-20 → 2009-07-01 (-19d) | 2009-07-23 → 2009-07-06 (-17d) |  |  |  |  |
| 49 | **Production Server Deployment** | 2009-07-24 → 2009-07-07 (-17d) | 2009-07-29 → 2009-07-10 (-19d) |  |  |  |  |
| 50 | Production server deployment | 2009-07-24 → 2009-07-07 (-17d) | 2009-07-27 → 2009-07-08 (-19d) |  |  |  |  |
| 51 | Production Verification | 2009-07-28 → 2009-07-09 (-19d) | 2009-07-29 → 2009-07-10 (-19d) |  |  |  |  |
| 52 | **Documentation** | 2009-06-30 → 2009-06-17 (-13d) | 2009-07-06 → 2009-06-23 (-13d) |  | 17d → 13d |  |  |
| 53 | Documentation Edit by Documentation Team | 2009-06-30 → 2009-06-17 (-13d) | 2009-07-06 → 2009-06-23 (-13d) |  | 17d → 13d |  |  |
| 54 | **Content Page Update** | 2009-07-24 → 2009-07-07 (-17d) | 2009-07-28 → 2009-07-09 (-19d) |  |  |  |  |
| 55 | zope site update | 2009-07-24 → 2009-07-07 (-17d) | 2009-07-28 → 2009-07-09 (-19d) |  |  |  |  |
| 56 | gForge download site update | 2009-07-24 → 2009-07-07 (-17d) | 2009-07-28 → 2009-07-09 (-19d) |  |  |  |  |
| 57 | caMOD 2.5.1 - Closeout | 2009-07-29 → 2009-07-10 (-19d) | 2009-07-29 → 2009-07-10 (-19d) |  |  |  |  |

## Version 4 (saved 2009-01-20)

Note of the change: Scope change and schedule change for 2.5.1 to reflect silver review.

Last finish 2009-07-10 → 2009-07-24 (+14d).

Added:

| ID | Task | Duration | Start | Finish | Predecessors | Resources |
| --- | --- | --- | --- | --- | --- | --- |
| 29 | **caMOD - Data and Review** | 23d | 2009-04-28 | 2009-05-28 | 19 |  |
| 30 | 18803-Import new MTB data set | 22d | 2009-04-28 | 2009-05-28 |  | Sima; Ulli; Lalitha |
| 50 | Milestone: QA Testing Completed | 0d | 2009-07-20 | 2009-07-20 | 49, 48 |  |

Removed: 26 17993-autocomplete Servlet.service() throws java.lang.OutOfMemoryError: Java heap space

Changed:

| ID | Task | Start | Finish | Duration | Total float | Predecessors | Other |
| --- | --- | --- | --- | --- | --- | --- | --- |
| 1 | **caMOD 2.5.1 Release** |  | 2009-07-10 → 2009-07-24 (+14d) | 135d → 145d |  |  |  |
| 2 | **Inception Phase** |  | 2009-01-16 → 2009-01-27 (+11d) | 10d → 17d | 0d → 3d |  |  |
| 3 | Scope 2.5.1 Release |  | 2009-01-12 → 2009-01-21 (+9d) | 6d → 12d | 0d → 3d |  |  |
| 4 | Schedule 2.5.1 Release | 2009-01-13 → 2009-01-22 (+9d) | 2009-01-16 → 2009-01-27 (+11d) |  | 0d → 3d |  |  |
| 5 | Milestone: Inception Completed | 2009-01-16 → 2009-01-27 (+11d) | 2009-01-16 → 2009-01-27 (+11d) |  | 1d → 3d |  |  |
| 6 | **Elaboration Phase** | 2009-01-20 → 2009-02-02 (+13d) | 2009-02-02 → 2009-02-13 (+11d) |  |  |  |  |
| 7 | Use Case and Design Doc (caBIG template) | 2009-01-20 → 2009-02-02 (+13d) | 2009-01-28 → 2009-02-10 (+13d) |  |  |  | constraint finish no earlier than 2009-01-22 → start no earlier than 2009-02-02 |
| 8 | Review use cases / design with the "Review Board" | 2009-01-29 → 2009-02-11 (+13d) | 2009-02-02 → 2009-02-13 (+11d) |  |  |  |  |
| 9 | Milestone: Elaboration Completed | 2009-02-02 → 2009-02-13 (+11d) | 2009-02-02 → 2009-02-13 (+11d) |  | 0d → 1d |  |  |
| 10 | **Construction Phase** | 2009-02-03 → 2009-02-17 (+14d) | 2009-06-02 → 2009-07-06 (+34d) | 86d → 100d |  |  |  |
| 11 | **Iteration 1** | 2009-02-03 → 2009-02-17 (+14d) | 2009-03-11 → 2009-03-02 (-9d) | 27d → 10d |  |  |  |
| 12 | **caMOD - Cancer Models Database - Feature Requests** | 2009-02-03 → 2009-02-17 (+14d) | 2009-03-04 → 2009-03-02 (-2d) | 22d → 10d |  |  |  |
| 13 | 4772-Make caMod available in the grid using newest technology | 2009-02-03 → 2009-02-17 (+14d) | 2009-02-18 → 2009-03-02 (+12d) |  |  |  |  |
| 14 | Milestone: Iteration 1 Completed | 2009-03-11 → 2009-03-02 (-9d) | 2009-03-11 → 2009-03-02 (-9d) |  |  | 12, 31 → 12 |  |
| 15 | **Iteration 2** | 2009-03-12 → 2009-03-03 (-9d) | 2009-04-28 → 2009-06-04 (+37d) | 34d → 68d |  |  |  |
| 16 | **caMOD - Cancer Models Database - Feature Requests** | 2009-03-12 → 2009-03-03 (-9d) | 2009-03-12 → 2009-03-17 (+5d) | 1d → 11d | 33d → 0d |  |  |
| 17 | 17040-Make PMID field on advanced search page userfriendlier by adding a link to PubMed and trim functions | 2009-03-12 → 2009-03-03 (-9d) | 2009-03-12 → 2009-03-03 (-9d) |  | 45d → 0d |  |  |
| 18 | 17325-Upgrade caMOD to use caBIO 4.1 to get data | 2009-02-19 → 2009-03-04 (+13d) | 2009-03-04 → 2009-03-17 (+13d) |  |  | 13 → 17 |  |
| 19 | **caMOD - Cancer Models Database - Bugs** | 2009-03-12 → 2009-03-18 (+6d) | 2009-04-28 → 2009-04-27 (-1d) | 34d → 29d |  | none → 16 |  |
| 20 | 18754-MTB data not displayed - causing crash | 2009-03-12 → 2009-03-18 (+6d) | 2009-03-18 → 2009-03-24 (+6d) |  |  |  |  |
| 21 | 18717-Sort therapies in the order they are entered | 2009-03-19 → 2009-03-25 (+6d) | 2009-03-23 → 2009-03-27 (+4d) |  |  |  |  |
| 22 | 18694-Correct the spelling of Motility on Therapy/Biological Process page | 2009-03-24 → 2009-03-30 (+6d) | 2009-03-24 → 2009-03-30 (+6d) |  |  |  |  |
| 23 | 18267-No other zebrafish diagnosis shown on search page | 2009-03-25 → 2009-03-31 (+6d) | 2009-03-25 → 2009-03-31 (+6d) |  |  |  |  |
| 24 | 17320-Make sure all filed sizes in database are validated correctly in validation.xml | 2009-04-02 → 2009-04-01 (-1d) | 2009-04-08 → 2009-04-07 (-1d) |  |  | 17993-autocomplete Servlet.service() throws java.lang.OutOfMemoryError: Java heap space → 23 |  |
| 25 | 12483-why does &amp;amp;amp;amp;quot;unpublished&amp;amp;amp;amp;quot; entry not show up on publication search page | 2009-04-09 → 2009-04-08 (-1d) | 2009-04-09 → 2009-04-08 (-1d) |  |  |  |  |
| 26 | 11623-Construct sequence field on genetic description pages is independent of image submission | 2009-04-10 → 2009-04-09 (-1d) | 2009-04-13 → 2009-04-10 (-3d) |  |  |  |  |
| 27 | 8400-Duplication does not work for some fields | 2009-04-14 → 2009-04-13 (-1d) | 2009-04-27 → 2009-04-24 (-3d) |  |  |  |  |
| 28 | 5235-amount of cells on Transplantation needs to accept 10^6 instead of a number (validation) | 2009-04-28 → 2009-04-27 (-1d) | 2009-04-28 → 2009-04-27 (-1d) |  |  |  |  |
| 31 | **EVS Tree** | 2009-03-05 → 2009-05-29 (+85d) | 2009-03-11 → 2009-06-04 (+85d) |  |  | none → 29 |  |
| 32 | 10957-Implement connection to EVS 4.x (Lexbig Vocabuarly System / Architecture) | 2009-03-05 → 2009-05-29 (+85d) | 2009-03-11 → 2009-06-04 (+85d) |  |  | 18 → none |  |
| 33 | Milestone: Iteration 2 Completed | 2009-04-28 → 2009-06-04 (+37d) | 2009-04-28 → 2009-06-04 (+37d) |  |  | 16, 19 → 16, 31, 19, 29 |  |
| 34 | **Testing** | 2009-04-29 → 2009-06-05 (+37d) | 2009-06-02 → 2009-07-06 (+34d) | 25d → 22d |  |  |  |
| 35 | Update test cases | 2009-04-29 → 2009-06-05 (+37d) | 2009-05-14 → 2009-06-17 (+34d) |  |  |  |  |
| 36 | Deploy iteration on DEV Server | 2009-05-15 → 2009-06-18 (+34d) | 2009-05-18 → 2009-06-19 (+32d) |  |  |  |  |
| 37 | Test on DEV tier | 2009-05-19 → 2009-06-22 (+34d) | 2009-06-02 → 2009-07-06 (+34d) |  |  |  |  |
| 38 | Milestone: Construction Completed | 2009-06-02 → 2009-07-06 (+34d) | 2009-06-02 → 2009-07-06 (+34d) |  | 0d → 14d |  |  |
| 39 | **Transition Phase** | 2009-06-03 → 2009-06-05 (+2d) | 2009-07-10 → 2009-07-24 (+14d) | 28d → 36d |  | 38 → 33 |  |
| 40 | **QA** | 2009-06-03 → 2009-06-05 (+2d) | 2009-06-16 → 2009-06-12 (-4d) | 10d → 6d | 0d → 16d |  |  |
| 41 | Finalize Testplan | 2009-06-03 → 2009-06-05 (+2d) |  | 5d → 3d | 0d → 16d | none → 33 |  |
| 42 | Finalize Test Cases |  | 2009-06-16 → 2009-06-12 (-4d) | 5d → 3d | 0d → 16d |  |  |
| 43 | **Deploy** | 2009-06-17 → 2009-07-07 (+20d) | 2009-07-10 → 2009-07-24 (+14d) | 18d → 14d |  |  |  |
| 44 | **QA Server Deployment** | 2009-06-17 → 2009-07-07 (+20d) | 2009-06-23 → 2009-07-13 (+20d) |  |  | none → 34 |  |
| 45 | QA Testing | 2009-06-17 → 2009-07-07 (+20d) | 2009-06-23 → 2009-07-13 (+20d) |  |  |  |  |
| 46 | Milestone: QA Testing Completed | 2009-06-23 → 2009-07-13 (+20d) | 2009-06-23 → 2009-07-13 (+20d) |  |  |  |  |
| 47 | **Staging Server Deployment** | 2009-06-24 → 2009-07-14 (+20d) | 2009-07-06 → 2009-07-20 (+14d) | 9d → 5d |  |  |  |
| 48 | Stage Testing | 2009-06-24 → 2009-07-14 (+20d) | 2009-06-30 → 2009-07-20 (+20d) |  |  |  |  |
| 49 | App scan on Stage | 2009-07-01 → 2009-07-14 (+13d) | 2009-07-06 → 2009-07-17 (+11d) |  | 0d → 1d | 48 → 46 | was named App scan on QA |
| 51 | **Production Server Deployment** | 2009-07-07 → 2009-07-21 (+14d) | 2009-07-10 → 2009-07-24 (+14d) |  |  |  |  |
| 52 | Production server deployment | 2009-07-07 → 2009-07-21 (+14d) | 2009-07-08 → 2009-07-22 (+14d) |  |  | 49 → 50 |  |
| 53 | Production Verification | 2009-07-09 → 2009-07-23 (+14d) | 2009-07-10 → 2009-07-24 (+14d) |  |  |  |  |
| 54 | **Documentation** | 2009-06-17 → 2009-06-15 (-2d) | 2009-06-23 → 2009-06-19 (-4d) |  | 13d → 25d |  |  |
| 55 | Documentation Edit by Documentation Team | 2009-06-17 → 2009-06-15 (-2d) | 2009-06-23 → 2009-06-19 (-4d) |  | 13d → 25d |  |  |
| 56 | **Content Page Update** | 2009-07-07 → 2009-07-21 (+14d) | 2009-07-09 → 2009-07-23 (+14d) |  |  |  |  |
| 57 | zope site update | 2009-07-07 → 2009-07-21 (+14d) | 2009-07-09 → 2009-07-23 (+14d) |  |  |  |  |
| 58 | gForge download site update | 2009-07-07 → 2009-07-21 (+14d) | 2009-07-09 → 2009-07-23 (+14d) |  |  |  |  |
| 59 | caMOD 2.5.1 - Closeout | 2009-07-10 → 2009-07-24 (+14d) | 2009-07-10 → 2009-07-24 (+14d) |  |  |  |  |

## Version 5 (saved 2009-01-22)

Note of the change: 2.5.1 schedule update

Last finish 2009-07-24 → 2009-06-16 (-38d).

Added:

| ID | Task | Duration | Start | Finish | Predecessors | Resources |
| --- | --- | --- | --- | --- | --- | --- |
| 29 | 18803-MTB data set deployment | 5d | 2009-04-14 | 2009-04-20 | 19 | Sima |

Removed: 27 8400-Duplication does not work for some fields

Changed:

| ID | Task | Start | Finish | Duration | Total float | Predecessors | Other |
| --- | --- | --- | --- | --- | --- | --- | --- |
| 1 | **caMOD 2.5.1 Release** |  | 2009-07-24 → 2009-06-16 (-38d) | 145d → 117d |  |  |  |
| 10 | **Construction Phase** |  | 2009-07-06 → 2009-05-27 (-40d) | 100d → 72d |  |  |  |
| 15 | **Iteration 2** |  | 2009-06-04 → 2009-04-27 (-38d) | 68d → 40d |  |  |  |
| 19 | **caMOD - Cancer Models Database - Bugs** |  | 2009-04-27 → 2009-04-13 (-14d) | 29d → 19d |  |  |  |
| 27 | 5235-amount of cells on Transplantation needs to accept 10^6 instead of a number (validation) | 2009-04-27 → 2009-04-13 (-14d) | 2009-04-27 → 2009-04-13 (-14d) |  |  | 8400-Duplication does not work for some fields → 26 |  |
| 28 | **caMOD - Data and Review** | 2009-04-28 → 2009-03-03 (-56d) | 2009-05-28 → 2009-04-20 (-38d) | 23d → 35d |  | 19 → none |  |
| 30 | 18803-Import new MTB data set | 2009-04-28 → 2009-03-03 (-56d) | 2009-05-28 → 2009-04-16 (-42d) | 22d → 33d | 0d → 2d |  | resources Sima; Ulli; Lalitha → Ulli; Lalitha |
| 31 | **EVS Tree** | 2009-05-29 → 2009-04-21 (-38d) | 2009-06-04 → 2009-04-27 (-38d) |  |  |  |  |
| 32 | 10957-Implement connection to EVS 4.x (Lexbig Vocabuarly System / Architecture) | 2009-05-29 → 2009-04-21 (-38d) | 2009-06-04 → 2009-04-27 (-38d) |  |  |  |  |
| 33 | Milestone: Iteration 2 Completed | 2009-06-04 → 2009-04-27 (-38d) | 2009-06-04 → 2009-04-27 (-38d) |  |  |  |  |
| 34 | **Testing** | 2009-06-05 → 2009-04-28 (-38d) | 2009-07-06 → 2009-05-27 (-40d) |  |  |  |  |
| 35 | Update test cases | 2009-06-05 → 2009-04-28 (-38d) | 2009-06-17 → 2009-05-08 (-40d) |  |  |  |  |
| 36 | Deploy iteration on DEV Server | 2009-06-18 → 2009-05-11 (-38d) | 2009-06-19 → 2009-05-12 (-38d) |  |  |  |  |
| 37 | Test on DEV tier | 2009-06-22 → 2009-05-13 (-40d) | 2009-07-06 → 2009-05-27 (-40d) |  |  |  |  |
| 38 | Milestone: Construction Completed | 2009-07-06 → 2009-05-27 (-40d) | 2009-07-06 → 2009-05-27 (-40d) |  |  |  |  |
| 39 | **Transition Phase** | 2009-06-05 → 2009-04-28 (-38d) | 2009-07-24 → 2009-06-16 (-38d) |  |  |  |  |
| 40 | **QA** | 2009-06-05 → 2009-04-28 (-38d) | 2009-06-12 → 2009-05-05 (-38d) |  |  |  |  |
| 41 | Finalize Testplan | 2009-06-05 → 2009-04-28 (-38d) | 2009-06-09 → 2009-04-30 (-40d) |  |  |  |  |
| 42 | Finalize Test Cases | 2009-06-10 → 2009-05-01 (-40d) | 2009-06-12 → 2009-05-05 (-38d) |  |  |  |  |
| 43 | **Deploy** | 2009-07-07 → 2009-05-28 (-40d) | 2009-07-24 → 2009-06-16 (-38d) |  |  |  |  |
| 44 | **QA Server Deployment** | 2009-07-07 → 2009-05-28 (-40d) | 2009-07-13 → 2009-06-03 (-40d) |  |  |  |  |
| 45 | QA Testing | 2009-07-07 → 2009-05-28 (-40d) | 2009-07-13 → 2009-06-03 (-40d) |  |  |  |  |
| 46 | Milestone: QA Testing Completed | 2009-07-13 → 2009-06-03 (-40d) | 2009-07-13 → 2009-06-03 (-40d) |  |  |  |  |
| 47 | **Staging Server Deployment** | 2009-07-14 → 2009-06-04 (-40d) | 2009-07-20 → 2009-06-10 (-40d) |  |  |  |  |
| 48 | Stage Testing | 2009-07-14 → 2009-06-04 (-40d) | 2009-07-20 → 2009-06-10 (-40d) |  |  |  |  |
| 49 | App scan on Stage | 2009-07-14 → 2009-06-04 (-40d) | 2009-07-17 → 2009-06-09 (-38d) |  |  |  |  |
| 50 | Milestone: QA Testing Completed | 2009-07-20 → 2009-06-10 (-40d) | 2009-07-20 → 2009-06-10 (-40d) |  |  |  |  |
| 51 | **Production Server Deployment** | 2009-07-21 → 2009-06-11 (-40d) | 2009-07-24 → 2009-06-16 (-38d) |  |  |  |  |
| 52 | Production server deployment | 2009-07-21 → 2009-06-11 (-40d) | 2009-07-22 → 2009-06-12 (-40d) |  |  |  |  |
| 53 | Production Verification | 2009-07-23 → 2009-06-15 (-38d) | 2009-07-24 → 2009-06-16 (-38d) |  |  |  |  |
| 54 | **Documentation** | 2009-06-15 → 2009-05-06 (-40d) | 2009-06-19 → 2009-05-12 (-38d) |  |  |  |  |
| 55 | Documentation Edit by Documentation Team | 2009-06-15 → 2009-05-06 (-40d) | 2009-06-19 → 2009-05-12 (-38d) |  |  |  |  |
| 56 | **Content Page Update** | 2009-07-21 → 2009-06-11 (-40d) | 2009-07-23 → 2009-06-15 (-38d) |  |  |  |  |
| 57 | zope site update | 2009-07-21 → 2009-06-11 (-40d) | 2009-07-23 → 2009-06-15 (-38d) |  |  |  |  |
| 58 | gForge download site update | 2009-07-21 → 2009-06-11 (-40d) | 2009-07-23 → 2009-06-15 (-38d) |  |  |  |  |
| 59 | caMOD 2.5.1 - Closeout | 2009-07-24 → 2009-06-16 (-38d) | 2009-07-24 → 2009-06-16 (-38d) |  |  |  |  |

## Version 6 (saved 2009-01-23)

Note of the change: 2.5.1 schedule updated with change in dependencies.

Last finish stays 2009-06-16.

Changed:

| ID | Task | Finish | Duration | Total float | Predecessors | Other |
| --- | --- | --- | --- | --- | --- | --- |
| 35 | Update test cases |  |  |  | 19 → 19, 30 |  |
| 49 | App scan on Stage | 2009-06-09 → 2009-06-10 (+1d) | 4d → 5d | 1d → 0d |  |  |
| 50 | Milestone: Stage Testing Completed |  |  |  |  | was named Milestone: QA Testing Completed |

## Version 7 (saved 2009-02-10)

Note of the change: Update Status in 2.5.1 schedule

Last finish stays 2009-06-16. Complete tasks 0 → 3.

Changed:

| ID | Task | Start | Finish | Complete | Total float |
| --- | --- | --- | --- | --- | --- |
| 1 | **caMOD 2.5.1 Release** | 2009-01-05 A |  | 0% → 14% |  |
| 2 | **Inception Phase** | 2009-01-05 A | 2009-01-27 A | 0% → 100% | 3d → none |
| 3 | Scope 2.5.1 Release | 2009-01-05 A | 2009-01-21 A | 0% → 100% | 3d → none |
| 4 | Schedule 2.5.1 Release | 2009-01-22 A | 2009-01-27 A | 0% → 100% | 3d → none |
| 5 | Milestone: Inception Completed | 2009-01-27 A | 2009-01-27 A | 0% → 100% | 3d → none |
| 10 | **Construction Phase** | 2009-02-17 A |  | 0% → 7% | 0d → 14d |
| 11 | **Iteration 1** | 2009-02-17 A |  | 0% → 75% |  |
| 12 | **caMOD - Cancer Models Database - Feature Requests** | 2009-02-17 A |  | 0% → 75% |  |
| 13 | 4772-Make caMod available in the grid using newest technology | 2009-02-17 A |  | 0% → 75% |  |

## Version 8 (saved 2009-02-12)

Note of the change: update task completion - UC in 2.5.1 schedule

Last finish stays 2009-06-16. Complete tasks 3 → 4.

Changed:

| ID | Task | Start | Finish | Complete | Total float |
| --- | --- | --- | --- | --- | --- |
| 1 | **caMOD 2.5.1 Release** |  |  | 14% → 18% |  |
| 6 | **Elaboration Phase** | 2009-02-02 A |  | 0% → 70% | 0d → 1d |
| 7 | Use Case and Design Doc (caBIG template) | 2009-02-02 A | 2009-02-10 A | 0% → 100% | 0d → none |

## Version 9 (saved 2009-03-19)

Note of the change: Replace one issue and fix GF issue names for 2.5.1 schedule.

Last finish stays 2009-06-16.

Changed:

| ID | Task | Other |
| --- | --- | --- |
| 18 | 17325-Upgrade caMOD to use caBIO 4.x to get data | was named 17325-Upgrade caMOD to use caBIO 4.1 to get data |
| 20 | 17833-Make sure all references to Tranplantation are properly named | was named 18754-MTB data not displayed - causing crash |
| 25 | 12483-Why does unpublished entry not show up on publication, cell lines, or therapeutic approaches search screen | was named 12483-why does &amp;amp;amp;amp;quot;unpublished&amp;amp;amp;amp;quot; entry not show up on publication search page |

## Version 10 (saved 2009-03-20)

Note of the change: updated 2.5.1 schedule with latest status.

Last finish 2009-06-16 → 2009-06-18 (+2d). Complete tasks 4 → 9.

Added:

| ID | Task | Duration | Start | Finish | Predecessors |
| --- | --- | --- | --- | --- | --- |
| 28 | 19205-Sort therapies in the order they are entered | 1d? | 2009-04-14 A | 2009-04-14 | 27 |
| 29 | 19758-Remove the filter from the PI drop-down list on admin (Edit Models) search criteria screen | 1d? | 2009-04-15 A | 2009-04-15 | 28 |

Changed:

| ID | Task | Start | Finish | Duration | Complete | Total float |
| --- | --- | --- | --- | --- | --- | --- |
| 1 | **caMOD 2.5.1 Release** |  | 2009-06-16 → 2009-06-18 (+2d) | 117d → 119d? | 18% → 23% |  |
| 10 | **Construction Phase** |  | 2009-05-27 → 2009-05-29 (+2d) | 72d → 74d? | 7% → 15% |  |
| 15 | **Iteration 2** | 2009-03-03 A | 2009-04-27 → 2009-04-29 (+2d) | 40d → 42d? | 0% → 11% |  |
| 16 | **caMOD - Cancer Models Database - Feature Requests** | 2009-03-03 A |  |  | 0% → 9% | 0d → 8d |
| 17 | 17040-Make PMID field on advanced search page userfriendlier by adding a link to PubMed and trim functions | 2009-03-03 A | 2009-03-03 A |  | 0% → 100% | 0d → none |
| 19 | **caMOD - Cancer Models Database - Bugs** | 2009-03-18 A | 2009-04-13 → 2009-04-15 (+2d) | 19d → 21d? | 0% → 33% |  |
| 22 | 18694-Correct the spelling of Motility on Therapy/Biological Process page | 2009-03-30 A | 2009-03-30 A |  | 0% → 100% | 0d → none |
| 23 | 18267-No other zebrafish diagnosis shown on search page | 2009-03-31 A | 2009-03-31 A |  | 0% → 100% | 0d → none |
| 25 | 12483-Why does unpublished entry not show up on publication, cell lines, or therapeutic approaches search screen | 2009-04-08 A | 2009-04-08 A |  | 0% → 100% | 0d → none |
| 26 | 11623-Construct sequence field on genetic description pages is independent of image submission | 2009-04-09 A |  |  | 0% → 75% | 0d → 3d |
| 27 | 5235-amount of cells on Transplantation needs to accept 10^6 instead of a number (validation) | 2009-04-13 A | 2009-04-13 A |  | 0% → 100% | 0d → none |
| 30 | **caMOD - Data and Review** |  | 2009-04-20 → 2009-04-22 (+2d) | 35d → 37d |  |  |
| 31 | 18803-MTB data set deployment | 2009-04-14 → 2009-04-16 (+2d) | 2009-04-20 → 2009-04-22 (+2d) |  |  |  |
| 33 | **EVS Tree** | 2009-04-21 → 2009-04-23 (+2d) | 2009-04-27 → 2009-04-29 (+2d) |  |  |  |
| 34 | 10957-Implement connection to EVS 4.x (Lexbig Vocabuarly System / Architecture) | 2009-04-21 → 2009-04-23 (+2d) | 2009-04-27 → 2009-04-29 (+2d) |  |  |  |
| 35 | Milestone: Iteration 2 Completed | 2009-04-27 → 2009-04-29 (+2d) | 2009-04-27 → 2009-04-29 (+2d) |  |  |  |
| 36 | **Testing** | 2009-04-28 → 2009-04-30 (+2d) | 2009-05-27 → 2009-05-29 (+2d) |  |  |  |
| 37 | Update test cases | 2009-04-28 → 2009-04-30 (+2d) | 2009-05-08 → 2009-05-12 (+4d) |  |  |  |
| 38 | Deploy iteration on DEV Server | 2009-05-11 → 2009-05-13 (+2d) | 2009-05-12 → 2009-05-14 (+2d) |  |  |  |
| 39 | Test on DEV tier | 2009-05-13 → 2009-05-15 (+2d) | 2009-05-27 → 2009-05-29 (+2d) |  |  |  |
| 40 | Milestone: Construction Completed | 2009-05-27 → 2009-05-29 (+2d) | 2009-05-27 → 2009-05-29 (+2d) |  |  |  |
| 41 | **Transition Phase** | 2009-04-28 → 2009-04-30 (+2d) | 2009-06-16 → 2009-06-18 (+2d) |  |  |  |
| 42 | **QA** | 2009-04-28 → 2009-04-30 (+2d) | 2009-05-05 → 2009-05-07 (+2d) |  |  |  |
| 43 | Finalize Testplan | 2009-04-28 → 2009-04-30 (+2d) | 2009-04-30 → 2009-05-04 (+4d) |  |  |  |
| 44 | Finalize Test Cases | 2009-05-01 → 2009-05-05 (+4d) | 2009-05-05 → 2009-05-07 (+2d) |  |  |  |
| 45 | **Deploy** | 2009-05-28 → 2009-06-01 (+4d) | 2009-06-16 → 2009-06-18 (+2d) |  |  |  |
| 46 | **QA Server Deployment** | 2009-05-28 → 2009-06-01 (+4d) | 2009-06-03 → 2009-06-05 (+2d) |  |  |  |
| 47 | QA Testing | 2009-05-28 → 2009-06-01 (+4d) | 2009-06-03 → 2009-06-05 (+2d) |  |  |  |
| 48 | Milestone: QA Testing Completed | 2009-06-03 → 2009-06-05 (+2d) | 2009-06-03 → 2009-06-05 (+2d) |  |  |  |
| 49 | **Staging Server Deployment** | 2009-06-04 → 2009-06-08 (+4d) | 2009-06-10 → 2009-06-12 (+2d) |  |  |  |
| 50 | Stage Testing | 2009-06-04 → 2009-06-08 (+4d) | 2009-06-10 → 2009-06-12 (+2d) |  |  |  |
| 51 | App scan on Stage | 2009-06-04 → 2009-06-08 (+4d) | 2009-06-10 → 2009-06-12 (+2d) |  |  |  |
| 52 | Milestone: Stage Testing Completed | 2009-06-10 → 2009-06-12 (+2d) | 2009-06-10 → 2009-06-12 (+2d) |  |  |  |
| 53 | **Production Server Deployment** | 2009-06-11 → 2009-06-15 (+4d) | 2009-06-16 → 2009-06-18 (+2d) |  |  |  |
| 54 | Production server deployment | 2009-06-11 → 2009-06-15 (+4d) | 2009-06-12 → 2009-06-16 (+4d) |  |  |  |
| 55 | Production Verification | 2009-06-15 → 2009-06-17 (+2d) | 2009-06-16 → 2009-06-18 (+2d) |  |  |  |
| 56 | **Documentation** | 2009-05-06 → 2009-05-08 (+2d) | 2009-05-12 → 2009-05-14 (+2d) |  |  |  |
| 57 | Documentation Edit by Documentation Team | 2009-05-06 → 2009-05-08 (+2d) | 2009-05-12 → 2009-05-14 (+2d) |  |  |  |
| 58 | **Content Page Update** | 2009-06-11 → 2009-06-15 (+4d) | 2009-06-15 → 2009-06-17 (+2d) |  |  |  |
| 59 | zope site update | 2009-06-11 → 2009-06-15 (+4d) | 2009-06-15 → 2009-06-17 (+2d) |  |  |  |
| 60 | gForge download site update | 2009-06-11 → 2009-06-15 (+4d) | 2009-06-15 → 2009-06-17 (+2d) |  |  |  |
| 61 | caMOD 2.5.1 - Closeout | 2009-06-16 → 2009-06-18 (+2d) | 2009-06-16 → 2009-06-18 (+2d) |  |  |  |

## Version 11 (saved 2009-04-01)

Note of the change: update project plan with latest status

Last finish stays 2009-06-18. Complete tasks 9 → 11.

Changed:

| ID | Task | Start | Finish | Complete | Total float |
| --- | --- | --- | --- | --- | --- |
| 1 | **caMOD 2.5.1 Release** |  |  | 23% → 30% |  |
| 10 | **Construction Phase** |  |  | 15% → 26% |  |
| 15 | **Iteration 2** |  |  | 11% → 26% |  |
| 16 | **caMOD - Cancer Models Database - Feature Requests** |  |  | 9% → 32% | 8d → 15d |
| 18 | 17325-Upgrade caMOD to use caBIO 4.x to get data | 2009-03-04 A |  | 0% → 25% | 8d → 15d |
| 19 | **caMOD - Cancer Models Database - Bugs** |  |  | 33% → 71% |  |
| 20 | 17833-Make sure all references to Tranplantation are properly named | 2009-03-18 A | 2009-03-24 A | 0% → 100% | 13d → none |
| 24 | 17320-Make sure all filed sizes in database are validated correctly in validation.xml | 2009-04-01 A |  | 0% → 50% |  |
| 26 | 11623-Construct sequence field on genetic description pages is independent of image submission |  | 2009-04-10 A | 75% → 100% | 3d → none |
| 33 | **EVS Tree** | 2009-04-23 A |  | 0% → 25% |  |
| 34 | 10957-Implement connection to EVS 4.x (Lexbig Vocabuarly System / Architecture) | 2009-04-23 A |  | 0% → 25% |  |

## Version 12 (saved 2009-04-10)

Note of the change: 2.5.2 schedule update with grid service task completion.

Last finish stays 2009-06-18. Complete tasks 11 → 13.

Changed:

| ID | Task | Start | Finish | Complete | Total float |
| --- | --- | --- | --- | --- | --- |
| 1 | **caMOD 2.5.1 Release** |  |  | 30% → 46% |  |
| 10 | **Construction Phase** |  |  | 26% → 51% |  |
| 11 | **Iteration 1** |  | 2009-03-02 A | 75% → 100% | 0d → none |
| 12 | **caMOD - Cancer Models Database - Feature Requests** |  | 2009-03-02 A | 75% → 100% | 0d → none |
| 13 | 4772-Make caMod available in the grid using newest technology |  | 2009-03-02 A | 75% → 100% | 0d → none |
| 14 | Milestone: Iteration 1 Completed | 2009-03-02 A | 2009-03-02 A | 0% → 100% | 0d → none |
| 15 | **Iteration 2** |  |  | 26% → 59% |  |
| 30 | **caMOD - Data and Review** | 2009-03-03 A |  | 0% → 65% | 0d → 1.25d |
| 32 | 18803-Import new MTB data set | 2009-03-03 A |  | 0% → 75% | 4d → 5.25d |

## Version 13 (saved 2009-05-14)

Note of the change: status update

Last finish stays 2009-06-18. Complete tasks 13 → 18.

Changed:

| ID | Task | Start | Finish | Complete | Total float |
| --- | --- | --- | --- | --- | --- |
| 1 | **caMOD 2.5.1 Release** |  |  | 46% → 54% |  |
| 10 | **Construction Phase** |  |  | 51% → 64% |  |
| 15 | **Iteration 2** |  |  | 59% → 77% |  |
| 16 | **caMOD - Cancer Models Database - Feature Requests** |  | 2009-03-17 A | 32% → 100% | 15d → none |
| 18 | 17325-Upgrade caMOD to use caBIO 4.x to get data |  | 2009-03-17 A | 25% → 100% | 15d → none |
| 19 | **caMOD - Cancer Models Database - Bugs** |  | 2009-04-15 A | 71% → 100% | 0d → none |
| 21 | 18717-Sort therapies in the order they are entered | 2009-03-25 A | 2009-03-27 A | 0% → 100% | 13d → none |
| 24 | 17320-Make sure all filed sizes in database are validated correctly in validation.xml |  | 2009-04-07 A | 50% → 100% | 6d → none |
| 28 | 19205-Sort therapies in the order they are entered |  | 2009-04-14 A | 75% → 100% | 0.75d → none |
| 29 | 19758-Remove the filter from the PI drop-down list on admin (Edit Models) search criteria screen |  | 2009-04-15 A | 75% → 100% | 0d → none |

## Version 14 (saved 2009-05-29)

Note of the change: status update

Last finish stays 2009-06-18. Complete tasks 18 → 21.

Changed:

| ID | Task | Start | Finish | Complete | Total float |
| --- | --- | --- | --- | --- | --- |
| 1 | **caMOD 2.5.1 Release** |  |  | 54% → 66% |  |
| 10 | **Construction Phase** |  |  | 64% → 83% |  |
| 15 | **Iteration 2** |  |  | 77% → 82% | 0d → 14.14d |
| 33 | **EVS Tree** |  | 2009-04-29 A | 25% → 100% | 0d → none |
| 34 | 10957-Implement connection to EVS 4.x (Lexbig Vocabuarly System / Architecture) |  | 2009-04-29 A | 25% → 100% | 0d → none |
| 36 | **Testing** | 2009-04-30 A |  | 0% → 76% |  |
| 37 | Update test cases | 2009-04-30 A | 2009-05-12 A | 0% → 100% | 0d → none |
| 38 | Deploy iteration on DEV Server | 2009-05-13 A | 2009-05-14 A | 0% → 100% | 0d → none |
| 39 | Test on DEV tier | 2009-05-15 A |  | 0% → 50% |  |

## Version 15 (saved 2009-06-01)

Note of the change: status update

Last finish 2009-06-18 → 2009-06-24 (+6d). Complete tasks 21 → 23.

Changed:

| ID | Task | Start | Finish | Duration | Complete | Total float | Other |
| --- | --- | --- | --- | --- | --- | --- | --- |
| 1 | **caMOD 2.5.1 Release** |  | 2009-06-18 → 2009-06-24 (+6d) | 119d? → 123d? | 66% → 62% |  |  |
| 10 | **Construction Phase** |  |  |  | 83% → 88% | 14d → 0d |  |
| 36 | **Testing** |  | 2009-05-29 A |  | 76% → 100% | 0d → none |  |
| 39 | Test on DEV tier |  | 2009-05-29 A |  | 50% → 100% | 0d → none |  |
| 40 | Milestone: Construction Completed | 2009-05-29 A | 2009-05-29 A |  | 0% → 100% | 14d → none |  |
| 41 | **Transition Phase** | 2009-04-30 A | 2009-06-18 → 2009-06-24 (+6d) | 36d → 40d | 0% → 1% |  |  |
| 42 | **QA** | 2009-04-30 A | 2009-05-07 → 2009-06-04 (+28d) | 6d → 26d | 0% → 3% | 16d → 0d |  |
| 43 | Finalize Testplan | 2009-04-30 A | 2009-05-04 → 2009-06-01 (+28d) | 3d → 23d | 0% → 3% | 16d → 0d | constraint none → finish no earlier than 2009-06-01 |
| 44 | Finalize Test Cases | 2009-05-05 → 2009-06-02 (+28d) | 2009-05-07 → 2009-06-04 (+28d) |  |  | 16d → 0d |  |
| 45 | **Deploy** | 2009-06-01 → 2009-06-05 (+4d) | 2009-06-18 → 2009-06-24 (+6d) |  |  |  |  |
| 46 | **QA Server Deployment** | 2009-06-01 → 2009-06-05 (+4d) | 2009-06-05 → 2009-06-11 (+6d) |  |  |  |  |
| 47 | QA Testing | 2009-06-01 → 2009-06-05 (+4d) | 2009-06-05 → 2009-06-11 (+6d) |  |  |  |  |
| 48 | Milestone: QA Testing Completed | 2009-06-05 → 2009-06-11 (+6d) | 2009-06-05 → 2009-06-11 (+6d) |  |  |  |  |
| 49 | **Staging Server Deployment** | 2009-06-08 → 2009-06-12 (+4d) | 2009-06-12 → 2009-06-18 (+6d) |  |  |  |  |
| 50 | Stage Testing | 2009-06-08 → 2009-06-12 (+4d) | 2009-06-12 → 2009-06-18 (+6d) |  |  |  |  |
| 51 | App scan on Stage | 2009-06-08 → 2009-06-12 (+4d) | 2009-06-12 → 2009-06-18 (+6d) |  |  |  |  |
| 52 | Milestone: Stage Testing Completed | 2009-06-12 → 2009-06-18 (+6d) | 2009-06-12 → 2009-06-18 (+6d) |  |  |  |  |
| 53 | **Production Server Deployment** | 2009-06-15 → 2009-06-19 (+4d) | 2009-06-18 → 2009-06-24 (+6d) |  |  |  |  |
| 54 | Production server deployment | 2009-06-15 → 2009-06-19 (+4d) | 2009-06-16 → 2009-06-22 (+6d) |  |  |  |  |
| 55 | Production Verification | 2009-06-17 → 2009-06-23 (+6d) | 2009-06-18 → 2009-06-24 (+6d) |  |  |  |  |
| 56 | **Documentation** | 2009-05-08 → 2009-06-05 (+28d) | 2009-05-14 → 2009-06-11 (+28d) |  |  | 25d → 9d |  |
| 57 | Documentation Edit by Documentation Team | 2009-05-08 → 2009-06-05 (+28d) | 2009-05-14 → 2009-06-11 (+28d) |  |  | 25d → 9d |  |
| 58 | **Content Page Update** | 2009-06-15 → 2009-06-19 (+4d) | 2009-06-17 → 2009-06-23 (+6d) |  |  |  |  |
| 59 | zope site update | 2009-06-15 → 2009-06-19 (+4d) | 2009-06-17 → 2009-06-23 (+6d) |  |  |  |  |
| 60 | gForge download site update | 2009-06-15 → 2009-06-19 (+4d) | 2009-06-17 → 2009-06-23 (+6d) |  |  |  |  |
| 61 | caMOD 2.5.1 - Closeout | 2009-06-18 → 2009-06-24 (+6d) | 2009-06-18 → 2009-06-24 (+6d) |  |  |  |  |

## Version 16 (saved 2009-06-05)

Note of the change: status update

Last finish stays 2009-06-24. Complete tasks 23 → 25.

Changed:

| ID | Task | Start | Finish | Complete | Total float |
| --- | --- | --- | --- | --- | --- |
| 1 | **caMOD 2.5.1 Release** |  |  | 62% → 75% |  |
| 41 | **Transition Phase** |  |  | 1% → 46% |  |
| 42 | **QA** |  | 2009-06-04 A | 3% → 100% | 0d → none |
| 43 | Finalize Testplan |  | 2009-06-01 A | 3% → 100% | 0d → none |
| 44 | Finalize Test Cases | 2009-06-02 A | 2009-06-04 A | 0% → 100% | 0d → none |

## Version 17 (saved 2009-07-08)

Note of the change: updated status of tasks.

Last finish 2009-06-24 → 2009-07-07 (+13d). Complete tasks 25 → 33.

Changed:

| ID | Task | Start | Finish | Duration | Complete | Total float |
| --- | --- | --- | --- | --- | --- | --- |
| 1 | **caMOD 2.5.1 Release** |  | 2009-06-24 → 2009-07-07 (+13d) | 123d? → 132d? | 75% → 89% |  |
| 41 | **Transition Phase** |  | 2009-06-24 → 2009-07-07 (+13d) | 40d → 49d | 46% → 91% |  |
| 45 | **Deploy** | 2009-06-05 A | 2009-06-24 → 2009-07-07 A (+13d) | 14d → 23d | 0% → 100% | 0d → none |
| 46 | **QA Server Deployment** | 2009-06-05 A | 2009-06-11 A |  | 0% → 100% | 0d → none |
| 47 | QA Testing | 2009-06-05 A | 2009-06-11 A |  | 0% → 100% | 0d → none |
| 48 | Milestone: QA Testing Completed | 2009-06-11 A | 2009-06-11 A |  | 0% → 100% | 0d → none |
| 49 | **Staging Server Deployment** | 2009-06-12 A | 2009-06-18 A |  | 0% → 100% | 0d → none |
| 50 | Stage Testing | 2009-06-12 A | 2009-06-18 A |  | 0% → 100% | 0d → none |
| 51 | App scan on Stage | 2009-06-12 A | 2009-06-18 A |  | 0% → 100% | 0d → none |
| 52 | Milestone: Stage Testing Completed | 2009-06-18 A | 2009-06-18 A |  | 0% → 100% | 0d → none |
| 53 | **Production Server Deployment** | 2009-06-19 A | 2009-06-24 → 2009-07-07 A (+13d) | 4d → 13d | 0% → 100% | 0d → none |
| 54 | Production server deployment | 2009-06-19 A | 2009-06-22 → 2009-07-02 A (+10d) | 2d → 10d | 0% → 100% | 0d → none |
| 55 | Production Verification | 2009-06-23 → 2009-07-03 A (+10d) | 2009-06-24 → 2009-07-07 A (+13d) |  | 0% → 100% | 0d → none |
| 56 | **Documentation** | 2009-06-05 A | 2009-06-11 A |  | 0% → 100% | 9d → none |
| 57 | Documentation Edit by Documentation Team | 2009-06-05 A | 2009-06-11 A |  | 0% → 100% | 9d → none |
| 61 | caMOD 2.5.1 - Closeout | 2009-06-24 → 2009-07-07 (+13d) | 2009-06-24 → 2009-07-07 (+13d) |  |  |  |
