# caMOD 2.2

How a schedule from MS Project changed from version to version. A marks actual dates.

## Version 1 (saved 2007-09-12)

Note of the change: Initial version with grid client

| ID | WBS | Task | Duration | Start | Finish | Predecessors | Total float |
| --- | --- | --- | --- | --- | --- | --- | --- |
| 1 | 1 | **caMOD 2.4 Release** | 154d | 2007-09-28 | 2008-04-30 |  | 0d |
| 2 | 1.1 | **Inception Phase** | 16d | 2007-09-28 | 2007-10-19 |  | 0d |
| 3 |  | Use Case and Design Doc (caBIG template) | 2w | 2007-09-28 | 2007-10-11 |  | 0d |
| 4 |  | Review use cases / design with the "Review Board" | 6d | 2007-10-12 | 2007-10-19 | 3 | 0d |
| 5 |  | Milestone: Completed Design document | 0d | 2007-10-19 | 2007-10-19 | 4 | 0d |
| 6 | 1.3 | **Elaboration Phase** | 21d | 2007-10-22 | 2007-11-19 |  | 0d |
| 7 |  | Incorporate changes to the Object Model | 2d | 2007-10-22 | 2007-10-23 | 5 | 0d |
| 8 |  | Make code changes due to Object Model changes | 5d | 2007-10-24 | 2007-10-30 | 7 | 0d |
| 9 |  | Milestone: Soft Freeze Object Model | 2d | 2007-10-31 | 2007-11-01 | 8 | 0d |
| 10 |  | Round Trip, Import XMI into EA | 2d | 2007-11-02 | 2007-11-05 | 9 | 21d |
| 11 |  | Register Model in caDSR | 10d | 2007-11-06 | 2007-11-19 | 10 | 21d |
| 12 |  | Milestone: Model Registered in CADSR | 0d | 2007-09-28 | 2007-09-28 |  | 58d |
| 13 | 1.5 | **iteration 1:** | 138d | 2007-10-22 | 2008-04-30 |  | 0d |
| 14 | 1.5.1 | **EVSTree Application-side work** | 33d | 2007-11-02 | 2007-12-18 |  | 0d |
| 15 | 1.5.1.1 | **Implementation and Testing** | 33d | 2007-11-02 | 2007-12-18 |  | 0d |
| 16 |  | Letting a user add and view staining methods that are not part of the vocabulary; affects old and new entries | 1w | 2007-11-02 | 2007-11-08 | 9 | 0d |
| 17 |  | Annoyances with EVS organ tree | 4w | 2007-11-09 | 2007-12-06 | 16 | 0d |
| 18 |  | Selecting search results in tree causes HTTP 404 Error | 3d | 2007-12-07 | 2007-12-11 | 17 | 0d |
| 19 |  | Crash - when trying to select search result page crashes | 1w | 2007-12-12 | 2007-12-18 | 18 | 0d |
| 20 | 1.5.2 | **caMOD - caELMIR Integration Tasks** | 28d | 2007-12-19 | 2008-01-25 |  | 0d |
| 21 |  | Implement Therapy Screen for caELMIR data | 2w | 2007-12-19 | 2008-01-01 | 19 | 0d |
| 25 | 1.5.3 | **Admin Features and Misc bugs** | 9d | 2008-01-28 | 2008-02-07 |  | 0d |
| 26 |  | Do not delete EnvironmentalFactor objects - instead reuse and leave in DB | 2d | 2008-01-28 | 2008-01-29 |  | 0d |
| 27 |  | Editors do not receive assignment emails | 1w | 2008-01-30 | 2008-02-05 | 26 | 0d |
| 28 |  | data conversion and html code result in funny signs in text | 2d | 2008-02-06 | 2008-02-07 | 27 | 0d |
| 29 | 1.5.4 | **Remote API / Grid** | 35d | 2008-02-08 | 2008-03-27 |  | 0d |
| 30 |  | Leverage caCORE 3.2 for remote API | 1w | 2008-02-08 | 2008-02-14 | 28 | 0d |
| 31 |  | Remote API - Redo API to 1.0 of Tool Kit | 2w | 2008-02-15 | 2008-02-28 | 30 | 0d |
| 32 |  | Make caMod available in the grid (production) | 1w | 2008-02-29 | 2008-03-06 | 31 | 0d |
| 33 |  | Map API to latest OM (2.4) | 2w | 2008-03-07 | 2008-03-20 | 32 | 0d |
| 34 |  | Make only edited-approved models available through API | 1w | 2008-03-21 | 2008-03-27 | 33 | 0d |
| 35 | 1.5.5 | **Testing** | 138d | 2007-10-22 | 2008-04-30 |  | 0d |
| 36 |  | Deploy iteration on DEV Server | 2d | 2008-03-28 | 2008-03-31 | 34 | 0d |
| 37 |  | Test on DEV tier | 1w | 2008-04-01 | 2008-04-07 | 36 | 0d |
| 38 | 1.5.5.3 | **Transition Phase** | 138d | 2007-10-22 | 2008-04-30 |  | 0d |
| 39 | 1.5.5.3.1 | **QA** | 10d | 2007-10-22 | 2007-11-02 | 5 | 133d |
| 40 |  | Finalize Testplan | 1w | 2007-10-22 | 2007-10-26 | 5 | 133d |
| 41 |  | Finalize Test Cases | 1w | 2007-10-29 | 2007-11-02 | 40 | 133d |
| 42 | 1.5.5.3.2 | **Deploy** | 17d | 2008-04-08 | 2008-04-30 |  | 0d |
| 43 | 1.5.5.3.2.1 | **QA Server Deployment** | 10d | 2008-04-08 | 2008-04-21 | 37 | 0d |
| 44 |  | QA Testing | 2w | 2008-04-08 | 2008-04-21 |  | 0d |
| 45 | 1.5.5.3.2.2 | **Staging Server Deployment** | 5d | 2008-04-22 | 2008-04-28 | 44 | 0d |
| 46 |  | Staging Testing | 1w | 2008-04-22 | 2008-04-28 |  | 0d |
| 47 | 1.5.5.3.2.3 | **Production Server Deployment** | 2d | 2008-04-29 | 2008-04-30 | 46 | 0d |
| 48 |  | Production Verification | 2d | 2008-04-29 | 2008-04-30 |  | 0d |
| 49 |  | caMOD 2.4 - Closeout | 0d | 2008-04-30 | 2008-04-30 | 48 | 0d |

## Version 2 (saved 2008-02-21)

Note of the change: commit latest schedule changes

Last finish 2008-04-30 → 2008-08-28 (+120d).

Added:

| ID | Task | Duration | Start | Finish | Predecessors | Constraint | Resources |
| --- | --- | --- | --- | --- | --- | --- | --- |
| 5 | Write a design document for gridified caMOD | 10d | 2008-05-05 | 2008-05-16 |  | start no earlier than 2008-05-05 | Sima |
| 6 | Submit the gridified design document to ARB | 3d | 2008-05-19 | 2008-05-21 | 5 |  | Sima |
| 9 | Create valute domains for caDSR | 18d | 2008-02-04 | 2008-02-27 |  | start no earlier than 2008-02-04 | Ulli |
| 17 | **Infrastructure Upgrade** | 30d | 2008-02-25 | 2008-04-04 |  |  |  |
| 18 | 10958 - Take existing test scripts and run them in Selenium and CruiseControl | 10d | 2008-02-25 | 2008-03-07 |  | start no earlier than 2008-02-25 | Nick |
| 19 | 10957 - LexBig Prototype: Investiate and demo connection to Lexbig Vocabulary System / Architecture | 20d | 2008-03-10 | 2008-04-04 | 18 |  | Nick |
| 21 | 5097 - submitting microarray data that are stored in other applications than caArray | 3d | 2008-04-07 | 2008-04-09 | 17 | start no earlier than 2008-03-10 | Nick |
| 22 | 5172 - Do not delete EnvironmentalFactor objects - instead reuse and leave in DB | 5d | 2008-04-10 | 2008-04-16 | 21 |  | Nick |
| 23 | 11013 - Use improved PubMed fetch script on publication submission page | 5d | 2008-04-17 | 2008-04-23 | 22 |  | Nick |
| 24 | 5200 - Duplicate Model - status of duplicated model should be default be incomplete | 3d | 2008-04-24 | 2008-04-28 | 23 |  | Nick |
| 25 | 8400 - Duplication does not work for some fields | 5d | 2008-04-29 | 2008-05-05 | 24 |  | Nick |
| 26 | 11007 - Add search for PMID to advanced search page | 3d | 2008-05-06 | 2008-05-08 | 25 |  | Nick |
| 27 | 12042 - Save query function broken - Fix | 4d | 2008-05-09 | 2008-05-14 | 26 |  | Nick |
| 28 | 12216 - Release date selection not maintaining value | 1d | 2008-05-15 | 2008-05-15 | 27 |  | Nick |
| 30 | Make code changes due to Object Model changes | 5d | 2008-05-22 | 2008-05-28 | 6 | start no earlier than 2008-05-05 | Sima |
| 31 | Milestone: Soft Freeze Object Model | 2d | 2008-05-29 | 2008-05-30 | 30 |  | Sima |
| 49 | **Documentation** | 10d | 2008-07-21 | 2008-08-01 | 29 |  |  |
| 50 | Document How to Connect to caMOD | 1w | 2008-07-21 | 2008-07-25 |  |  | Sima |
| 51 | Documentation Edit by Documentation Team | 5d | 2008-07-28 | 2008-08-01 | 50 |  | Jill |

Removed: 14 EVSTree Application-side work; 15 Implementation and Testing; 16 Letting a user add and view staining methods that are not part of the vocabulary; affects old and new entries; 17 Annoyances with EVS organ tree; 18 Selecting search results in tree causes HTTP 404 Error; 19 Crash - when trying to select search result page crashes; 20 caMOD - caELMIR Integration Tasks; 21 Implement Therapy Screen for caELMIR data; 26 Do not delete EnvironmentalFactor objects - instead reuse and leave in DB; 27 Editors do not receive assignment emails; 28 data conversion and html code result in funny signs in text; 31 Remote API - Redo API to 1.0 of Tool Kit; 33 Map API to latest OM (2.4)

Changed:

| ID | Task | Start | Finish | Duration | Total float | Predecessors | Other |
| --- | --- | --- | --- | --- | --- | --- | --- |
| 1 | **caMOD 2.5 Release** | 2007-09-28 → 2008-02-04 (+129d) | 2008-04-30 → 2008-08-28 (+120d) | 154d → 149d |  |  | was named caMOD 2.4 Release |
| 2 | **Inception Phase** | 2007-09-28 → 2008-02-04 (+129d) | 2007-10-19 → 2008-05-21 (+215d) | 16d → 78d | 0d → 61d |  |  |
| 3 | Use Case and Design Doc (caBIG template) | 2007-09-28 → 2008-02-04 (+129d) | 2007-10-11 → 2008-02-15 (+127d) |  | 0d → 115d |  | constraint none → start no earlier than 2008-02-04; resources Sima [50%] → Nick |
| 4 | Review use cases / design with the "Review Board" | 2007-10-12 → 2008-02-18 (+129d) | 2007-10-19 → 2008-02-25 (+129d) |  | 0d → 98d |  |  |
| 7 | Milestone: Completed Design Document | 2007-10-19 → 2008-02-25 (+129d) | 2007-10-19 → 2008-02-25 (+129d) |  | 0d → 115d |  | was named Milestone: Completed Design document |
| 8 | **Elaboration Phase** | 2007-10-22 → 2008-02-04 (+105d) | 2007-11-19 → 2008-03-25 (+127d) | 21d → 37d | 0d → 112d |  |  |
| 10 | Incorporate changes to the Object Model | 2007-10-22 → 2008-02-28 (+129d) | 2007-10-23 → 2008-02-29 (+129d) |  | 0d → 109d | 7 → 9 |  |
| 11 | Make code changes due to Object Model changes | 2007-10-24 → 2008-03-03 (+131d) | 2007-10-30 → 2008-03-07 (+129d) |  | 0d → 107d |  | resources Sima → Nick |
| 12 | Milestone: Soft Freeze Object Model | 2007-10-31 → 2008-03-07 (+128d) | 2007-11-01 → 2008-03-07 (+127d) | 2d → 0d | 0d → 107d |  | resources Sima → Nick |
| 13 | Round Trip, Import XMI into EA | 2007-11-02 → 2008-03-10 (+129d) | 2007-11-05 → 2008-03-11 (+127d) |  | 21d → 107d |  |  |
| 14 | Register Model in caDSR | 2007-11-06 → 2008-03-12 (+127d) | 2007-11-19 → 2008-03-25 (+127d) |  | 21d → 107d |  |  |
| 15 | Milestone: Model Registered in CADSR | 2007-09-28 → 2008-03-25 (+179d) | 2007-09-28 → 2008-03-25 (+179d) |  | 58d → 107d | none → 14 | constraint none → start no earlier than 2008-02-04 |
| 16 | **iteration 1:** | 2007-10-22 → 2008-02-25 (+126d) | 2008-04-30 → 2008-08-28 (+120d) | 138d → 134d |  |  |  |
| 20 | **Enhancements and Misc bugs** | 2008-01-28 → 2008-04-07 (+70d) | 2008-02-07 → 2008-05-15 (+98d) | 9d → 29d | 0d → 46d |  | was named Admin Features and Misc bugs |
| 29 | **Remote API / Grid** | 2008-02-08 → 2008-05-22 (+104d) | 2008-03-27 → 2008-07-18 (+113d) | 35d → 42d |  |  |  |
| 32 | Leverage caCORE 3.2 for remote API | 2008-02-08 → 2008-06-02 (+115d) | 2008-02-14 → 2008-06-06 (+113d) |  |  | data conversion and html code result in funny signs in text → 31 | constraint none → start no earlier than 2008-05-05 |
| 33 | Make caMod available in the grid (production) | 2008-02-29 → 2008-06-09 (+101d) | 2008-03-06 → 2008-07-11 (+127d) | 1w → 5w |  | Remote API - Redo API to 1.0 of Tool Kit → 32 |  |
| 34 | Make only edited-approved models available through API | 2008-03-21 → 2008-07-14 (+115d) | 2008-03-27 → 2008-07-18 (+113d) |  |  | Map API to latest OM (2.4) → 33 |  |
| 35 | **Testing** | 2007-10-22 → 2008-02-26 (+127d) | 2008-04-30 → 2008-08-28 (+120d) | 138d → 133d |  |  |  |
| 36 | Deploy iteration on DEV Server | 2008-03-28 → 2008-07-21 (+115d) | 2008-03-31 → 2008-07-22 (+113d) |  |  | 34 → 20, 29 |  |
| 37 | Test on DEV tier | 2008-04-01 → 2008-07-23 (+113d) | 2008-04-07 → 2008-08-05 (+120d) | 1w → 2w |  |  |  |
| 38 | **Transition Phase** | 2007-10-22 → 2008-02-26 (+127d) | 2008-04-30 → 2008-08-28 (+120d) | 138d → 133d |  |  |  |
| 39 | **QA** | 2007-10-22 → 2008-02-26 (+127d) | 2007-11-02 → 2008-03-10 (+129d) |  | 133d → 123d |  |  |
| 40 | Finalize Testplan | 2007-10-22 → 2008-02-26 (+127d) | 2007-10-26 → 2008-03-03 (+129d) |  | 133d → 123d |  |  |
| 41 | Finalize Test Cases | 2007-10-29 → 2008-03-04 (+127d) | 2007-11-02 → 2008-03-10 (+129d) |  | 133d → 123d |  |  |
| 42 | **Deploy** | 2008-04-08 → 2008-08-06 (+120d) | 2008-04-30 → 2008-08-28 (+120d) |  |  |  |  |
| 43 | **QA Server Deployment** | 2008-04-08 → 2008-08-06 (+120d) | 2008-04-21 → 2008-08-19 (+120d) |  |  |  |  |
| 44 | QA Testing | 2008-04-08 → 2008-08-06 (+120d) | 2008-04-21 → 2008-08-19 (+120d) |  |  |  |  |
| 45 | **Staging Server Deployment** | 2008-04-22 → 2008-08-20 (+120d) | 2008-04-28 → 2008-08-26 (+120d) |  |  |  |  |
| 46 | Staging Testing | 2008-04-22 → 2008-08-20 (+120d) | 2008-04-28 → 2008-08-26 (+120d) |  |  |  |  |
| 47 | **Production Server Deployment** | 2008-04-29 → 2008-08-27 (+120d) | 2008-04-30 → 2008-08-28 (+120d) |  |  |  |  |
| 48 | Production Verification | 2008-04-29 → 2008-08-27 (+120d) | 2008-04-30 → 2008-08-28 (+120d) |  |  |  |  |
| 52 | caMOD 2.5 - Closeout | 2008-04-30 → 2008-08-28 (+120d) | 2008-04-30 → 2008-08-28 (+120d) |  |  |  | was named caMOD 2.4 - Closeout |

## Version 3 (saved 2008-02-21)

Note of the change: update with one more task for 2.5 release.

Last finish stays 2008-08-28.

Added:

| ID | Task | Duration | Start | Finish | Predecessors | Resources |
| --- | --- | --- | --- | --- | --- | --- |
| 28 | 9127 - Customize publication pages for rat to allow submissio & display of RGD references | 2d | 2008-05-15 | 2008-05-16 | 27 | Nick |

Changed:

| ID | Task | Start | Finish | Duration | Total float | Predecessors |
| --- | --- | --- | --- | --- | --- | --- |
| 20 | **Enhancements and Misc bugs** |  | 2008-05-15 → 2008-05-19 (+4d) | 29d → 31d | 46d → 44d |  |
| 29 | 12216 - Release date selection not maintaining value | 2008-05-15 → 2008-05-19 (+4d) | 2008-05-15 → 2008-05-19 (+4d) |  | 46d → 44d | 27 → 28 |

## Version 4 (saved 2008-04-22)

Note of the change: updated to accommodate for delayed start date for Nick and a new security release.

Last finish 2008-08-28 → 2008-10-15 (+48d).

Added:

| ID | Task | Duration | Start | Finish | Predecessors | Constraint | Resources |
| --- | --- | --- | --- | --- | --- | --- | --- |
| 19 | 10958 - Take existing test scripts and run them in Selenium | 5d | 2008-05-06 | 2008-05-12 | 18 |  | Nick |
| 20 | 11500 - Create a build.sh script for the new instance for BOTH camod.war | 3d | 2008-05-13 | 2008-05-15 | 19 |  | Nick |
| 21 | 12481 - Create automated deployment for caMOD to each tier | 5d | 2008-05-16 | 2008-05-22 | 20 |  | Nick |
| 24 | 7028 - Add link to pdf users guide to Quick Links menu | 1d | 2008-05-26 | 2008-05-26 | 23 |  | Nick |
| 25 | 5205 - cannot delete/enter radiation for old model - page does not | 2d | 2008-05-27 | 2008-05-28 | 24 |  | Nick |
| 27 | 12064 - Title field on publication submission field has size limit OR PubMed fetch script does not retrieve complete publication title | 1d | 2008-06-05 | 2008-06-05 | 26 |  | Nick |
| 28 | 5173 - Publication issues - various bugs | 2d | 2008-06-06 | 2008-06-09 | 27 |  | Nick |
| 29 | 7474 - Give fields in "Customize Search" feature meaningful names | 2d | 2008-06-10 | 2008-06-11 | 28 |  | Nick |
| 31 | 7636 - Query not saved when search returns no models. | 3d | 2008-06-19 | 2008-06-23 | 30 |  | Nick |
| 32 | 5204 - left side search menu disappears when user customizes search | 1d | 2008-06-24 | 2008-06-24 | 31 |  | Nick |
| 33 | 7850 - Place a URL field on the image page | 3d | 2008-06-25 | 2008-06-27 | 32 |  | Nick |
| 37 | 5249 - Fix searches - allow oracle result set > 1000 | 10d | 2008-07-15 | 2008-07-28 | 36 |  | Nick |
| 40 | **EVS Tree** | 35d | 2008-08-07 | 2008-09-24 |  |  |  |
| 42 | Bug Fixes | 15d | 2008-09-04 | 2008-09-24 | 41 |  | Nick |
| 43 | **Enhancements and Misc bugs** | 7d | 2008-05-05 | 2008-05-13 |  |  |  |
| 44 | Clean up induced mutation & environmental factor | 5d | 2008-05-05 | 2008-05-09 |  | start no earlier than 2008-05-05 | Sima |
| 53 | 7142 - Test cases that need to be added to the QA test scripts | 5d | 2008-08-15 | 2008-08-21 | 46, 17, 22 |  | Sima; Ulli; Nick |
| 63 | Security Scan on QA | 2d | 2008-10-09 | 2008-10-10 | 62 |  |  |

Changed:

| ID | Task | Start | Finish | Duration | Total float | Predecessors | Other |
| --- | --- | --- | --- | --- | --- | --- | --- |
| 1 | **caMOD 2.5 Release** | 2008-02-04 → 2008-04-14 (+70d) | 2008-08-28 → 2008-10-15 (+48d) | 149d → 133d |  |  |  |
| 2 | **Inception Phase** | 2008-02-04 → 2008-04-14 (+70d) | 2008-05-21 → 2008-06-17 (+27d) | 78d → 47d | 61d → 0d |  |  |
| 3 | Use Case and Design Doc (caBIG template) | 2008-02-04 → 2008-04-14 (+70d) | 2008-02-15 → 2008-04-25 (+70d) |  | 115d → 0d |  | constraint start no earlier than 2008-02-04 → start no earlier than 2008-04-14 |
| 4 | Review use cases / design with the "Review Board" | 2008-02-18 → 2008-04-28 (+70d) | 2008-02-25 → 2008-04-28 (+63d) | 6d → 1d | 98d → 0d |  | resources Sima → Nick |
| 5 | Write a design document for gridified caMOD | 2008-05-05 → 2008-05-30 (+25d) | 2008-05-16 → 2008-06-12 (+27d) |  | 0d → 12d | none → 45 | constraint start no earlier than 2008-05-05 → start no earlier than 2008-05-30 |
| 6 | Submit the gridified design document to ARB | 2008-05-19 → 2008-06-13 (+25d) | 2008-05-21 → 2008-06-17 (+27d) |  | 0d → 12d |  |  |
| 7 | Milestone: Completed Design Document | 2008-02-25 → 2008-06-17 (+113d) | 2008-02-25 → 2008-06-17 (+113d) |  | 115d → 76d | 4 → 4, 5, 6 |  |
| 8 | **Elaboration Phase** | 2008-02-04 → 2008-06-18 (+135d) | 2008-03-25 → 2008-07-28 (+125d) | 37d → 29d | 112d → 57d | none → 2 |  |
| 9 | Create valute domains for caDSR | 2008-02-04 → 2008-06-18 (+135d) | 2008-02-27 → 2008-07-01 (+125d) | 18d → 10d | 109d → 57d |  |  |
| 10 | Incorporate changes to the Object Model | 2008-02-28 → 2008-07-02 (+125d) | 2008-02-29 → 2008-07-03 (+125d) |  | 109d → 57d |  |  |
| 11 | Make code changes due to Object Model changes | 2008-03-03 → 2008-07-04 (+123d) | 2008-03-07 → 2008-07-10 (+125d) |  | 107d → 57d |  |  |
| 12 | Milestone: Soft Freeze Object Model | 2008-03-07 → 2008-07-10 (+125d) | 2008-03-07 → 2008-07-10 (+125d) |  | 107d → 57d |  |  |
| 13 | Round Trip, Import XMI into EA | 2008-03-10 → 2008-07-11 (+123d) | 2008-03-11 → 2008-07-14 (+125d) |  | 107d → 57d |  |  |
| 14 | Register Model in caDSR | 2008-03-12 → 2008-07-15 (+125d) | 2008-03-25 → 2008-07-28 (+125d) |  | 107d → 57d |  |  |
| 15 | Milestone: Model Registered in CADSR | 2008-03-25 → 2008-07-28 (+125d) | 2008-03-25 → 2008-07-28 (+125d) |  | 107d → 57d |  |  |
| 16 | **iteration 1:** | 2008-02-25 → 2008-04-29 (+64d) | 2008-08-28 → 2008-09-24 (+27d) | 134d → 107d |  | none → 4 |  |
| 17 | **Infrastructure Upgrade** | 2008-02-25 → 2008-04-29 (+64d) | 2008-04-04 → 2008-05-22 (+48d) | 30d → 18d | 44d → 0d |  |  |
| 18 | 7115 - Automate nightly build using CruiseControl | 2008-02-25 → 2008-04-29 (+64d) | 2008-03-07 → 2008-05-05 (+59d) | 10d → 5d | 51d → 0d |  | was named 10958 - Take existing test scripts and run them in Selenium and CruiseControl |
| 22 | **Enhancements and Misc bugs** | 2008-04-07 → 2008-05-23 (+46d) | 2008-05-19 → 2008-08-06 (+79d) | 31d → 54d | 44d → 0d |  |  |
| 23 | 12216 - Release date selection not maintaining value | 2008-05-19 → 2008-05-23 (+4d) | 2008-05-19 → 2008-05-23 (+4d) |  | 44d → 0d | 39 → 17 |  |
| 26 | 11013 - Use improved PubMed fetch script on publication submission page | 2008-04-17 → 2008-05-29 (+42d) | 2008-04-23 → 2008-06-04 (+42d) |  | 51d → 0d | 45 → 25 |  |
| 30 | 12042 - Save query function broken - Fix | 2008-05-09 → 2008-06-12 (+34d) | 2008-05-14 → 2008-06-18 (+35d) | 4d → 5d | 42d → 0d | 38 → 29 |  |
| 34 | 5097 - submitting microarray data that are stored in other applications than caArray | 2008-04-07 → 2008-06-30 (+84d) | 2008-04-09 → 2008-07-02 (+84d) |  | 51d → 0d | 17 → 33 |  |
| 35 | 8400 - Duplication does not work for some fields | 2008-04-29 → 2008-07-03 (+65d) | 2008-05-05 → 2008-07-09 (+65d) |  | 51d → 0d | 36 → 34 |  |
| 36 | 5200 - Duplicate Model - status of duplicated model should be default be incomplete | 2008-04-24 → 2008-07-10 (+77d) | 2008-04-28 → 2008-07-14 (+77d) |  | 51d → 0d | 26 → 35 |  |
| 38 | 11007 - Add search for PMID to advanced search page | 2008-05-06 → 2008-07-29 (+84d) | 2008-05-08 → 2008-07-31 (+84d) |  | 51d → 0d | 35 → 37 |  |
| 39 | 9127 - Customize publication pages for rat to allow submissio & display of RGD references | 2008-05-15 → 2008-08-01 (+78d) | 2008-05-16 → 2008-08-06 (+82d) | 2d → 4d | 44d → 0d | 30 → 38 |  |
| 41 | 10957 - LexBig Prototype: Investiate and demo connection to Lexbig Vocabulary System / Architecture | 2008-03-10 → 2008-08-07 (+150d) | 2008-04-04 → 2008-09-03 (+152d) |  | 51d → 0d | 18 → 22 |  |
| 45 | 5172 - Do not delete EnvironmentalFactor objects - instead reuse and leave in DB | 2008-04-10 → 2008-05-12 (+32d) | 2008-04-16 → 2008-05-13 (+27d) | 5d → 2d | 51d → 24d | 34 → 44 | constraint none → start no earlier than 2008-05-05; resources Nick → Sima |
| 46 | **Remote API / Grid** | 2008-05-22 → 2008-06-18 (+27d) | 2008-07-18 → 2008-08-14 (+27d) |  | 0d → 12d |  |  |
| 47 | Make code changes due to Object Model changes | 2008-05-22 → 2008-06-18 (+27d) | 2008-05-28 → 2008-06-24 (+27d) |  | 0d → 12d |  |  |
| 48 | Milestone: Soft Freeze Object Model | 2008-05-29 → 2008-06-25 (+27d) | 2008-05-30 → 2008-06-26 (+27d) |  | 0d → 12d |  |  |
| 49 | Leverage caCORE 3.2 for remote API | 2008-06-02 → 2008-06-27 (+25d) | 2008-06-06 → 2008-07-03 (+27d) |  | 0d → 12d |  |  |
| 50 | Make caMod available in the grid (production) | 2008-06-09 → 2008-07-04 (+25d) | 2008-07-11 → 2008-08-07 (+27d) |  | 0d → 12d |  |  |
| 51 | Make only edited-approved models available through API | 2008-07-14 → 2008-08-08 (+25d) | 2008-07-18 → 2008-08-14 (+27d) |  | 0d → 12d |  |  |
| 52 | **Testing** | 2008-02-26 → 2008-08-15 (+171d) | 2008-08-28 → 2008-09-08 (+11d) | 133d → 17d | 0d → 12d |  |  |
| 54 | Deploy iteration on DEV Server | 2008-07-21 → 2008-08-22 (+32d) | 2008-07-22 → 2008-08-25 (+34d) |  | 0d → 12d | 22, 46 → 53 |  |
| 55 | Test on DEV tier | 2008-07-23 → 2008-08-26 (+34d) | 2008-08-05 → 2008-09-08 (+34d) |  | 0d → 12d |  |  |
| 56 | **Transition Phase** | 2008-02-26 → 2008-09-25 (+212d) | 2008-08-28 → 2008-10-15 (+48d) | 133d → 15d |  | none → 16 |  |
| 57 | **QA** | 2008-02-26 → 2008-09-25 (+212d) | 2008-03-10 → 2008-10-08 (+212d) |  | 123d → 5d |  |  |
| 58 | Finalize Testplan | 2008-02-26 → 2008-09-25 (+212d) | 2008-03-03 → 2008-10-01 (+212d) |  | 123d → 5d |  |  |
| 59 | Finalize Test Cases | 2008-03-04 → 2008-10-02 (+212d) | 2008-03-10 → 2008-10-08 (+212d) |  | 123d → 5d |  |  |
| 60 | **Deploy** | 2008-08-06 → 2008-09-25 (+50d) | 2008-08-28 → 2008-10-15 (+48d) | 17d → 15d |  |  |  |
| 61 | **QA Server Deployment** | 2008-08-06 → 2008-09-25 (+50d) | 2008-08-19 → 2008-10-10 (+52d) | 10d → 12d |  |  |  |
| 62 | QA Testing | 2008-08-06 → 2008-09-25 (+50d) | 2008-08-19 → 2008-10-08 (+50d) |  |  |  |  |
| 64 | **Staging Server Deployment** | 2008-08-20 → 2008-10-09 (+50d) | 2008-08-26 → 2008-10-13 (+48d) | 5d → 3d |  |  |  |
| 65 | Staging Testing | 2008-08-20 → 2008-10-09 (+50d) | 2008-08-26 → 2008-10-13 (+48d) | 1w → 3d |  |  |  |
| 66 | **Production Server Deployment** | 2008-08-27 → 2008-10-14 (+48d) | 2008-08-28 → 2008-10-15 (+48d) |  |  |  |  |
| 67 | Production Verification | 2008-08-27 → 2008-10-14 (+48d) | 2008-08-28 → 2008-10-15 (+48d) |  |  |  |  |
| 68 | **Documentation** | 2008-07-21 → 2008-09-25 (+66d) | 2008-08-01 → 2008-10-08 (+68d) |  | 19d → 5d |  |  |
| 69 | Document How to Connect to caMOD | 2008-07-21 → 2008-09-25 (+66d) | 2008-07-25 → 2008-10-01 (+68d) |  | 19d → 5d |  |  |
| 70 | Documentation Edit by Documentation Team | 2008-07-28 → 2008-10-02 (+66d) | 2008-08-01 → 2008-10-08 (+68d) |  | 19d → 5d |  |  |
| 71 | caMOD 2.5 - Closeout | 2008-08-28 → 2008-10-15 (+48d) | 2008-08-28 → 2008-10-15 (+48d) |  |  |  |  |

## Version 5 (saved 2008-07-25)

Note of the change: updated 2.5 schedule to incorporate delay due to security patch release.

Last finish 2008-10-15 → 2008-11-25 (+41d). Complete tasks 0 → 9.

Changed:

| ID | Task | Start | Finish | Duration | Complete | Total float | Other |
| --- | --- | --- | --- | --- | --- | --- | --- |
| 1 | **caMOD 2.5 Release** | 2008-04-14 A | 2008-10-15 → 2008-11-25 (+41d) | 133d → 162d | 0% → 14% |  |  |
| 2 | **Inception Phase** |  | 2008-06-17 → 2008-08-13 (+57d) | 47d → 88d |  |  |  |
| 5 | Write a design document for gridified caMOD | 2008-05-30 → 2008-07-28 (+59d) | 2008-06-12 → 2008-08-08 (+57d) |  |  | 12d → 0d | constraint start no earlier than 2008-05-30 → start no earlier than 2008-07-28 |
| 6 | Submit the gridified design document to ARB | 2008-06-13 → 2008-08-11 (+59d) | 2008-06-17 → 2008-08-13 (+57d) |  |  | 12d → 0d | constraint none → finish no earlier than 2008-06-30 |
| 7 | Milestone: Completed Design Document | 2008-06-17 → 2008-08-13 (+57d) | 2008-06-17 → 2008-08-13 (+57d) |  |  | 76d → 64d |  |
| 8 | **Elaboration Phase** | 2008-06-18 → 2008-08-14 (+57d) | 2008-07-28 → 2008-09-23 (+57d) |  |  | 57d → 45d |  |
| 9 | Create valute domains for caDSR | 2008-06-18 → 2008-08-14 (+57d) | 2008-07-01 → 2008-08-27 (+57d) |  |  | 57d → 45d |  |
| 10 | Incorporate changes to the Object Model | 2008-07-02 → 2008-08-28 (+57d) | 2008-07-03 → 2008-08-29 (+57d) |  |  | 57d → 45d |  |
| 11 | Make code changes due to Object Model changes | 2008-07-04 → 2008-09-01 (+59d) | 2008-07-10 → 2008-09-05 (+57d) |  |  | 57d → 45d |  |
| 12 | Milestone: Soft Freeze Object Model | 2008-07-10 → 2008-09-05 (+57d) | 2008-07-10 → 2008-09-05 (+57d) |  |  | 57d → 45d |  |
| 13 | Round Trip, Import XMI into EA | 2008-07-11 → 2008-09-08 (+59d) | 2008-07-14 → 2008-09-09 (+57d) |  |  | 57d → 45d |  |
| 14 | Register Model in caDSR | 2008-07-15 → 2008-09-10 (+57d) | 2008-07-28 → 2008-09-23 (+57d) |  |  | 57d → 45d |  |
| 15 | Milestone: Model Registered in CADSR | 2008-07-28 → 2008-09-23 (+57d) | 2008-07-28 → 2008-09-23 (+57d) |  |  | 57d → 45d |  |
| 16 | **iteration 1:** | 2008-04-29 A | 2008-09-24 → 2008-11-04 (+41d) | 107d → 136d | 0% → 21% |  |  |
| 22 | **Enhancements and Misc bugs** | 2008-05-23 A |  |  | 0% → 69% | 0d → 29d |  |
| 23 | 12216 - Release date selection not maintaining value | 2008-05-23 A | 2008-05-23 A |  | 0% → 100% | 0d → none |  |
| 24 | 7028 - Add link to pdf users guide to Quick Links menu | 2008-05-26 A | 2008-05-26 A |  | 0% → 100% | 0d → none |  |
| 26 | 11013 - Use improved PubMed fetch script on publication submission page | 2008-05-29 A | 2008-06-04 A |  | 0% → 100% | 0d → none |  |
| 27 | 12064 - Title field on publication submission field has size limit OR PubMed fetch script does not retrieve complete publication title | 2008-06-05 A | 2008-06-05 A |  | 0% → 100% | 0d → none |  |
| 28 | 5173 - Publication issues - various bugs | 2008-06-06 A | 2008-06-09 A |  | 0% → 100% | 0d → none |  |
| 29 | 7474 - Give fields in "Customize Search" feature meaningful names | 2008-06-10 A |  |  | 0% → 50% | 0d → 69d |  |
| 30 | 12042 - Save query function broken - Fix | 2008-06-12 A | 2008-06-18 A |  | 0% → 100% | 0d → none |  |
| 31 | 7636 - Query not saved when search returns no models. | 2008-06-19 A | 2008-06-23 A |  | 0% → 100% | 0d → none |  |
| 32 | 5204 - left side search menu disappears when user customizes search | 2008-06-24 A | 2008-06-24 A |  | 0% → 100% | 0d → none |  |
| 33 | 7850 - Place a URL field on the image page | 2008-06-25 A |  |  | 0% → 50% | 0d → 53d |  |
| 34 | 5097 - submitting microarray data that are stored in other applications than caArray | 2008-06-30 A |  |  | 0% → 50% | 0d → 51.5d |  |
| 35 | 8400 - Duplication does not work for some fields | 2008-07-03 A |  |  | 0% → 50% | 0d → 49d |  |
| 36 | 5200 - Duplicate Model - status of duplicated model should be default be incomplete | 2008-07-10 A | 2008-07-14 A |  | 0% → 100% | 0d → none |  |
| 37 | 5249 - Fix searches - allow oracle result set > 1000 | 2008-07-15 A |  |  | 0% → 50% | 0d → 32.5d |  |
| 38 | 11007 - Add search for PMID to advanced search page | 2008-07-29 A |  |  | 0% → 50% | 0d → 31d |  |
| 39 | 9127 - Customize publication pages for rat to allow submissio & display of RGD references | 2008-08-01 A |  |  | 0% → 50% | 0d → 29d |  |
| 46 | **Remote API / Grid** | 2008-06-18 → 2008-08-14 (+57d) | 2008-08-14 → 2008-10-10 (+57d) |  |  | 12d → 0d |  |
| 47 | Make code changes due to Object Model changes | 2008-06-18 → 2008-08-14 (+57d) | 2008-06-24 → 2008-08-20 (+57d) |  |  | 12d → 0d |  |
| 48 | Milestone: Soft Freeze Object Model | 2008-06-25 → 2008-08-21 (+57d) | 2008-06-26 → 2008-08-22 (+57d) |  |  | 12d → 0d |  |
| 49 | Leverage caCORE 3.2 for remote API | 2008-06-27 → 2008-08-25 (+59d) | 2008-07-03 → 2008-08-29 (+57d) |  |  | 12d → 0d |  |
| 50 | Make caMod available in the grid (production) | 2008-07-04 → 2008-09-01 (+59d) | 2008-08-07 → 2008-10-03 (+57d) |  |  | 12d → 0d |  |
| 51 | Make only edited-approved models available through API | 2008-08-08 → 2008-10-06 (+59d) | 2008-08-14 → 2008-10-10 (+57d) |  |  | 12d → 0d |  |
| 52 | **Testing** | 2008-08-15 → 2008-10-13 (+59d) | 2008-09-08 → 2008-11-04 (+57d) |  |  | 12d → 0d |  |
| 53 | 7142 - Test cases that need to be added to the QA test scripts | 2008-08-15 → 2008-10-13 (+59d) | 2008-08-21 → 2008-10-17 (+57d) |  |  | 12d → 0d |  |
| 54 | Deploy iteration on DEV Server | 2008-08-22 → 2008-10-20 (+59d) | 2008-08-25 → 2008-10-21 (+57d) |  |  | 12d → 0d |  |
| 55 | Test on DEV tier | 2008-08-26 → 2008-10-22 (+57d) | 2008-09-08 → 2008-11-04 (+57d) |  |  | 12d → 0d |  |
| 56 | **Transition Phase** | 2008-09-25 → 2008-11-05 (+41d) | 2008-10-15 → 2008-11-25 (+41d) |  |  |  |  |
| 57 | **QA** | 2008-09-25 → 2008-11-05 (+41d) | 2008-10-08 → 2008-11-18 (+41d) |  |  |  |  |
| 58 | Finalize Testplan | 2008-09-25 → 2008-11-05 (+41d) | 2008-10-01 → 2008-11-11 (+41d) |  |  |  |  |
| 59 | Finalize Test Cases | 2008-10-02 → 2008-11-12 (+41d) | 2008-10-08 → 2008-11-18 (+41d) |  |  |  |  |
| 60 | **Deploy** | 2008-09-25 → 2008-11-05 (+41d) | 2008-10-15 → 2008-11-25 (+41d) |  |  |  |  |
| 61 | **QA Server Deployment** | 2008-09-25 → 2008-11-05 (+41d) | 2008-10-10 → 2008-11-20 (+41d) |  |  |  |  |
| 62 | QA Testing | 2008-09-25 → 2008-11-05 (+41d) | 2008-10-08 → 2008-11-18 (+41d) |  |  |  |  |
| 63 | Security Scan on QA | 2008-10-09 → 2008-11-19 (+41d) | 2008-10-10 → 2008-11-20 (+41d) |  |  |  |  |
| 64 | **Staging Server Deployment** | 2008-10-09 → 2008-11-19 (+41d) | 2008-10-13 → 2008-11-21 (+39d) |  |  |  |  |
| 65 | Staging Testing | 2008-10-09 → 2008-11-19 (+41d) | 2008-10-13 → 2008-11-21 (+39d) |  |  |  |  |
| 66 | **Production Server Deployment** | 2008-10-14 → 2008-11-24 (+41d) | 2008-10-15 → 2008-11-25 (+41d) |  |  |  |  |
| 67 | Production Verification | 2008-10-14 → 2008-11-24 (+41d) | 2008-10-15 → 2008-11-25 (+41d) |  |  |  |  |
| 68 | **Documentation** | 2008-09-25 → 2008-11-05 (+41d) | 2008-10-08 → 2008-11-18 (+41d) |  |  |  |  |
| 69 | Document How to Connect to caMOD | 2008-09-25 → 2008-11-05 (+41d) | 2008-10-01 → 2008-11-11 (+41d) |  |  |  |  |
| 70 | Documentation Edit by Documentation Team | 2008-10-02 → 2008-11-12 (+41d) | 2008-10-08 → 2008-11-18 (+41d) |  |  |  |  |
| 71 | caMOD 2.5 - Closeout | 2008-10-15 → 2008-11-25 (+41d) | 2008-10-15 → 2008-11-25 (+41d) |  |  |  |  |

## Version 6 (saved 2008-08-14)

Note of the change: 2.5 schedule update: updated stage testing duration to accommodate security testing.

Last finish 2008-11-25 → 2008-12-02 (+7d). Complete tasks 9 → 10.

Changed:

| ID | Task | Start | Finish | Duration | Complete | Total float | Other |
| --- | --- | --- | --- | --- | --- | --- | --- |
| 1 | **caMOD 2.5 Release** |  | 2008-11-25 → 2008-12-02 (+7d) | 162d → 167d | 14% → 15% |  |  |
| 16 | **iteration 1:** |  |  |  | 21% → 23% |  |  |
| 46 | **Remote API / Grid** | 2008-08-14 A |  |  | 0% → 5% |  |  |
| 48 | Milestone: Soft Freeze Object Model | 2008-08-21 A | 2008-08-22 A |  | 0% → 100% | 0d → none |  |
| 50 | Make caMod available in the grid |  |  |  |  |  | was named Make caMod available in the grid (production) |
| 56 | **Transition Phase** |  | 2008-11-25 → 2008-12-02 (+7d) | 15d → 20d |  |  |  |
| 60 | **Deploy** |  | 2008-11-25 → 2008-12-02 (+7d) | 15d → 20d |  |  |  |
| 64 | **Staging Server Deployment** |  | 2008-11-21 → 2008-11-28 (+7d) | 3d → 8d |  |  |  |
| 65 | Staging Testing |  | 2008-11-21 → 2008-11-28 (+7d) | 3d → 8d |  |  |  |
| 66 | **Production Server Deployment** | 2008-11-24 → 2008-12-01 (+7d) | 2008-11-25 → 2008-12-02 (+7d) |  |  |  |  |
| 67 | Production Verification | 2008-11-24 → 2008-12-01 (+7d) | 2008-11-25 → 2008-12-02 (+7d) |  |  |  |  |
| 71 | caMOD 2.5 - Closeout | 2008-11-25 → 2008-12-02 (+7d) | 2008-11-25 → 2008-12-02 (+7d) |  |  |  |  |

## Version 7 (saved 2008-10-28)

Note of the change: updated the new deploy to dev date

Last finish 2008-12-02 → 2008-12-10 (+8d).

Changed:

| ID | Task | Start | Finish | Duration | Total float | Predecessors | Other |
| --- | --- | --- | --- | --- | --- | --- | --- |
| 1 | **caMOD 2.5 Release** |  | 2008-12-02 → 2008-12-10 (+8d) | 167d → 173d |  |  |  |
| 16 | **iteration 1:** |  | 2008-11-04 → 2008-11-12 (+8d) | 136d → 142d |  |  |  |
| 52 | **Testing** |  | 2008-11-04 → 2008-11-12 (+8d) | 17d → 23d |  |  |  |
| 54 | Deploy iteration on DEV Server | 2008-10-20 → 2008-10-28 (+8d) | 2008-10-21 → 2008-10-29 (+8d) |  |  | 53 → none | constraint none → start no earlier than 2008-10-28 |
| 55 | Test on DEV tier | 2008-10-22 → 2008-10-30 (+8d) | 2008-11-04 → 2008-11-12 (+8d) |  |  |  |  |
| 56 | **Transition Phase** | 2008-11-05 → 2008-11-13 (+8d) | 2008-12-02 → 2008-12-10 (+8d) |  |  |  |  |
| 57 | **QA** | 2008-11-05 → 2008-11-13 (+8d) | 2008-11-18 → 2008-11-26 (+8d) |  | 7d → 10d |  |  |
| 58 | Finalize Testplan | 2008-11-05 → 2008-11-13 (+8d) | 2008-11-11 → 2008-11-19 (+8d) |  | 7d → 10d |  |  |
| 59 | Finalize Test Cases | 2008-11-12 → 2008-11-20 (+8d) | 2008-11-18 → 2008-11-26 (+8d) |  | 7d → 10d |  |  |
| 60 | **Deploy** | 2008-11-05 → 2008-11-13 (+8d) | 2008-12-02 → 2008-12-10 (+8d) |  |  |  |  |
| 61 | **QA Server Deployment** | 2008-11-05 → 2008-11-13 (+8d) | 2008-11-20 → 2008-11-28 (+8d) |  |  |  |  |
| 62 | QA Testing | 2008-11-05 → 2008-11-13 (+8d) | 2008-11-18 → 2008-11-26 (+8d) |  |  |  |  |
| 63 | Security Scan on QA | 2008-11-19 → 2008-11-27 (+8d) | 2008-11-20 → 2008-11-28 (+8d) |  | 5d → 8d |  |  |
| 64 | **Staging Server Deployment** | 2008-11-19 → 2008-11-27 (+8d) | 2008-11-28 → 2008-12-08 (+10d) |  |  |  |  |
| 65 | Staging Testing | 2008-11-19 → 2008-11-27 (+8d) | 2008-11-28 → 2008-12-08 (+10d) |  |  |  |  |
| 66 | **Production Server Deployment** | 2008-12-01 → 2008-12-09 (+8d) | 2008-12-02 → 2008-12-10 (+8d) |  |  |  |  |
| 67 | Production Verification | 2008-12-01 → 2008-12-09 (+8d) | 2008-12-02 → 2008-12-10 (+8d) |  |  |  |  |
| 68 | **Documentation** | 2008-11-05 → 2008-11-13 (+8d) | 2008-11-18 → 2008-11-26 (+8d) |  | 7d → 10d |  |  |
| 69 | Document How to Connect to caMOD | 2008-11-05 → 2008-11-13 (+8d) | 2008-11-11 → 2008-11-19 (+8d) |  | 7d → 10d |  |  |
| 70 | Documentation Edit by Documentation Team | 2008-11-12 → 2008-11-20 (+8d) | 2008-11-18 → 2008-11-26 (+8d) |  | 7d → 10d |  |  |
| 71 | caMOD 2.5 - Closeout | 2008-12-02 → 2008-12-10 (+8d) | 2008-12-02 → 2008-12-10 (+8d) |  |  |  |  |
