# camod Release 2.6.0

How a schedule from MS Project changed from version to version. A marks actual dates.

## Version 1 (saved 2009-06-02)

Note of the change: draft schedule for 2.6.0

| ID | WBS | Task | Duration | Start | Finish | Predecessors | Total float | Constraint |
| --- | --- | --- | --- | --- | --- | --- | --- | --- |
| 1 | 1 | **caMOD 2.6.0Release** | 103d | 2009-06-15 | 2009-11-04 |  | 0d |  |
| 2 | 1.1 | **Inception Phase** | 15d | 2009-06-15 | 2009-07-03 |  | 0d |  |
| 3 |  | Scope 2.6.0 Release | 12d | 2009-06-15 | 2009-06-30 |  | 0d | start no earlier than 2009-06-15 |
| 4 |  | Schedule 2.6.0 Release | 3d | 2009-07-01 | 2009-07-03 | 3 | 0d |  |
| 5 |  | Milestone: Inception Completed | 0d | 2009-07-03 | 2009-07-03 | 4 | 0d |  |
| 6 | 1.2 | **Elaboration Phase** | 10d | 2009-07-06 | 2009-07-17 | 5 | 0d |  |
| 7 |  | Use Case and Design Doc (caBIG template) | 7d | 2009-07-06 | 2009-07-14 |  | 0d |  |
| 8 |  | Review use cases / design with the "Review Board" | 3d | 2009-07-15 | 2009-07-17 | 7 | 0d | finish no earlier than 2009-01-27 |
| 9 |  | Milestone: Elaboration Completed | 0d | 2009-07-17 | 2009-07-17 | 7, 8 | 0d |  |
| 10 | 1.3 | **Construction Phase** | 65.5d | 2009-07-20 | 2009-10-19 | 6 | 0d |  |
| 11 | 1.3.1 | **BDAfy caMOD** | 33.25d | 2009-07-20 | 2009-09-03 |  | 12.5d |  |
| 12 | 1.3.1.1 | **Project set up** | 1d | 2009-07-20 | 2009-07-20 |  | 12.5d |  |
| 13 |  | CVS to SVN move | 1d | 2009-07-20 | 2009-07-20 |  | 12.5d |  |
| 14 |  | Request CI server | 1d | 2009-07-20 | 2009-07-20 |  | 12.5d |  |
| 15 |  | Request each tier to be provisioned | 1d | 2009-07-20 | 2009-07-20 |  | 12.5d |  |
| 16 |  | Copy development checklist and recreate for project and submit to BDA team. | 1d | 2009-07-21 | 2009-07-21 | 12 | 12.5d |  |
| 17 |  | Create a gap analysis based on BDA Checklist and submit to the BDA team. | 1d | 2009-07-22 | 2009-07-22 | 16 | 12.5d |  |
| 18 |  | Attend BDA Overview Session (Session 1) | 1d | 2009-07-23 | 2009-07-23 | 17 | 12.5d |  |
| 19 |  | Implement BDA on Java Petstore (to get familiar with scripts/features) | 1d | 2009-07-24 | 2009-07-24 | 18 | 12.5d |  |
| 20 |  | Complete and submit a draft copy of this project plan to the BDA team prior to session 2. | 1d | 2009-07-21 | 2009-07-21 | 12 | 74d |  |
| 21 |  | Attend BDA Implementation Session (Session 2) | 1d | 2009-07-27 | 2009-07-27 | 19 | 12.5d |  |
| 22 |  | View BDA screencasts (as necessary) | 1d | 2009-07-22 | 2009-07-22 | 20 | 75d |  |
| 23 |  | Create or update your Architecture Review Checklist (ARC) (See example) | 1d | 2009-07-28 | 2009-07-28 | 21 | 12.5d |  |
| 24 |  | Submit your wiki based BDA Project Plan to Systems, BDA, and the Government Sponsor. | 1d | 2009-07-22 | 2009-07-22 | 20 | 74d |  |
| 25 |  | Create Systems request (see Requesting CI Server section) for provisioning CI VM. | 1d | 2009-07-23 | 2009-07-23 | 24 | 74d |  |
| 26 |  | Attend a Project Plan Review Meeting with, Development, Systems, BDA, and the Government Sponsor to come up with agreed upon due dates of tasks. | 1d | 2009-07-23 | 2009-07-23 | 24 | 74d |  |
| 27 |  | Submit ARC request to Systems and Attend ARC meeting (See example) and get approval. | 1d | 2009-07-29 | 2009-07-29 | 23 | 12.5d |  |
| 28 |  | Create Systems request (see Requesting a Tier section) for provisioning DEV environment, AHP Track, access to scm-private svn repository | 1d | 2009-07-30 | 2009-07-30 | 27 | 12.5d |  |
| 29 |  | Write up current and complete installation instructions | 1d | 2009-07-31 | 2009-07-31 | 28 | 12.5d |  |
| 30 |  | Meet with BDA to review your installation instructions and do gap analysis against BDA templates and Macros | 1.5d | 2009-08-03 | 2009-08-04 | 29 | 12.5d |  |
| 31 |  | Modify directory structure | 1d | 2009-08-04 | 2009-08-05 | 30 | 12.5d |  |
| 32 |  | Identify and externalize per-environment properties into .properties files. See BDA Template-Properties for an explanation | 1d | 2009-08-05 | 2009-08-06 | 31 | 12.5d |  |
| 33 |  | Implement BDA templates and macros for your project (See BDA Template Scripts - How to implement) | 1d | 2009-08-06 | 2009-08-07 | 32 | 12.5d |  |
| 34 |  | Eliminate build script duality (duplication between master build scripts and subproject build scripts. See BDA Build Script Standards) | 1d | 2009-08-07 | 2009-08-10 | 33 | 12.5d |  |
| 35 |  | Verify build/deployment is JADS compatible (Install must be JAD compatible) | 1d | 2009-08-10 | 2009-08-11 | 34 | 12.5d |  |
| 36 |  | Setup CI Server (How to Install and Configure Hudson | 1d | 2009-08-11 | 2009-08-12 | 35 | 12.5d |  |
| 37 |  | First Build to Dev - Test the Command Line Deployment in DEV environment | 1d | 2009-08-12 | 2009-08-13 | 36 | 12.5d |  |
| 38 |  | Build Management implementation in DEV target environment (AntHill Pro Setup) | 1d | 2009-08-13 | 2009-08-14 | 37 | 12.5d |  |
| 39 |  | Create Systems request for provisioning QA environment, AHP Track, access to scm-private svn repository | 1d | 2009-08-14 | 2009-08-17 | 38 | 12.5d |  |
| 40 |  | Testing/Static Analysis Customization | 5d | 2009-08-17 | 2009-08-24 | 39 | 12.5d |  |
| 41 |  | * Implement GUI installers | 2d | 2009-08-24 | 2009-08-26 | 40 | 12.5d |  |
| 42 |  | Create wiki-based deployment instructions (based on template ) | 1d | 2009-08-26 | 2009-08-27 | 41 | 12.5d |  |
| 43 |  | First Deploy to QA -Test the Command Line Deployment in QA environment | 1d | 2009-08-27 | 2009-08-28 | 42 | 12.5d |  |
| 44 |  | Build Management implementation in QA (AntHill Pro Setup) | 1d | 2009-08-28 | 2009-08-31 | 43 | 12.5d |  |
| 45 |  | Create Systems request for provisioning STAGE environment, AHP Track, access to scm-private svn repository | 1d | 2009-08-31 | 2009-09-01 | 44 | 12.5d |  |
| 46 |  | Configure nightly AntHill Pro track DEV | 1d | 2009-09-01 | 2009-09-02 | 45 | 12.5d |  |
| 47 |  | Ask BDA team to add your project to BDA Certification Dashboard | 0.25d | 2009-09-02 | 2009-09-02 | 46 | 45.25d |  |
| 48 |  | Request Systems team to configure STAGE deployment in AntHill Pro | 0.25d | 2009-09-02 | 2009-09-02 | 46 | 45d |  |
| 49 |  | Request Systems to perform dry-run deployment in STAGE target environment by following Build Promotion Checklist | 0.25d | 2009-09-02 | 2009-09-02 | 48 | 45d |  |
| 50 |  | Create Systems requests for provisioning PROD environment, AHP Track, access to scm-private svn repository | 0.25d | 2009-09-02 | 2009-09-02 | 46 | 12.5d |  |
| 51 |  | Request Systems team to configure PROD deployment in AntHill Pro by following Build Promotion Checklist | 0.25d | 2009-09-02 | 2009-09-02 | 50 | 12.5d |  |
| 52 |  | Request deployment to PROD target environment | 0.25d | 2009-09-03 | 2009-09-03 | 51 | 12.5d |  |
| 53 |  | Milestone: caMOD BDA certified | 0d | 2009-09-03 | 2009-09-03 | 52 | 12.5d |  |
| 54 | 1.3.2 | **BDAfy EVSTree** | 32.25d | 2009-09-03 | 2009-10-19 | 53 | 12.5d |  |
| 55 |  | Milestone: Start EVSTree BDAfication | 0d | 2009-09-03 | 2009-09-03 | 53 | 40.75d |  |
| 56 | 1.3.2.2 | **Project set up** | 1d | 2009-09-03 | 2009-09-04 | 55 | 40.75d |  |
| 57 |  | CVS to SVN move | 1d | 2009-09-03 | 2009-09-04 |  | 77.75d |  |
| 58 |  | Request CI server | 1d | 2009-09-03 | 2009-09-04 |  | 77.75d |  |
| 59 |  | Request each tier to be provisioned | 1d | 2009-09-03 | 2009-09-04 |  | 77.75d |  |
| 60 |  | Copy development checklist and recreate for project and submit to BDA team. | 1d | 2009-09-03 | 2009-09-04 | 53 | 12.5d |  |
| 61 |  | Create a gap analysis based on BDA Checklist and submit to the BDA team. | 1d | 2009-09-04 | 2009-09-07 | 60 | 12.5d |  |
| 62 |  | Attend BDA Overview Session (Session 1) | 1d | 2009-09-07 | 2009-09-08 | 61 | 12.5d |  |
| 63 |  | Implement BDA on Java Petstore (to get familiar with scripts/features) | 1d | 2009-09-08 | 2009-09-09 | 62 | 12.5d |  |
| 64 |  | Complete and submit a draft copy of this project plan to the BDA team prior to session 2. | 1d | 2009-09-04 | 2009-09-07 | 56 | 40.75d |  |
| 65 |  | Attend BDA Implementation Session (Session 2) | 1d | 2009-09-09 | 2009-09-10 | 63 | 12.5d |  |
| 66 |  | View BDA screencasts (as necessary) | 1d | 2009-09-07 | 2009-09-08 | 64 | 41.75d |  |
| 67 |  | Create or update your Architecture Review Checklist (ARC) (See example) | 1d | 2009-09-10 | 2009-09-11 | 65 | 12.5d |  |
| 68 |  | Submit your wiki based BDA Project Plan to Systems, BDA, and the Government Sponsor. | 1d | 2009-09-07 | 2009-09-08 | 64 | 40.75d |  |
| 69 |  | Create Systems request (see Requesting CI Server section) for provisioning CI VM. | 1d | 2009-09-08 | 2009-09-09 | 68 | 40.75d |  |
| 70 |  | Attend a Project Plan Review Meeting with, Development, Systems, BDA, and the Government Sponsor to come up with agreed upon due dates of tasks. | 1d | 2009-09-08 | 2009-09-09 | 68 | 40.75d |  |

| ID | WBS | Task | Duration | Start | Finish | Predecessors | Total float | Constraint |
| --- | --- | --- | --- | --- | --- | --- | --- | --- |
| 71 |  | Submit ARC request to Systems and Attend ARC meeting (See example) and get approval. | 1d | 2009-09-11 | 2009-09-14 | 67 | 12.5d |  |
| 72 |  | Create Systems request (see Requesting a Tier section) for provisioning DEV environment, AHP Track, access to scm-private svn repository | 1d | 2009-09-14 | 2009-09-15 | 71 | 12.5d |  |
| 73 |  | Write up current and complete installation instructions | 1d | 2009-09-15 | 2009-09-16 | 72 | 12.5d |  |
| 74 |  | Meet with BDA to review your installation instructions and do gap analysis against BDA templates and Macros | 1.5d | 2009-09-16 | 2009-09-17 | 73 | 12.5d |  |
| 75 |  | Modify directory structure | 1d | 2009-09-17 | 2009-09-18 | 74 | 12.5d |  |
| 76 |  | Identify and externalize per-environment properties into .properties files. See BDA Template-Properties for an explanation | 1d | 2009-09-18 | 2009-09-21 | 75 | 12.5d |  |
| 77 |  | Implement BDA templates and macros for your project (See BDA Template Scripts - How to implement) | 1d | 2009-09-21 | 2009-09-22 | 76 | 12.5d |  |
| 78 |  | Eliminate build script duality (duplication between master build scripts and subproject build scripts. See BDA Build Script Standards) | 1d | 2009-09-22 | 2009-09-23 | 77 | 12.5d |  |
| 79 |  | Verify build/deployment is JADS compatible (Install must be JAD compatible) | 1d | 2009-09-23 | 2009-09-24 | 78 | 12.5d |  |
| 80 |  | Setup CI Server (How to Install and Configure Hudson | 1d | 2009-09-24 | 2009-09-25 | 79 | 12.5d |  |
| 81 |  | First Build to Dev - Test the Command Line Deployment in DEV environment | 1d | 2009-09-25 | 2009-09-28 | 80 | 12.5d |  |
| 82 |  | Build Management implementation in DEV target environment (AntHill Pro Setup) | 1d | 2009-09-28 | 2009-09-29 | 81 | 12.5d |  |
| 83 |  | Create Systems request for provisioning QA environment, AHP Track, access to scm-private svn repository | 1d | 2009-09-29 | 2009-09-30 | 82 | 12.5d |  |
| 84 |  | Testing/Static Analysis Customization | 5d | 2009-09-30 | 2009-10-07 | 83 | 12.5d |  |
| 85 |  | * Implement GUI installers | 2d | 2009-10-07 | 2009-10-09 | 84 | 12.5d |  |
| 86 |  | Create wiki-based deployment instructions (based on template ) | 1d | 2009-10-09 | 2009-10-12 | 85 | 12.5d |  |
| 87 |  | First Deploy to QA -Test the Command Line Deployment in QA environment | 1d | 2009-10-12 | 2009-10-13 | 86 | 12.5d |  |
| 88 |  | Build Management implementation in QA (AntHill Pro Setup) | 1d | 2009-10-13 | 2009-10-14 | 87 | 12.5d |  |
| 89 |  | Create Systems request for provisioning STAGE environment, AHP Track, access to scm-private svn repository | 1d | 2009-10-14 | 2009-10-15 | 88 | 12.5d |  |
| 90 |  | Configure nightly AntHill Pro track DEV | 1d | 2009-10-15 | 2009-10-16 | 89 | 12.5d |  |
| 91 |  | Ask BDA team to add your project to BDA Certification Dashboard | 0.25d | 2009-10-16 | 2009-10-16 | 90 | 13d |  |
| 92 |  | Request Systems team to configure STAGE deployment in AntHill Pro | 0.25d | 2009-10-16 | 2009-10-16 | 90 | 12.75d |  |
| 93 |  | Request Systems to perform dry-run deployment in STAGE target environment by following Build Promotion Checklist | 0.25d | 2009-10-19 | 2009-10-19 | 92 | 12.75d |  |
| 94 |  | Create Systems requests for provisioning PROD environment, AHP Track, access to scm-private svn repository | 0.25d | 2009-10-16 | 2009-10-16 | 90 | 12.5d |  |
| 95 |  | Request Systems team to configure PROD deployment in AntHill Pro by following Build Promotion Checklist | 0.25d | 2009-10-19 | 2009-10-19 | 94 | 12.5d |  |
| 96 |  | Request deployment to PROD target environment | 0.25d | 2009-10-19 | 2009-10-19 | 95 | 12.5d |  |
| 97 |  | Milestone: caMOD BDA certified | 0d | 2009-10-19 | 2009-10-19 | 96 | 12.5d |  |
| 98 |  | Milestone: Complete Development | 0d | 2009-10-19 | 2009-10-19 | 53, 97 | 12.5d |  |
| 99 | 1.3.4 | **Testing** | 21d | 2009-07-20 | 2009-08-17 |  | 0d |  |
| 100 |  | Update test cases | 9d | 2009-07-20 | 2009-07-30 |  | 0d |  |
| 101 |  | Deploy iteration on DEV Server | 2d | 2009-07-31 | 2009-08-03 | 100 | 0d |  |
| 102 |  | Test on DEV tier | 10d | 2009-08-04 | 2009-08-17 | 101 | 0d |  |
| 103 |  | Milestone: Construction Completed | 0d | 2009-08-17 | 2009-08-17 | 99 | 0d |  |
| 104 | 1.4 | **Transition Phase** | 47d | 2009-09-01 | 2009-11-04 |  | 0d |  |
| 105 | 1.4.1 | **QA** | 33d | 2009-09-01 | 2009-10-15 |  | 0d |  |
| 106 |  | Finalize Testplan | 30d | 2009-09-01 | 2009-10-12 |  | 0d | start no earlier than 2009-09-01 |
| 107 |  | Finalize Test Cases | 3d | 2009-10-13 | 2009-10-15 | 106 | 0d |  |
| 108 | 1.4.2 | **Deploy** | 14d | 2009-10-16 | 2009-11-04 |  | 0d |  |
| 109 | 1.4.2.1 | **QA Server Deployment** | 5d | 2009-10-16 | 2009-10-22 | 103, 105 | 0d |  |
| 110 |  | QA Testing | 5d | 2009-10-16 | 2009-10-22 | 105 | 0d |  |
| 111 |  | Milestone: QA Testing Completed | 0d | 2009-10-22 | 2009-10-22 | 110 | 0d |  |
| 112 | 1.4.2.2 | **Staging Server Deployment** | 5d | 2009-10-23 | 2009-10-29 |  | 0d |  |
| 113 |  | Stage Testing | 5d | 2009-10-23 | 2009-10-29 | 111 | 0d |  |
| 114 |  | App scan on Stage | 5d | 2009-10-23 | 2009-10-29 | 111 | 0d |  |
| 115 |  | Milestone: Stage Testing Completed | 0d | 2009-10-29 | 2009-10-29 | 114, 113 | 0d |  |
| 116 | 1.4.2.3 | **Production Server Deployment** | 4d | 2009-10-30 | 2009-11-04 |  | 0d |  |
| 117 |  | Production server deployment | 2d | 2009-10-30 | 2009-11-02 | 115 | 0d |  |
| 118 |  | Production Verification | 2d | 2009-11-03 | 2009-11-04 | 117 | 0d |  |
| 119 | 1.4.3 | **Documentation** | 5d | 2009-10-16 | 2009-10-22 |  | 9d |  |
| 120 |  | Documentation Edit by Documentation Team | 5d | 2009-10-16 | 2009-10-22 | 105 | 9d |  |
| 121 | 1.4.4 | **Content Page Update** | 3d | 2009-10-30 | 2009-11-03 |  | 1d |  |
| 122 |  | zope site update | 3d | 2009-10-30 | 2009-11-03 | 112 | 1d |  |
| 123 |  | gForge download site update | 3d | 2009-10-30 | 2009-11-03 | 112 | 1d |  |
| 124 |  | caMOD 2.6.0 - Closeout | 0d | 2009-11-04 | 2009-11-04 | 104 | 0d |  |

## Version 2 (saved 2009-06-05)

Note of the change: draft schedule for scoped 2.6.0 release

Last finish 2009-11-04 → 2009-12-29 (+55d).

Added:

| ID | Task | Duration | Start | Finish | Predecessors | Resources |
| --- | --- | --- | --- | --- | --- | --- |
| 88 | **Gforge Features** | 30.5d? | 2009-09-22 | 2009-11-04 | 86 |  |
| 89 | 4769 - Provide additional data from MGI - Parsing MGI data | 10d | 2009-09-22 | 2009-10-06 |  | Sima |
| 90 | 4788 - IDEA - redo genetic description page to retrieve data from external source similar to what publication page does with PubMed | 10d | 2009-10-06 | 2009-10-21 | 89 | Sima |
| 91 | 11501 - Add mouse subspecies to caMOD | 3d | 2009-10-21 | 2009-10-26 | 90 | Sima |
| 92 | 19879 - Display PMID number on search page | 0.5d | 2009-10-26 | 2009-10-26 | 91 | Sima |
| 93 | 19876 - Therapy search results page is getting too long | 3d | 2009-10-27 | 2009-10-29 | 92 | Sima |
| 94 | 17041 - Add search for model id to simple and advanced search page | 1d? | 2009-10-30 | 2009-10-30 | 93 | Sima |
| 95 | 20593 - Entered date changes every single time the model characteristics page is changed | 2d | 2009-11-02 | 2009-11-03 | 94 | Sima |
| 96 | 18438 - Change label from MMHCC Repository to NCI Mouse Repository | 0.5d | 2009-11-04 | 2009-11-04 | 95 | Sima |
| 97 | ? - Add privacy statement links (PII) | 0.5d | 2009-11-04 | 2009-11-04 | 96 | Sima |
| 98 | Milestone: Complete Features and Bug fixes | 0d | 2009-11-04 | 2009-11-04 | 97 |  |

Removed: 41 * Implement GUI installers; 51 Request Systems team to configure PROD deployment in AntHill Pro by following Build Promotion Checklist; 52 Request deployment to PROD target environment; 62 Attend BDA Overview Session (Session 1); 63 Implement BDA on Java Petstore (to get familiar with scripts/features); 65 Attend BDA Implementation Session (Session 2); 66 View BDA screencasts (as necessary); 85 * Implement GUI installers; 95 Request Systems team to configure PROD deployment in AntHill Pro by following Build Promotion Checklist; 96 Request deployment to PROD target environment

Changed:

| ID | Task | Start | Finish | Duration | Total float | Predecessors |
| --- | --- | --- | --- | --- | --- | --- |
| 1 | **caMOD 2.6.0Release** |  | 2009-11-04 → 2009-12-29 (+55d) | 103d → 135d? |  |  |
| 2 | **Inception Phase** |  | 2009-07-03 → 2009-06-22 (-11d) | 15d → 6d |  |  |
| 3 | Scope 2.6.0 Release |  | 2009-06-30 → 2009-06-17 (-13d) | 12d → 3d |  |  |
| 4 | Schedule 2.6.0 Release | 2009-07-01 → 2009-06-18 (-13d) | 2009-07-03 → 2009-06-22 (-11d) |  |  |  |
| 5 | Milestone: Inception Completed | 2009-07-03 → 2009-06-22 (-11d) | 2009-07-03 → 2009-06-22 (-11d) |  |  |  |
| 6 | **Elaboration Phase** | 2009-07-06 → 2009-06-23 (-13d) | 2009-07-17 → 2009-06-30 (-17d) | 10d → 6d |  |  |
| 7 | Use Case and Design Doc (caBIG template) | 2009-07-06 → 2009-06-23 (-13d) | 2009-07-14 → 2009-06-29 (-15d) | 7d → 5d |  |  |
| 8 | Review use cases / design with the "Review Board" | 2009-07-15 → 2009-06-30 (-15d) | 2009-07-17 → 2009-06-30 (-17d) | 3d → 1d |  |  |
| 9 | Milestone: Elaboration Completed | 2009-07-17 → 2009-06-30 (-17d) | 2009-07-17 → 2009-06-30 (-17d) |  |  |  |
| 10 | **Construction Phase** | 2009-07-20 → 2009-07-01 (-19d) | 2009-10-19 → 2009-12-08 (+50d) | 65.5d → 109d? |  |  |
| 11 | **BDAfy caMOD** | 2009-07-20 → 2009-07-01 (-19d) | 2009-09-03 → 2009-08-13 (-21d) | 33.25d → 31d | 12.5d → 0d |  |
| 12 | **Project set up** | 2009-07-20 → 2009-07-01 (-19d) | 2009-07-20 → 2009-07-01 (-19d) |  | 12.5d → 0d |  |
| 13 | CVS to SVN move | 2009-07-20 → 2009-07-01 (-19d) | 2009-07-20 → 2009-07-01 (-19d) |  | 12.5d → 0d |  |
| 14 | Request CI server | 2009-07-20 → 2009-07-01 (-19d) | 2009-07-20 → 2009-07-01 (-19d) |  | 12.5d → 0d |  |
| 15 | Request each tier to be provisioned | 2009-07-20 → 2009-07-01 (-19d) | 2009-07-20 → 2009-07-01 (-19d) |  | 12.5d → 0d |  |
| 16 | Copy development checklist and recreate for project and submit to BDA team. | 2009-07-21 → 2009-07-02 (-19d) | 2009-07-21 → 2009-07-02 (-19d) |  | 12.5d → 0d |  |
| 17 | Create a gap analysis based on BDA Checklist and submit to the BDA team. | 2009-07-22 → 2009-07-06 (-16d) | 2009-07-22 → 2009-07-06 (-16d) |  | 12.5d → 0d |  |
| 18 | Attend BDA Overview Session (Session 1) | 2009-07-23 → 2009-07-07 (-16d) | 2009-07-23 → 2009-07-07 (-16d) |  | 12.5d → 0d |  |
| 19 | Implement BDA on Java Petstore (to get familiar with scripts/features) | 2009-07-24 → 2009-07-08 (-16d) | 2009-07-24 → 2009-07-08 (-16d) |  | 12.5d → 0d |  |
| 20 | Complete and submit a draft copy of this project plan to the BDA team prior to session 2. | 2009-07-21 → 2009-07-02 (-19d) | 2009-07-21 → 2009-07-02 (-19d) |  | 74d → 119d |  |
| 21 | Attend BDA Implementation Session (Session 2) | 2009-07-27 → 2009-07-09 (-18d) | 2009-07-27 → 2009-07-09 (-18d) |  | 12.5d → 0d |  |
| 22 | View BDA screencasts (as necessary) | 2009-07-22 → 2009-07-06 (-16d) | 2009-07-22 → 2009-07-06 (-16d) |  | 75d → 120d |  |
| 23 | Create or update your Architecture Review Checklist (ARC) (See example) | 2009-07-28 → 2009-07-10 (-18d) | 2009-07-28 → 2009-07-10 (-18d) |  | 12.5d → 0d |  |
| 24 | Submit your wiki based BDA Project Plan to Systems, BDA, and the Government Sponsor. | 2009-07-22 → 2009-07-06 (-16d) | 2009-07-22 → 2009-07-06 (-16d) |  | 74d → 119d |  |
| 25 | Create Systems request (see Requesting CI Server section) for provisioning CI VM. | 2009-07-23 → 2009-07-07 (-16d) | 2009-07-23 → 2009-07-07 (-16d) |  | 74d → 119d |  |
| 26 | Attend a Project Plan Review Meeting with, Development, Systems, BDA, and the Government Sponsor to come up with agreed upon due dates of tasks. | 2009-07-23 → 2009-07-07 (-16d) | 2009-07-23 → 2009-07-07 (-16d) |  | 74d → 119d |  |
| 27 | Submit ARC request to Systems and Attend ARC meeting (See example) and get approval. | 2009-07-29 → 2009-07-13 (-16d) | 2009-07-29 → 2009-07-13 (-16d) |  | 12.5d → 0d |  |
| 28 | Create Systems request (see Requesting a Tier section) for provisioning DEV environment, AHP Track, access to scm-private svn repository | 2009-07-30 → 2009-07-14 (-16d) | 2009-07-30 → 2009-07-14 (-16d) |  | 12.5d → 0d |  |
| 29 | Write up current and complete installation instructions | 2009-07-31 → 2009-07-15 (-16d) | 2009-07-31 → 2009-07-15 (-16d) |  | 12.5d → 0d |  |
| 30 | Meet with BDA to review your installation instructions and do gap analysis against BDA templates and Macros | 2009-08-03 → 2009-07-16 (-18d) | 2009-08-04 → 2009-07-17 (-18d) |  | 12.5d → 0d |  |
| 31 | Modify directory structure | 2009-08-04 → 2009-07-17 (-18d) | 2009-08-05 → 2009-07-20 (-16d) |  | 12.5d → 0d |  |
| 32 | Identify and externalize per-environment properties into .properties files. See BDA Template-Properties for an explanation | 2009-08-05 → 2009-07-20 (-16d) | 2009-08-06 → 2009-07-21 (-16d) |  | 12.5d → 0d |  |
| 33 | Implement BDA templates and macros for your project (See BDA Template Scripts - How to implement) | 2009-08-06 → 2009-07-21 (-16d) | 2009-08-07 → 2009-07-22 (-16d) |  | 12.5d → 0d |  |
| 34 | Eliminate build script duality (duplication between master build scripts and subproject build scripts. See BDA Build Script Standards) | 2009-08-07 → 2009-07-22 (-16d) | 2009-08-10 → 2009-07-23 (-18d) |  | 12.5d → 0d |  |
| 35 | Verify build/deployment is JADS compatible (Install must be JAD compatible) | 2009-08-10 → 2009-07-23 (-18d) | 2009-08-11 → 2009-07-24 (-18d) |  | 12.5d → 0d |  |
| 36 | Setup CI Server (How to Install and Configure Hudson | 2009-08-11 → 2009-07-24 (-18d) | 2009-08-12 → 2009-07-27 (-16d) |  | 12.5d → 0d |  |
| 37 | First Build to Dev - Test the Command Line Deployment in DEV environment | 2009-08-12 → 2009-07-27 (-16d) | 2009-08-13 → 2009-07-28 (-16d) |  | 12.5d → 0d |  |
| 38 | Build Management implementation in DEV target environment (AntHill Pro Setup) | 2009-08-13 → 2009-07-28 (-16d) | 2009-08-14 → 2009-07-29 (-16d) |  | 12.5d → 0d |  |
| 39 | Create Systems request for provisioning QA environment, AHP Track, access to scm-private svn repository | 2009-08-14 → 2009-07-29 (-16d) | 2009-08-17 → 2009-07-30 (-18d) |  | 12.5d → 0d |  |
| 40 | Testing/Static Analysis Customization | 2009-08-17 → 2009-07-30 (-18d) | 2009-08-24 → 2009-08-06 (-18d) |  | 12.5d → 0d |  |
| 41 | Create wiki-based deployment instructions (based on template ) | 2009-08-26 → 2009-08-06 (-20d) | 2009-08-27 → 2009-08-07 (-20d) |  | 12.5d → 0d | * Implement GUI installers → 40 |
| 42 | First Deploy to QA -Test the Command Line Deployment in QA environment | 2009-08-27 → 2009-08-07 (-20d) | 2009-08-28 → 2009-08-10 (-18d) |  | 12.5d → 0d |  |
| 43 | Build Management implementation in QA (AntHill Pro Setup) | 2009-08-28 → 2009-08-10 (-18d) | 2009-08-31 → 2009-08-11 (-20d) |  | 12.5d → 0d |  |
| 44 | Create Systems request for provisioning STAGE environment, AHP Track, access to scm-private svn repository | 2009-08-31 → 2009-08-11 (-20d) | 2009-09-01 → 2009-08-12 (-20d) |  | 12.5d → 0d |  |
| 45 | Configure nightly AntHill Pro track DEV | 2009-09-01 → 2009-08-12 (-20d) | 2009-09-02 → 2009-08-13 (-20d) |  | 12.5d → 0d |  |
| 46 | Ask BDA team to add your project to BDA Certification Dashboard | 2009-09-02 → 2009-08-13 (-20d) | 2009-09-02 → 2009-08-13 (-20d) |  | 45.25d → 92.25d |  |
| 47 | Request Systems team to configure STAGE deployment in AntHill Pro | 2009-09-02 → 2009-08-13 (-20d) | 2009-09-02 → 2009-08-13 (-20d) |  | 45d → 92d |  |
| 48 | Request Systems to perform dry-run deployment in STAGE target environment by following Build Promotion Checklist | 2009-09-02 → 2009-08-13 (-20d) | 2009-09-02 → 2009-08-13 (-20d) |  | 45d → 92d |  |
| 49 | Create Systems requests for provisioning PROD environment, AHP Track, access to scm-private svn repository | 2009-09-02 → 2009-08-13 (-20d) | 2009-09-02 → 2009-08-13 (-20d) |  | 12.5d → 0d |  |
| 50 | Milestone: caMOD BDA certified | 2009-09-03 → 2009-08-13 (-21d) | 2009-09-03 → 2009-08-13 (-21d) |  | 12.5d → 0d | Request deployment to PROD target environment → 49 |
| 51 | **BDAfy EVSTree** | 2009-09-03 → 2009-08-13 (-21d) | 2009-10-19 → 2009-09-22 (-27d) | 32.25d → 27d | 12.5d → 0d |  |
| 52 | Milestone: Start EVSTree BDAfication | 2009-09-03 → 2009-08-13 (-21d) | 2009-09-03 → 2009-08-13 (-21d) |  | 40.75d → 88.25d |  |
| 53 | **Project set up** | 2009-09-03 → 2009-08-13 (-21d) | 2009-09-04 → 2009-08-14 (-21d) |  | 40.75d → 88.25d |  |
| 54 | CVS to SVN move | 2009-09-03 → 2009-08-13 (-21d) | 2009-09-04 → 2009-08-14 (-21d) |  | 77.75d → 88.25d |  |
| 55 | Request CI server | 2009-09-03 → 2009-08-13 (-21d) | 2009-09-04 → 2009-08-14 (-21d) |  | 77.75d → 88.25d |  |
| 56 | Request each tier to be provisioned | 2009-09-03 → 2009-08-13 (-21d) | 2009-09-04 → 2009-08-14 (-21d) |  | 77.75d → 88.25d |  |
| 57 | Copy development checklist and recreate for project and submit to BDA team. | 2009-09-03 → 2009-08-13 (-21d) | 2009-09-04 → 2009-08-14 (-21d) |  | 12.5d → 0d |  |
| 58 | Create a gap analysis based on BDA Checklist and submit to the BDA team. | 2009-09-04 → 2009-08-14 (-21d) | 2009-09-07 → 2009-08-17 (-21d) |  | 12.5d → 0d |  |
| 59 | Complete and submit a draft copy of this project plan to the BDA team prior to session 2. | 2009-09-04 → 2009-08-14 (-21d) | 2009-09-07 → 2009-08-17 (-21d) |  | 40.75d → 88.25d |  |
| 60 | Create or update your Architecture Review Checklist (ARC) (See example) | 2009-09-10 → 2009-08-17 (-24d) | 2009-09-11 → 2009-08-18 (-24d) |  | 12.5d → 0d | Attend BDA Implementation Session (Session 2) → 58 |
| 61 | Submit your wiki based BDA Project Plan to Systems, BDA, and the Government Sponsor. | 2009-09-07 → 2009-08-17 (-21d) | 2009-09-08 → 2009-08-18 (-21d) |  | 40.75d → 88.25d |  |
| 62 | Create Systems request (see Requesting CI Server section) for provisioning CI VM. | 2009-09-08 → 2009-08-18 (-21d) | 2009-09-09 → 2009-08-19 (-21d) |  | 40.75d → 88.25d |  |
| 63 | Attend a Project Plan Review Meeting with, Development, Systems, BDA, and the Government Sponsor to come up with agreed upon due dates of tasks. | 2009-09-08 → 2009-08-18 (-21d) | 2009-09-09 → 2009-08-19 (-21d) |  | 40.75d → 88.25d |  |
| 64 | Submit ARC request to Systems and Attend ARC meeting (See example) and get approval. | 2009-09-11 → 2009-08-18 (-24d) | 2009-09-14 → 2009-08-19 (-26d) |  | 12.5d → 0d |  |
| 65 | Create Systems request (see Requesting a Tier section) for provisioning DEV environment, AHP Track, access to scm-private svn repository | 2009-09-14 → 2009-08-19 (-26d) | 2009-09-15 → 2009-08-20 (-26d) |  | 12.5d → 0d |  |
| 66 | Write up current and complete installation instructions | 2009-09-15 → 2009-08-20 (-26d) | 2009-09-16 → 2009-08-21 (-26d) |  | 12.5d → 0d |  |
| 67 | Meet with BDA to review your installation instructions and do gap analysis against BDA templates and Macros | 2009-09-16 → 2009-08-21 (-26d) | 2009-09-17 → 2009-08-25 (-23d) |  | 12.5d → 0d |  |
| 68 | Modify directory structure | 2009-09-17 → 2009-08-25 (-23d) | 2009-09-18 → 2009-08-26 (-23d) |  | 12.5d → 0d |  |
| 69 | Identify and externalize per-environment properties into .properties files. See BDA Template-Properties for an explanation | 2009-09-18 → 2009-08-26 (-23d) | 2009-09-21 → 2009-08-27 (-25d) |  | 12.5d → 0d |  |
| 70 | Implement BDA templates and macros for your project (See BDA Template Scripts - How to implement) | 2009-09-21 → 2009-08-27 (-25d) | 2009-09-22 → 2009-08-28 (-25d) |  | 12.5d → 0d |  |

| ID | Task | Start | Finish | Duration | Total float | Predecessors |
| --- | --- | --- | --- | --- | --- | --- |
| 71 | Eliminate build script duality (duplication between master build scripts and subproject build scripts. See BDA Build Script Standards) | 2009-09-22 → 2009-08-28 (-25d) | 2009-09-23 → 2009-08-31 (-23d) |  | 12.5d → 0d |  |
| 72 | Verify build/deployment is JADS compatible (Install must be JAD compatible) | 2009-09-23 → 2009-08-31 (-23d) | 2009-09-24 → 2009-09-01 (-23d) |  | 12.5d → 0d |  |
| 73 | Setup CI Server (How to Install and Configure Hudson | 2009-09-24 → 2009-09-01 (-23d) | 2009-09-25 → 2009-09-02 (-23d) |  | 12.5d → 0d |  |
| 74 | First Build to Dev - Test the Command Line Deployment in DEV environment | 2009-09-25 → 2009-09-02 (-23d) | 2009-09-28 → 2009-09-03 (-25d) |  | 12.5d → 0d |  |
| 75 | Build Management implementation in DEV target environment (AntHill Pro Setup) | 2009-09-28 → 2009-09-03 (-25d) | 2009-09-29 → 2009-09-04 (-25d) |  | 12.5d → 0d |  |
| 76 | Create Systems request for provisioning QA environment, AHP Track, access to scm-private svn repository | 2009-09-29 → 2009-09-04 (-25d) | 2009-09-30 → 2009-09-08 (-22d) |  | 12.5d → 0d |  |
| 77 | Testing/Static Analysis Customization | 2009-09-30 → 2009-09-08 (-22d) | 2009-10-07 → 2009-09-15 (-22d) |  | 12.5d → 0d |  |
| 78 | Create wiki-based deployment instructions (based on template ) | 2009-10-09 → 2009-09-15 (-24d) | 2009-10-12 → 2009-09-16 (-26d) |  | 12.5d → 0d | * Implement GUI installers → 77 |
| 79 | First Deploy to QA -Test the Command Line Deployment in QA environment | 2009-10-12 → 2009-09-16 (-26d) | 2009-10-13 → 2009-09-17 (-26d) |  | 12.5d → 0d |  |
| 80 | Build Management implementation in QA (AntHill Pro Setup) | 2009-10-13 → 2009-09-17 (-26d) | 2009-10-14 → 2009-09-18 (-26d) |  | 12.5d → 0d |  |
| 81 | Create Systems request for provisioning STAGE environment, AHP Track, access to scm-private svn repository | 2009-10-14 → 2009-09-18 (-26d) | 2009-10-15 → 2009-09-21 (-24d) |  | 12.5d → 0d |  |
| 82 | Configure nightly AntHill Pro track DEV | 2009-10-15 → 2009-09-21 (-24d) | 2009-10-16 → 2009-09-22 (-24d) |  | 12.5d → 0d |  |
| 83 | Ask BDA team to add your project to BDA Certification Dashboard | 2009-10-16 → 2009-09-22 (-24d) | 2009-10-16 → 2009-09-22 (-24d) |  | 13d → 65.5d |  |
| 84 | Request Systems team to configure STAGE deployment in AntHill Pro | 2009-10-16 → 2009-09-22 (-24d) | 2009-10-16 → 2009-09-22 (-24d) |  | 12.75d → 65.25d |  |
| 85 | Request Systems to perform dry-run deployment in STAGE target environment by following Build Promotion Checklist | 2009-10-19 → 2009-09-22 (-27d) | 2009-10-19 → 2009-09-22 (-27d) |  | 12.75d → 65.25d |  |
| 86 | Create Systems requests for provisioning PROD environment, AHP Track, access to scm-private svn repository | 2009-10-16 → 2009-09-22 (-24d) | 2009-10-16 → 2009-09-22 (-24d) |  | 12.5d → 0d |  |
| 87 | Milestone: caMOD BDA certified | 2009-10-19 → 2009-09-22 (-27d) | 2009-10-19 → 2009-09-22 (-27d) |  | 12.5d → 30.5d | Request deployment to PROD target environment → 86 |
| 99 | Milestone: Complete Development | 2009-10-19 → 2009-11-04 (+16d) | 2009-10-19 → 2009-11-04 (+16d) |  | 12.5d → 0d | 50, 87 → 50, 87, 98 |
| 100 | **Testing** | 2009-07-20 → 2009-11-05 (+108d) | 2009-08-17 → 2009-12-08 (+113d) |  |  | none → 99 |
| 101 | Update test cases | 2009-07-20 → 2009-11-05 (+108d) | 2009-07-30 → 2009-11-18 (+111d) |  |  |  |
| 102 | Deploy iteration on DEV Server | 2009-07-31 → 2009-11-19 (+111d) | 2009-08-03 → 2009-11-20 (+109d) |  |  |  |
| 103 | Test on DEV tier | 2009-08-04 → 2009-11-23 (+111d) | 2009-08-17 → 2009-12-08 (+113d) |  |  |  |
| 104 | Milestone: Construction Completed | 2009-08-17 → 2009-12-08 (+113d) | 2009-08-17 → 2009-12-08 (+113d) |  |  |  |
| 105 | **Transition Phase** |  | 2009-11-04 → 2009-12-29 (+55d) | 47d → 80d |  |  |
| 106 | **QA** |  | 2009-10-15 → 2009-10-19 (+4d) |  | 0d → 42d |  |
| 107 | Finalize Testplan |  | 2009-10-12 → 2009-10-14 (+2d) |  | 0d → 42d |  |
| 108 | Finalize Test Cases | 2009-10-13 → 2009-10-15 (+2d) | 2009-10-15 → 2009-10-19 (+4d) |  | 0d → 42d |  |
| 109 | **Deploy** | 2009-10-16 → 2009-12-09 (+54d) | 2009-11-04 → 2009-12-29 (+55d) |  |  |  |
| 110 | **QA Server Deployment** | 2009-10-16 → 2009-12-09 (+54d) | 2009-10-22 → 2009-12-15 (+54d) |  |  | 104, 106 → 104 |
| 111 | QA Testing | 2009-10-16 → 2009-12-09 (+54d) | 2009-10-22 → 2009-12-15 (+54d) |  |  | 106 → 104 |
| 112 | Milestone: QA Testing Completed | 2009-10-22 → 2009-12-15 (+54d) | 2009-10-22 → 2009-12-15 (+54d) |  |  |  |
| 113 | **Staging Server Deployment** | 2009-10-23 → 2009-12-16 (+54d) | 2009-10-29 → 2009-12-22 (+54d) |  |  |  |
| 114 | Stage Testing | 2009-10-23 → 2009-12-16 (+54d) | 2009-10-29 → 2009-12-22 (+54d) |  |  |  |
| 115 | App scan on Stage | 2009-10-23 → 2009-12-16 (+54d) | 2009-10-29 → 2009-12-22 (+54d) |  |  |  |
| 116 | Milestone: Stage Testing Completed | 2009-10-29 → 2009-12-22 (+54d) | 2009-10-29 → 2009-12-22 (+54d) |  |  |  |
| 117 | **Production Server Deployment** | 2009-10-30 → 2009-12-23 (+54d) | 2009-11-04 → 2009-12-29 (+55d) |  |  |  |
| 118 | Production server deployment | 2009-10-30 → 2009-12-23 (+54d) | 2009-11-02 → 2009-12-24 (+52d) |  |  |  |
| 119 | Production Verification | 2009-11-03 → 2009-12-28 (+55d) | 2009-11-04 → 2009-12-29 (+55d) |  |  |  |
| 120 | **Documentation** | 2009-10-16 → 2009-10-20 (+4d) | 2009-10-22 → 2009-10-26 (+4d) |  | 9d → 42d |  |
| 121 | Documentation Edit by Documentation Team | 2009-10-16 → 2009-10-20 (+4d) | 2009-10-22 → 2009-10-26 (+4d) |  | 9d → 42d |  |
| 122 | **Content Page Update** | 2009-10-30 → 2009-12-23 (+54d) | 2009-11-03 → 2009-12-28 (+55d) |  |  |  |
| 123 | zope site update | 2009-10-30 → 2009-12-23 (+54d) | 2009-11-03 → 2009-12-28 (+55d) |  |  |  |
| 124 | gForge download site update | 2009-10-30 → 2009-12-23 (+54d) | 2009-11-03 → 2009-12-28 (+55d) |  |  |  |
| 125 | caMOD 2.6.0 - Closeout | 2009-11-04 → 2009-12-29 (+55d) | 2009-11-04 → 2009-12-29 (+55d) |  |  |  |

## Version 3 (saved 2009-06-05)

Note of the change: schedule updated with vacation days.

Last finish 2009-12-29 → 2009-12-16 (-13d).

Removed: 90 4788 - IDEA - redo genetic description page to retrieve data from external source similar to what publication page does with PubMed; 91 11501 - Add mouse subspecies to caMOD; 93 19876 - Therapy search results page is getting too long; 94 17041 - Add search for model id to simple and advanced search page; 95 20593 - Entered date changes every single time the model characteristics page is changed

Changed:

| ID | Task | Start | Finish | Duration | Total float | Predecessors |
| --- | --- | --- | --- | --- | --- | --- |
| 1 | **caMOD 2.6.0Release** |  | 2009-12-29 → 2009-12-16 (-13d) | 135d? → 127d |  |  |
| 10 | **Construction Phase** |  | 2009-12-08 → 2009-11-24 (-14d) | 109d? → 101d |  |  |
| 11 | **BDAfy caMOD** |  | 2009-08-13 → 2009-08-14 (+1d) | 31d → 32d |  |  |
| 40 | Testing/Static Analysis Customization |  | 2009-08-06 → 2009-08-07 (+1d) |  |  |  |
| 41 | Create wiki-based deployment instructions (based on template ) | 2009-08-06 → 2009-08-07 (+1d) | 2009-08-07 → 2009-08-10 (+3d) |  |  |  |
| 42 | First Deploy to QA -Test the Command Line Deployment in QA environment | 2009-08-07 → 2009-08-10 (+3d) | 2009-08-10 → 2009-08-11 (+1d) |  |  |  |
| 43 | Build Management implementation in QA (AntHill Pro Setup) | 2009-08-10 → 2009-08-11 (+1d) | 2009-08-11 → 2009-08-12 (+1d) |  |  |  |
| 44 | Create Systems request for provisioning STAGE environment, AHP Track, access to scm-private svn repository | 2009-08-11 → 2009-08-12 (+1d) | 2009-08-12 → 2009-08-13 (+1d) |  |  |  |
| 45 | Configure nightly AntHill Pro track DEV | 2009-08-12 → 2009-08-13 (+1d) | 2009-08-13 → 2009-08-14 (+1d) |  |  |  |
| 46 | Ask BDA team to add your project to BDA Certification Dashboard | 2009-08-13 → 2009-08-14 (+1d) | 2009-08-13 → 2009-08-14 (+1d) |  | 92.25d → 83.25d |  |
| 47 | Request Systems team to configure STAGE deployment in AntHill Pro | 2009-08-13 → 2009-08-14 (+1d) | 2009-08-13 → 2009-08-14 (+1d) |  | 92d → 83d |  |
| 48 | Request Systems to perform dry-run deployment in STAGE target environment by following Build Promotion Checklist | 2009-08-13 → 2009-08-14 (+1d) | 2009-08-13 → 2009-08-14 (+1d) |  | 92d → 83d |  |
| 49 | Create Systems requests for provisioning PROD environment, AHP Track, access to scm-private svn repository | 2009-08-13 → 2009-08-14 (+1d) | 2009-08-13 → 2009-08-14 (+1d) |  |  |  |
| 50 | Milestone: caMOD BDA certified | 2009-08-13 → 2009-08-14 (+1d) | 2009-08-13 → 2009-08-14 (+1d) |  |  |  |
| 51 | **BDAfy EVSTree** | 2009-08-13 → 2009-08-14 (+1d) | 2009-09-22 → 2009-09-30 (+8d) | 27d → 32d |  |  |
| 52 | Milestone: Start EVSTree BDAfication | 2009-08-13 → 2009-08-14 (+1d) | 2009-08-13 → 2009-08-14 (+1d) |  | 88.25d → 79.25d |  |
| 53 | **Project set up** | 2009-08-13 → 2009-08-14 (+1d) | 2009-08-14 → 2009-08-17 (+3d) |  | 88.25d → 79.25d |  |
| 54 | CVS to SVN move | 2009-08-13 → 2009-08-14 (+1d) | 2009-08-14 → 2009-08-17 (+3d) |  | 88.25d → 79.25d |  |
| 55 | Request CI server | 2009-08-13 → 2009-08-14 (+1d) | 2009-08-14 → 2009-08-17 (+3d) |  | 88.25d → 79.25d |  |
| 56 | Request each tier to be provisioned | 2009-08-13 → 2009-08-14 (+1d) | 2009-08-14 → 2009-08-17 (+3d) |  | 88.25d → 79.25d |  |
| 57 | Copy development checklist and recreate for project and submit to BDA team. | 2009-08-13 → 2009-08-14 (+1d) | 2009-08-14 → 2009-08-17 (+3d) |  |  |  |
| 58 | Create a gap analysis based on BDA Checklist and submit to the BDA team. | 2009-08-14 → 2009-08-17 (+3d) | 2009-08-17 → 2009-08-18 (+1d) |  |  |  |
| 59 | Complete and submit a draft copy of this project plan to the BDA team prior to session 2. | 2009-08-14 → 2009-08-17 (+3d) | 2009-08-17 → 2009-08-18 (+1d) |  | 88.25d → 79.25d |  |
| 60 | Create or update your Architecture Review Checklist (ARC) (See example) | 2009-08-17 → 2009-08-18 (+1d) | 2009-08-18 → 2009-08-19 (+1d) |  |  |  |
| 61 | Submit your wiki based BDA Project Plan to Systems, BDA, and the Government Sponsor. | 2009-08-17 → 2009-08-18 (+1d) | 2009-08-18 → 2009-08-19 (+1d) |  | 88.25d → 79.25d |  |
| 62 | Create Systems request (see Requesting CI Server section) for provisioning CI VM. | 2009-08-18 → 2009-08-19 (+1d) | 2009-08-19 → 2009-08-20 (+1d) |  | 88.25d → 79.25d |  |
| 63 | Attend a Project Plan Review Meeting with, Development, Systems, BDA, and the Government Sponsor to come up with agreed upon due dates of tasks. | 2009-08-18 → 2009-08-19 (+1d) | 2009-08-19 → 2009-08-20 (+1d) |  | 88.25d → 79.25d |  |
| 64 | Submit ARC request to Systems and Attend ARC meeting (See example) and get approval. | 2009-08-18 → 2009-08-19 (+1d) | 2009-08-19 → 2009-08-20 (+1d) |  |  |  |
| 65 | Create Systems request (see Requesting a Tier section) for provisioning DEV environment, AHP Track, access to scm-private svn repository | 2009-08-19 → 2009-08-20 (+1d) | 2009-08-20 → 2009-08-21 (+1d) |  |  |  |
| 66 | Write up current and complete installation instructions | 2009-08-20 → 2009-08-21 (+1d) | 2009-08-21 → 2009-08-24 (+3d) |  |  |  |
| 67 | Meet with BDA to review your installation instructions and do gap analysis against BDA templates and Macros | 2009-08-21 → 2009-08-24 (+3d) | 2009-08-25 → 2009-08-26 (+1d) |  |  |  |
| 68 | Modify directory structure | 2009-08-25 → 2009-08-26 (+1d) | 2009-08-26 → 2009-08-27 (+1d) |  |  |  |
| 69 | Identify and externalize per-environment properties into .properties files. See BDA Template-Properties for an explanation | 2009-08-26 → 2009-08-27 (+1d) | 2009-08-27 → 2009-08-28 (+1d) |  |  |  |
| 70 | Implement BDA templates and macros for your project (See BDA Template Scripts - How to implement) | 2009-08-27 → 2009-08-28 (+1d) | 2009-08-28 → 2009-09-08 (+11d) |  |  |  |
| 71 | Eliminate build script duality (duplication between master build scripts and subproject build scripts. See BDA Build Script Standards) | 2009-08-28 → 2009-09-08 (+11d) | 2009-08-31 → 2009-09-09 (+9d) |  |  |  |
| 72 | Verify build/deployment is JADS compatible (Install must be JAD compatible) | 2009-08-31 → 2009-09-09 (+9d) | 2009-09-01 → 2009-09-10 (+9d) |  |  |  |
| 73 | Setup CI Server (How to Install and Configure Hudson | 2009-09-01 → 2009-09-10 (+9d) | 2009-09-02 → 2009-09-11 (+9d) |  |  |  |
| 74 | First Build to Dev - Test the Command Line Deployment in DEV environment | 2009-09-02 → 2009-09-11 (+9d) | 2009-09-03 → 2009-09-14 (+11d) |  |  |  |
| 75 | Build Management implementation in DEV target environment (AntHill Pro Setup) | 2009-09-03 → 2009-09-14 (+11d) | 2009-09-04 → 2009-09-15 (+11d) |  |  |  |
| 76 | Create Systems request for provisioning QA environment, AHP Track, access to scm-private svn repository | 2009-09-04 → 2009-09-15 (+11d) | 2009-09-08 → 2009-09-16 (+8d) |  |  |  |
| 77 | Testing/Static Analysis Customization | 2009-09-08 → 2009-09-16 (+8d) | 2009-09-15 → 2009-09-23 (+8d) |  |  |  |
| 78 | Create wiki-based deployment instructions (based on template ) | 2009-09-15 → 2009-09-23 (+8d) | 2009-09-16 → 2009-09-24 (+8d) |  |  |  |
| 79 | First Deploy to QA -Test the Command Line Deployment in QA environment | 2009-09-16 → 2009-09-24 (+8d) | 2009-09-17 → 2009-09-25 (+8d) |  |  |  |
| 80 | Build Management implementation in QA (AntHill Pro Setup) | 2009-09-17 → 2009-09-25 (+8d) | 2009-09-18 → 2009-09-28 (+10d) |  |  |  |
| 81 | Create Systems request for provisioning STAGE environment, AHP Track, access to scm-private svn repository | 2009-09-18 → 2009-09-28 (+10d) | 2009-09-21 → 2009-09-29 (+8d) |  |  |  |
| 82 | Configure nightly AntHill Pro track DEV | 2009-09-21 → 2009-09-29 (+8d) | 2009-09-22 → 2009-09-30 (+8d) |  |  |  |
| 83 | Ask BDA team to add your project to BDA Certification Dashboard | 2009-09-22 → 2009-09-30 (+8d) | 2009-09-22 → 2009-09-30 (+8d) |  | 65.5d → 51.5d |  |
| 84 | Request Systems team to configure STAGE deployment in AntHill Pro | 2009-09-22 → 2009-09-30 (+8d) | 2009-09-22 → 2009-09-30 (+8d) |  | 65.25d → 51.25d |  |
| 85 | Request Systems to perform dry-run deployment in STAGE target environment by following Build Promotion Checklist | 2009-09-22 → 2009-09-30 (+8d) | 2009-09-22 → 2009-09-30 (+8d) |  | 65.25d → 51.25d |  |
| 86 | Create Systems requests for provisioning PROD environment, AHP Track, access to scm-private svn repository | 2009-09-22 → 2009-09-30 (+8d) | 2009-09-22 → 2009-09-30 (+8d) |  |  |  |
| 87 | Milestone: caMOD BDA certified | 2009-09-22 → 2009-09-30 (+8d) | 2009-09-22 → 2009-09-30 (+8d) |  | 30.5d → 16.5d |  |
| 88 | **Gforge Features** | 2009-09-22 → 2009-09-30 (+8d) | 2009-11-04 → 2009-10-23 (-12d) | 30.5d? → 16.5d |  |  |
| 89 | 4769 - Provide additional data from MGI - Parsing MGI data | 2009-09-22 → 2009-09-30 (+8d) | 2009-10-06 → 2009-10-22 (+16d) |  |  |  |
| 90 | 19879 - Display PMID number on search page | 2009-10-26 → 2009-10-22 (-4d) | 2009-10-26 → 2009-10-22 (-4d) |  |  | 11501 - Add mouse subspecies to caMOD → 89 |
| 91 | 18438 - Change label from MMHCC Repository to NCI Mouse Repository | 2009-11-04 → 2009-10-23 (-12d) | 2009-11-04 → 2009-10-23 (-12d) |  |  | 20593 - Entered date changes every single time the model characteristics page is changed → 90 |
| 92 | ? - Add privacy statement links (PII) | 2009-11-04 → 2009-10-23 (-12d) | 2009-11-04 → 2009-10-23 (-12d) |  |  |  |
| 93 | Milestone: Complete Features and Bug fixes | 2009-11-04 → 2009-10-23 (-12d) | 2009-11-04 → 2009-10-23 (-12d) |  |  |  |
| 94 | Milestone: Complete Development | 2009-11-04 → 2009-10-23 (-12d) | 2009-11-04 → 2009-10-23 (-12d) |  |  |  |
| 95 | **Testing** | 2009-11-05 → 2009-10-26 (-10d) | 2009-12-08 → 2009-11-24 (-14d) |  |  |  |
| 96 | Update test cases | 2009-11-05 → 2009-10-26 (-10d) | 2009-11-18 → 2009-11-05 (-13d) |  |  |  |
| 97 | Deploy iteration on DEV Server | 2009-11-19 → 2009-11-06 (-13d) | 2009-11-20 → 2009-11-09 (-11d) |  |  |  |
| 98 | Test on DEV tier | 2009-11-23 → 2009-11-10 (-13d) | 2009-12-08 → 2009-11-24 (-14d) |  |  |  |
| 99 | Milestone: Construction Completed | 2009-12-08 → 2009-11-24 (-14d) | 2009-12-08 → 2009-11-24 (-14d) |  |  |  |
| 100 | **Transition Phase** |  | 2009-12-29 → 2009-12-16 (-13d) | 80d → 72d |  |  |
| 104 | **Deploy** | 2009-12-09 → 2009-11-25 (-14d) | 2009-12-29 → 2009-12-16 (-13d) |  |  |  |
| 105 | **QA Server Deployment** | 2009-12-09 → 2009-11-25 (-14d) | 2009-12-15 → 2009-12-03 (-12d) |  |  |  |
| 106 | QA Testing | 2009-12-09 → 2009-11-25 (-14d) | 2009-12-15 → 2009-12-03 (-12d) |  |  |  |
| 107 | Milestone: QA Testing Completed | 2009-12-15 → 2009-12-03 (-12d) | 2009-12-15 → 2009-12-03 (-12d) |  |  |  |
| 108 | **Staging Server Deployment** | 2009-12-16 → 2009-12-04 (-12d) | 2009-12-22 → 2009-12-10 (-12d) |  |  |  |
| 109 | Stage Testing | 2009-12-16 → 2009-12-04 (-12d) | 2009-12-22 → 2009-12-10 (-12d) |  |  |  |

| ID | Task | Start | Finish |
| --- | --- | --- | --- |
| 110 | App scan on Stage | 2009-12-16 → 2009-12-04 (-12d) | 2009-12-22 → 2009-12-10 (-12d) |
| 111 | Milestone: Stage Testing Completed | 2009-12-22 → 2009-12-10 (-12d) | 2009-12-22 → 2009-12-10 (-12d) |
| 112 | **Production Server Deployment** | 2009-12-23 → 2009-12-11 (-12d) | 2009-12-29 → 2009-12-16 (-13d) |
| 113 | Production server deployment | 2009-12-23 → 2009-12-11 (-12d) | 2009-12-24 → 2009-12-14 (-10d) |
| 114 | Production Verification | 2009-12-28 → 2009-12-15 (-13d) | 2009-12-29 → 2009-12-16 (-13d) |
| 117 | **Content Page Update** | 2009-12-23 → 2009-12-11 (-12d) | 2009-12-28 → 2009-12-15 (-13d) |
| 118 | zope site update | 2009-12-23 → 2009-12-11 (-12d) | 2009-12-28 → 2009-12-15 (-13d) |
| 119 | gForge download site update | 2009-12-23 → 2009-12-11 (-12d) | 2009-12-28 → 2009-12-15 (-13d) |
| 120 | caMOD 2.6.0 - Closeout | 2009-12-29 → 2009-12-16 (-13d) | 2009-12-29 → 2009-12-16 (-13d) |

## Version 4 (saved 2009-06-05)

Note of the change: schedule update

Last finish 2009-12-16 → 2009-12-15 (-1d).

Removed: 90 19879 - Display PMID number on search page; 91 18438 - Change label from MMHCC Repository to NCI Mouse Repository; 92 ? - Add privacy statement links (PII)

Changed:

| ID | Task | Start | Finish | Duration | Predecessors |
| --- | --- | --- | --- | --- | --- |
| 1 | **caMOD 2.6.0Release** |  | 2009-12-16 → 2009-12-15 (-1d) | 127d → 125.5d |  |
| 10 | **Construction Phase** |  | 2009-11-24 → 2009-11-23 (-1d) | 101d → 99.5d |  |
| 88 | **Gforge Features** |  | 2009-10-23 → 2009-10-22 (-1d) | 16.5d → 15d |  |
| 90 | Milestone: Complete Features and Bug fixes | 2009-10-23 → 2009-10-22 (-1d) | 2009-10-23 → 2009-10-22 (-1d) |  | ? - Add privacy statement links (PII) → 89 |
| 91 | Milestone: Complete Development | 2009-10-23 → 2009-10-22 (-1d) | 2009-10-23 → 2009-10-22 (-1d) |  |  |
| 92 | **Testing** | 2009-10-26 → 2009-10-22 (-4d) | 2009-11-24 → 2009-11-23 (-1d) |  |  |
| 93 | Update test cases | 2009-10-26 → 2009-10-22 (-4d) | 2009-11-05 → 2009-11-04 (-1d) |  |  |
| 94 | Deploy iteration on DEV Server | 2009-11-06 → 2009-11-04 (-2d) | 2009-11-09 → 2009-11-06 (-3d) |  |  |
| 95 | Test on DEV tier | 2009-11-10 → 2009-11-06 (-4d) | 2009-11-24 → 2009-11-23 (-1d) |  |  |
| 96 | Milestone: Construction Completed | 2009-11-24 → 2009-11-23 (-1d) | 2009-11-24 → 2009-11-23 (-1d) |  |  |
| 97 | **Transition Phase** |  | 2009-12-16 → 2009-12-15 (-1d) | 72d → 70.5d |  |
| 101 | **Deploy** | 2009-11-25 → 2009-11-23 (-2d) | 2009-12-16 → 2009-12-15 (-1d) |  |  |
| 102 | **QA Server Deployment** | 2009-11-25 → 2009-11-23 (-2d) | 2009-12-03 → 2009-12-02 (-1d) |  |  |
| 103 | QA Testing | 2009-11-25 → 2009-11-23 (-2d) | 2009-12-03 → 2009-12-02 (-1d) |  |  |
| 104 | Milestone: QA Testing Completed | 2009-12-03 → 2009-12-02 (-1d) | 2009-12-03 → 2009-12-02 (-1d) |  |  |
| 105 | **Staging Server Deployment** | 2009-12-04 → 2009-12-02 (-2d) | 2009-12-10 → 2009-12-09 (-1d) |  |  |
| 106 | Stage Testing | 2009-12-04 → 2009-12-02 (-2d) | 2009-12-10 → 2009-12-09 (-1d) |  |  |
| 107 | App scan on Stage | 2009-12-04 → 2009-12-02 (-2d) | 2009-12-10 → 2009-12-09 (-1d) |  |  |
| 108 | Milestone: Stage Testing Completed | 2009-12-10 → 2009-12-09 (-1d) | 2009-12-10 → 2009-12-09 (-1d) |  |  |
| 109 | **Production Server Deployment** | 2009-12-11 → 2009-12-09 (-2d) | 2009-12-16 → 2009-12-15 (-1d) |  |  |
| 110 | Production server deployment | 2009-12-11 → 2009-12-09 (-2d) | 2009-12-14 → 2009-12-11 (-3d) |  |  |
| 111 | Production Verification | 2009-12-15 → 2009-12-11 (-4d) | 2009-12-16 → 2009-12-15 (-1d) |  |  |
| 114 | **Content Page Update** | 2009-12-11 → 2009-12-09 (-2d) | 2009-12-15 → 2009-12-14 (-1d) |  |  |
| 115 | zope site update | 2009-12-11 → 2009-12-09 (-2d) | 2009-12-15 → 2009-12-14 (-1d) |  |  |
| 116 | gForge download site update | 2009-12-11 → 2009-12-09 (-2d) | 2009-12-15 → 2009-12-14 (-1d) |  |  |
| 117 | caMOD 2.6.0 - Closeout | 2009-12-16 → 2009-12-15 (-1d) | 2009-12-16 → 2009-12-15 (-1d) |  |  |
