# camod Release 2.6.1-2

How a schedule from MS Project changed from version to version. A marks actual dates.

## Version 1 (saved 2010-02-05)

Note of the change: the latest pmp file needing loe update.

| ID | WBS | Task | Duration | Start | Finish | Predecessors | Total float | Constraint |
| --- | --- | --- | --- | --- | --- | --- | --- | --- |
| 1 | 1 | **caMOD 2.6.1Release** | 73.5d | 2010-01-25 | 2010-05-07 |  | 0d |  |
| 2 | 1.1 | **Inception Phase** | 6d | 2010-01-25 | 2010-02-01 |  | 0d |  |
| 3 |  | Scope 2.6.0 Release | 3d | 2010-01-25 | 2010-01-27 |  | 0d | start no earlier than 2010-01-25 |
| 4 |  | Schedule 2.6.0 Release | 3d | 2010-01-28 | 2010-02-01 | 3 | 0d |  |
| 5 |  | Milestone: Inception Completed | 0d | 2010-02-01 | 2010-02-01 | 4 | 0d |  |
| 6 | 1.2 | **Elaboration Phase** | 6d | 2010-02-02 | 2010-02-09 | 5 | 0d |  |
| 7 |  | Use Case and Design Doc (caBIG template) | 5d | 2010-02-02 | 2010-02-08 |  | 0d |  |
| 8 |  | Review use cases / design with the "Review Board" | 1d | 2010-02-09 | 2010-02-09 | 7 | 11d | finish no earlier than 2009-01-27 |
| 9 |  | Milestone: Elaboration Completed | 0d | 2010-02-09 | 2010-02-09 | 7, 8 | 11d |  |
| 10 | 1.3 | **Construction Phase** | 40d | 2010-02-10 | 2010-04-07 | 6 | 0d |  |
| 11 |  | caMOD changes in support for caImage upgrade | 10d | 2010-02-26 | 2010-03-11 |  | 0d |  |
| 12 |  | 25294: BDA - automate changes to external properties | 5d | 2010-03-12 | 2010-03-18 | 11 | 0d |  |
| 13 |  | 26348: Reassign caMOD curator models to caMODcurator2 account | 1d | 2010-03-19 | 2010-03-19 | 12 | 0d |  |
| 14 |  | 26349: Add caMOD curator2 account to superuser list | 1d | 2010-03-22 | 2010-03-22 | 13 | 0d |  |
| 15 |  | Milestone: Complete Development | 0d | 2010-03-22 | 2010-03-22 | 14 | 0d |  |
| 16 | 1.3.6 | **Testing** | 40d | 2010-02-10 | 2010-04-07 | 9 | 0d |  |
| 17 |  | Update test cases | 11d | 2010-02-10 | 2010-03-01 |  | 15d |  |
| 18 |  | Deploy iteration on DEV Server | 2d | 2010-03-23 | 2010-03-24 | 17, 15 | 0d |  |
| 19 |  | Test on DEV tier | 10d | 2010-03-25 | 2010-04-07 | 18 | 0d |  |
| 20 |  | Milestone: Construction Completed | 0d | 2010-04-07 | 2010-04-07 | 16 | 0d |  |
| 21 | 1.4 | **Transition Phase** | 33.5d | 2010-03-23 | 2010-05-07 | 9 | 0d |  |
| 22 | 1.4.1 | **QA** | 13d | 2010-03-23 | 2010-04-08 | 9 | 15.5d |  |
| 23 |  | Finalize Testplan | 10d | 2010-03-23 | 2010-04-05 | 15 | 15.5d | start no earlier than 2009-09-01 |
| 24 |  | Finalize Test Cases | 3d | 2010-04-06 | 2010-04-08 | 23 | 15.5d |  |
| 25 | 1.4.2 | **Deploy** | 21.5d | 2010-04-08 | 2010-05-07 | 20 | 0d |  |
| 26 | 1.4.2.1 | **QA Server Deployment** | 5.5d | 2010-04-08 | 2010-04-15 | 20 | 0d |  |
| 27 |  | QA Deployment | 0.5d | 2010-04-08 | 2010-04-08 |  | 0d |  |
| 28 |  | QA Testing | 5d | 2010-04-08 | 2010-04-15 | 27 | 0d |  |
| 29 |  | Milestone: QA Testing Completed | 0d | 2010-04-15 | 2010-04-15 | 28 | 0d |  |
| 30 | 1.4.2.2 | **Staging Server Deployment** | 12d | 2010-04-15 | 2010-05-03 | 29 | 0d |  |
| 31 |  | Stage Deployment | 2d | 2010-04-15 | 2010-04-19 |  | 0d |  |
| 32 |  | Stage Testing | 5d | 2010-04-19 | 2010-04-26 | 31 | 5d |  |
| 33 |  | App scan on Stage | 10d | 2010-04-19 | 2010-05-03 | 31 | 0d |  |
| 34 |  | Milestone: Stage Testing Completed | 0d | 2010-05-03 | 2010-05-03 | 33, 32 | 0d |  |
| 35 | 1.4.2.3 | **Production Server Deployment** | 4d | 2010-05-03 | 2010-05-07 | 34 | 0d |  |
| 36 |  | Production server deployment | 2d | 2010-05-03 | 2010-05-05 | 34 | 0d |  |
| 37 |  | Production Verification | 2d | 2010-05-05 | 2010-05-07 | 36 | 0d |  |
| 38 | 1.4.3 | **Documentation** | 5d | 2010-04-09 | 2010-04-15 |  | 15.5d |  |
| 39 |  | Documentation Edit by Documentation Team | 5d | 2010-04-09 | 2010-04-15 | 22 | 15.5d |  |
| 40 | 1.4.4 | **Content Page Update** | 3d | 2010-05-03 | 2010-05-06 |  | 1d |  |
| 41 |  | zope site update | 3d | 2010-05-03 | 2010-05-06 | 30 | 1d |  |
| 42 |  | gForge download site update | 3d | 2010-05-03 | 2010-05-06 | 30 | 1d |  |
| 43 |  | caMOD 2.6.0 - Closeout | 0d | 2010-05-07 | 2010-05-07 | 21 | 0d |  |

## Version 2 (saved 2010-04-08)

Note of the change: added more pto

Last finish 2010-05-07 → 2010-06-02 (+26d).

Changed:

| ID | Task | Start | Finish | Duration |
| --- | --- | --- | --- | --- |
| 1 | **caMOD 2.6.1Release** |  | 2010-05-07 → 2010-06-02 (+26d) | 73.5d → 90.5d |
| 10 | **Construction Phase** |  | 2010-04-07 → 2010-04-30 (+23d) | 40d → 57d |
| 16 | **Testing** |  | 2010-04-07 → 2010-04-30 (+23d) | 40d → 57d |
| 19 | Test on DEV tier |  | 2010-04-07 → 2010-04-30 (+23d) | 10d → 17d |
| 20 | Milestone: Construction Completed | 2010-04-07 → 2010-04-30 (+23d) | 2010-04-07 → 2010-04-30 (+23d) |  |
| 21 | **Transition Phase** |  | 2010-05-07 → 2010-06-02 (+26d) | 33.5d → 50.5d |
| 25 | **Deploy** | 2010-04-08 → 2010-05-03 (+25d) | 2010-05-07 → 2010-06-02 (+26d) |  |
| 26 | **QA Server Deployment** | 2010-04-08 → 2010-05-03 (+25d) | 2010-04-15 → 2010-05-10 (+25d) |  |
| 27 | QA Deployment | 2010-04-08 → 2010-05-03 (+25d) | 2010-04-08 → 2010-05-03 (+25d) |  |
| 28 | QA Testing | 2010-04-08 → 2010-05-03 (+25d) | 2010-04-15 → 2010-05-10 (+25d) |  |
| 29 | Milestone: QA Testing Completed | 2010-04-15 → 2010-05-10 (+25d) | 2010-04-15 → 2010-05-10 (+25d) |  |
| 30 | **Staging Server Deployment** | 2010-04-15 → 2010-05-10 (+25d) | 2010-05-03 → 2010-05-26 (+23d) |  |
| 31 | Stage Deployment | 2010-04-15 → 2010-05-10 (+25d) | 2010-04-19 → 2010-05-12 (+23d) |  |
| 32 | Stage Testing | 2010-04-19 → 2010-05-12 (+23d) | 2010-04-26 → 2010-05-19 (+23d) |  |
| 33 | App scan on Stage | 2010-04-19 → 2010-05-12 (+23d) | 2010-05-03 → 2010-05-26 (+23d) |  |
| 34 | Milestone: Stage Testing Completed | 2010-05-03 → 2010-05-26 (+23d) | 2010-05-03 → 2010-05-26 (+23d) |  |
| 35 | **Production Server Deployment** | 2010-05-03 → 2010-05-26 (+23d) | 2010-05-07 → 2010-06-02 (+26d) |  |
| 36 | Production server deployment | 2010-05-03 → 2010-05-26 (+23d) | 2010-05-05 → 2010-05-28 (+23d) |  |
| 37 | Production Verification | 2010-05-05 → 2010-05-28 (+23d) | 2010-05-07 → 2010-06-02 (+26d) |  |
| 40 | **Content Page Update** | 2010-05-03 → 2010-05-26 (+23d) | 2010-05-06 → 2010-06-01 (+26d) |  |
| 41 | zope site update | 2010-05-03 → 2010-05-26 (+23d) | 2010-05-06 → 2010-06-01 (+26d) |  |
| 42 | gForge download site update | 2010-05-03 → 2010-05-26 (+23d) | 2010-05-06 → 2010-06-01 (+26d) |  |
| 43 | caMOD 2.6.0 - Closeout | 2010-05-07 → 2010-06-02 (+26d) | 2010-05-07 → 2010-06-02 (+26d) |  |
