# camod Release 2.7.0

How a schedule from MS Project changed from version to version. A marks actual dates.

## Version 1 (saved 2010-01-22)

Note of the change: 2.7.0 schedule draft

| ID | WBS | Task | Duration | Start | Finish | Predecessors | Total float | Constraint |
| --- | --- | --- | --- | --- | --- | --- | --- | --- |
| 1 | 1 | **caMOD 2.6.1Release** | 118d | 2010-01-18 | 2010-07-02 |  | 0d |  |
| 2 | 1.1 | **Inception Phase** | 6d | 2010-01-18 | 2010-01-25 |  | 0d |  |
| 3 |  | Scope 2.6.0 Release | 3d | 2010-01-18 | 2010-01-20 |  | 0d | start no earlier than 2010-01-18 |
| 4 |  | Schedule 2.6.0 Release | 3d | 2010-01-21 | 2010-01-25 | 3 | 0d |  |
| 5 |  | Milestone: Inception Completed | 0d | 2010-01-25 | 2010-01-25 | 4 | 0d |  |
| 6 | 1.2 | **Elaboration Phase** | 6d | 2010-01-26 | 2010-02-02 | 5 | 0d |  |
| 7 |  | Use Case and Design Doc (caBIG template) | 5d | 2010-01-26 | 2010-02-01 |  | 0d |  |
| 8 |  | Review use cases / design with the "Review Board" | 1d | 2010-02-02 | 2010-02-02 | 7 | 0d | finish no earlier than 2009-01-27 |
| 9 |  | Milestone: Elaboration Completed | 0d | 2010-02-02 | 2010-02-02 | 7, 8 | 0d |  |
| 10 | 1.3 | **Construction Phase** | 72d | 2010-02-02 | 2010-05-14 | 6 | 0d |  |
| 11 |  | caMOD changes in support for caImage upgrade | 10d | 2010-02-03 | 2010-03-05 |  | 0d |  |
| 12 |  | LexEVS Upgrade | 7w | 2010-03-08 | 2010-04-23 | 11 | 0d |  |
| 13 |  | caBio Upgrade | 10d | 2010-04-26 | 2010-05-07 | 12 | 0d |  |
| 14 |  | 25294: BDA - automate changes to external properties | 5d | 2010-05-10 | 2010-05-14 | 13 | 0d |  |
| 15 |  | Milestone: Complete Development | 0d | 2010-02-02 | 2010-02-02 |  | 2d |  |
| 16 | 1.3.6 | **Testing** | 28d | 2010-02-03 | 2010-03-15 | 15 | 0d |  |
| 17 |  | Update test cases | 9d | 2010-02-03 | 2010-02-16 |  | 2d |  |
| 18 |  | Deploy iteration on DEV Server | 2d | 2010-02-26 | 2010-03-01 | 17 | 0d |  |
| 19 |  | Test on DEV tier | 10d | 2010-03-02 | 2010-03-15 | 18 | 0d |  |
| 20 |  | Milestone: Construction Completed | 0d | 2010-03-15 | 2010-03-15 | 16 | 0d |  |
| 21 | 1.4 | **Transition Phase** | 34d | 2010-05-17 | 2010-07-02 | 10 | 0d |  |
| 22 | 1.4.1 | **QA** | 13d | 2010-05-17 | 2010-06-03 |  | 0d |  |
| 23 |  | Finalize Testplan | 10d | 2010-05-17 | 2010-05-28 |  | 0d | start no earlier than 2009-09-01 |
| 24 |  | Finalize Test Cases | 3d | 2010-06-01 | 2010-06-03 | 23 | 0d |  |
| 25 | 1.4.2 | **Deploy** | 34d | 2010-05-17 | 2010-07-02 |  | 0d |  |
| 26 | 1.4.2.1 | **QA Server Deployment** | 18d | 2010-05-17 | 2010-06-10 | 20 | 0d |  |
| 27 |  | QA Deployment | 0.5d | 2010-05-17 | 2010-05-17 |  | 20.5d |  |
| 28 |  | QA Testing | 5d | 2010-06-04 | 2010-06-10 | 20, 23, 24, 27 | 0d |  |
| 29 |  | Milestone: QA Testing Completed | 0d | 2010-06-10 | 2010-06-10 | 28 | 0d |  |
| 30 | 1.4.2.2 | **Staging Server Deployment** | 12d | 2010-06-11 | 2010-06-28 |  | 0d |  |
| 31 |  | Stage Deployment | 2d | 2010-06-11 | 2010-06-14 | 29 | 0d |  |
| 32 |  | Stage Testing | 5d | 2010-06-15 | 2010-06-21 | 31 | 5d |  |
| 33 |  | App scan on Stage | 10d | 2010-06-15 | 2010-06-28 | 31 | 0d |  |
| 34 |  | Milestone: Stage Testing Completed | 0d | 2010-06-28 | 2010-06-28 | 33, 32 | 0d |  |
| 35 | 1.4.2.3 | **Production Server Deployment** | 4d | 2010-06-29 | 2010-07-02 |  | 0d |  |
| 36 |  | Production server deployment | 2d | 2010-06-29 | 2010-06-30 | 34 | 0d |  |
| 37 |  | Production Verification | 2d | 2010-07-01 | 2010-07-02 | 36 | 0d |  |
| 38 | 1.4.3 | **Documentation** | 5d | 2010-06-04 | 2010-06-10 |  | 16d |  |
| 39 |  | Documentation Edit by Documentation Team | 5d | 2010-06-04 | 2010-06-10 | 22 | 16d |  |
| 40 | 1.4.4 | **Content Page Update** | 3d | 2010-06-29 | 2010-07-01 |  | 1d |  |
| 41 |  | zope site update | 3d | 2010-06-29 | 2010-07-01 | 30 | 1d |  |
| 42 |  | gForge download site update | 3d | 2010-06-29 | 2010-07-01 | 30 | 1d |  |
| 43 |  | caMOD 2.6.0 - Closeout | 0d | 2010-07-02 | 2010-07-02 | 21 | 0d |  |

## Version 2 (saved 2010-02-05)

Note of the change: propagated the change to 2.6.1 schedule into 2.7.0 schedule.

Last finish 2010-07-02 → 2010-09-09 (+69d).

Removed: 11 caMOD changes in support for caImage upgrade; 14 25294: BDA - automate changes to external properties

Changed:

| ID | Task | Start | Finish | Duration | Total float | Predecessors | Other |
| --- | --- | --- | --- | --- | --- | --- | --- |
| 1 | **caMOD 2.7.0Release** | 2010-01-18 → 2010-04-26 (+98d) | 2010-07-02 → 2010-09-09 (+69d) | 118d → 95.5d |  |  | was named caMOD 2.6.1Release |
| 2 | **Inception Phase** | 2010-01-18 → 2010-04-26 (+98d) | 2010-01-25 → 2010-05-03 (+98d) |  |  |  |  |
| 3 | Scope 2.6.0 Release | 2010-01-18 → 2010-04-26 (+98d) | 2010-01-20 → 2010-04-28 (+98d) |  |  |  | constraint start no earlier than 2010-01-18 → start no earlier than 2010-04-26 |
| 4 | Schedule 2.6.0 Release | 2010-01-21 → 2010-04-29 (+98d) | 2010-01-25 → 2010-05-03 (+98d) |  |  |  |  |
| 5 | Milestone: Inception Completed | 2010-01-25 → 2010-05-03 (+98d) | 2010-01-25 → 2010-05-03 (+98d) |  |  |  |  |
| 6 | **Elaboration Phase** | 2010-01-26 → 2010-05-04 (+98d) | 2010-02-02 → 2010-05-11 (+98d) |  |  |  |  |
| 7 | Use Case and Design Doc (caBIG template) | 2010-01-26 → 2010-05-04 (+98d) | 2010-02-01 → 2010-05-10 (+98d) |  |  |  |  |
| 8 | Review use cases / design with the "Review Board" | 2010-02-02 → 2010-05-11 (+98d) | 2010-02-02 → 2010-05-11 (+98d) |  |  |  |  |
| 9 | Milestone: Elaboration Completed | 2010-02-02 → 2010-05-11 (+98d) | 2010-02-02 → 2010-05-11 (+98d) |  |  |  |  |
| 10 | **Construction Phase** | 2010-02-02 → 2010-05-12 (+99d) | 2010-05-14 → 2010-08-02 (+80d) | 72d → 57d |  | 6 → 9 |  |
| 11 | LexEVS Upgrade | 2010-03-08 → 2010-05-12 (+65d) | 2010-04-23 → 2010-06-30 (+68d) |  |  | caMOD changes in support for caImage upgrade → none |  |
| 12 | caBio Upgrade | 2010-04-26 → 2010-07-01 (+66d) | 2010-05-07 → 2010-07-15 (+69d) |  |  |  |  |
| 13 | Milestone: Complete Development | 2010-02-02 → 2010-07-15 (+163d) | 2010-02-02 → 2010-07-15 (+163d) |  | 2d → 0d | none → 11, 12 |  |
| 14 | **Testing** | 2010-02-03 → 2010-07-01 (+148d) | 2010-03-15 → 2010-08-02 (+140d) | 28d → 22d |  | 13 → none |  |
| 15 | Update test cases | 2010-02-03 → 2010-07-01 (+148d) | 2010-02-16 → 2010-07-14 (+148d) |  | 2d → 0.5d | none → 11 |  |
| 16 | Deploy iteration on DEV Server | 2010-02-26 → 2010-07-16 (+140d) | 2010-03-01 → 2010-07-19 (+140d) |  |  | 15 → 15, 13 |  |
| 17 | Test on DEV tier | 2010-03-02 → 2010-07-20 (+140d) | 2010-03-15 → 2010-08-02 (+140d) |  |  |  |  |
| 18 | Milestone: Construction Completed | 2010-03-15 → 2010-08-02 (+140d) | 2010-03-15 → 2010-08-02 (+140d) |  |  | 14 → 15, 16, 17 |  |
| 19 | **Transition Phase** | 2010-05-17 → 2010-07-15 (+59d) | 2010-07-02 → 2010-09-09 (+69d) | 34d → 39.5d |  | 10 → 9 |  |
| 20 | **QA** | 2010-05-17 → 2010-07-15 (+59d) | 2010-06-03 → 2010-08-02 (+60d) |  | 0d → 0.5d |  |  |
| 21 | Finalize Testplan | 2010-05-17 → 2010-07-15 (+59d) | 2010-05-28 → 2010-07-28 (+61d) |  | 0d → 0.5d | none → 15 |  |
| 22 | Finalize Test Cases | 2010-06-01 → 2010-07-29 (+58d) | 2010-06-03 → 2010-08-02 (+60d) |  | 0d → 0.5d |  |  |
| 23 | **Deploy** | 2010-05-17 → 2010-08-03 (+78d) | 2010-07-02 → 2010-09-09 (+69d) | 34d → 26.5d |  | none → 10 |  |
| 24 | **QA Server Deployment** | 2010-05-17 → 2010-08-03 (+78d) | 2010-06-10 → 2010-08-17 (+68d) | 18d → 10.5d |  | 18 → none |  |
| 25 | QA Deployment | 2010-05-17 → 2010-08-03 (+78d) | 2010-05-17 → 2010-08-03 (+78d) |  | 20.5d → 0d |  |  |
| 26 | QA Testing | 2010-06-04 → 2010-08-03 (+60d) | 2010-06-10 → 2010-08-17 (+68d) | 5d → 10d |  |  |  |
| 27 | Milestone: QA Testing Completed | 2010-06-10 → 2010-08-17 (+68d) | 2010-06-10 → 2010-08-17 (+68d) |  |  |  |  |
| 28 | **Staging Server Deployment** | 2010-06-11 → 2010-08-17 (+67d) | 2010-06-28 → 2010-09-02 (+66d) |  |  |  |  |
| 29 | Stage Deployment | 2010-06-11 → 2010-08-17 (+67d) | 2010-06-14 → 2010-08-19 (+66d) |  |  |  |  |
| 30 | Stage Testing | 2010-06-15 → 2010-08-19 (+65d) | 2010-06-21 → 2010-08-26 (+66d) |  |  |  |  |
| 31 | App scan on Stage | 2010-06-15 → 2010-08-19 (+65d) | 2010-06-28 → 2010-09-02 (+66d) |  |  |  |  |
| 32 | Milestone: Stage Testing Completed | 2010-06-28 → 2010-09-02 (+66d) | 2010-06-28 → 2010-09-02 (+66d) |  |  |  |  |
| 33 | **Production Server Deployment** | 2010-06-29 → 2010-09-02 (+65d) | 2010-07-02 → 2010-09-09 (+69d) |  |  | none → 32 |  |
| 34 | Production server deployment | 2010-06-29 → 2010-09-02 (+65d) | 2010-06-30 → 2010-09-07 (+69d) |  |  |  |  |
| 35 | Production Verification | 2010-07-01 → 2010-09-07 (+68d) | 2010-07-02 → 2010-09-09 (+69d) |  |  |  |  |
| 36 | **Documentation** | 2010-06-04 → 2010-08-03 (+60d) | 2010-06-10 → 2010-08-09 (+60d) |  | 16d → 21.5d |  |  |
| 37 | Documentation Edit by Documentation Team | 2010-06-04 → 2010-08-03 (+60d) | 2010-06-10 → 2010-08-09 (+60d) |  | 16d → 21.5d | 20 → 18 |  |
| 38 | **Content Page Update** | 2010-06-29 → 2010-09-02 (+65d) | 2010-07-01 → 2010-09-08 (+69d) |  |  |  |  |
| 39 | zope site update | 2010-06-29 → 2010-09-02 (+65d) | 2010-07-01 → 2010-09-08 (+69d) |  |  | 28 → 32 |  |
| 40 | gForge download site update | 2010-06-29 → 2010-09-02 (+65d) | 2010-07-01 → 2010-09-08 (+69d) |  |  | 28 → 32 |  |
| 41 | caMOD 2.6.0 - Closeout | 2010-07-02 → 2010-09-09 (+69d) | 2010-07-02 → 2010-09-09 (+69d) |  |  |  |  |

## Version 3 (saved 2010-02-10)

Note of the change: updated GF numbers for upgrade tasks.

Last finish stays 2010-09-09.

Changed:

| ID | Task | Other |
| --- | --- | --- |
| 11 | 25919 - LexEVS Upgrade | was named LexEVS Upgrade |
| 12 | 25918 - caBio Upgrade | was named caBio Upgrade |

## Version 4 (saved 2010-07-29)

Note of the change: updated the schedule with current activities.

Last finish 2010-09-09 → 2010-11-18 (+70d).

Changed:

| ID | Task | Start | Finish | Duration |
| --- | --- | --- | --- | --- |
| 1 | **caMOD 2.7.0Release** |  | 2010-09-09 → 2010-11-18 (+70d) | 95.5d → 145.5d |
| 10 | **Construction Phase** |  | 2010-08-02 → 2010-10-12 (+71d) | 57d → 107d |
| 11 | 25919 - LexEVS Upgrade |  | 2010-06-30 → 2010-09-10 (+72d) | 7w → 17w |
| 12 | 25918 - caBio Upgrade | 2010-07-01 → 2010-09-13 (+74d) | 2010-07-15 → 2010-09-24 (+71d) |  |
| 13 | Milestone: Complete Development | 2010-07-15 → 2010-09-24 (+71d) | 2010-07-15 → 2010-09-24 (+71d) |  |
| 14 | **Testing** | 2010-07-01 → 2010-09-13 (+74d) | 2010-08-02 → 2010-10-12 (+71d) |  |
| 15 | Update test cases | 2010-07-01 → 2010-09-13 (+74d) | 2010-07-14 → 2010-09-23 (+71d) |  |
| 16 | Deploy iteration on DEV Server | 2010-07-16 → 2010-09-27 (+73d) | 2010-07-19 → 2010-09-28 (+71d) |  |
| 17 | Test on DEV tier | 2010-07-20 → 2010-09-29 (+71d) | 2010-08-02 → 2010-10-12 (+71d) |  |
| 18 | Milestone: Construction Completed | 2010-08-02 → 2010-10-12 (+71d) | 2010-08-02 → 2010-10-12 (+71d) |  |
| 19 | **Transition Phase** | 2010-07-15 → 2010-09-24 (+71d) | 2010-09-09 → 2010-11-18 (+70d) |  |
| 20 | **QA** | 2010-07-15 → 2010-09-24 (+71d) | 2010-08-02 → 2010-10-12 (+71d) |  |
| 21 | Finalize Testplan | 2010-07-15 → 2010-09-24 (+71d) | 2010-07-28 → 2010-10-07 (+71d) |  |
| 22 | Finalize Test Cases | 2010-07-29 → 2010-10-08 (+71d) | 2010-08-02 → 2010-10-12 (+71d) |  |
| 23 | **Deploy** | 2010-08-03 → 2010-10-13 (+71d) | 2010-09-09 → 2010-11-18 (+70d) |  |
| 24 | **QA Server Deployment** | 2010-08-03 → 2010-10-13 (+71d) | 2010-08-17 → 2010-10-27 (+71d) |  |
| 25 | QA Deployment | 2010-08-03 → 2010-10-13 (+71d) | 2010-08-03 → 2010-10-13 (+71d) |  |
| 26 | QA Testing | 2010-08-03 → 2010-10-13 (+71d) | 2010-08-17 → 2010-10-27 (+71d) |  |
| 27 | Milestone: QA Testing Completed | 2010-08-17 → 2010-10-27 (+71d) | 2010-08-17 → 2010-10-27 (+71d) |  |
| 28 | **Staging Server Deployment** | 2010-08-17 → 2010-10-27 (+71d) | 2010-09-02 → 2010-11-12 (+71d) |  |
| 29 | Stage Deployment | 2010-08-17 → 2010-10-27 (+71d) | 2010-08-19 → 2010-10-29 (+71d) |  |
| 30 | Stage Testing | 2010-08-19 → 2010-10-29 (+71d) | 2010-08-26 → 2010-11-05 (+71d) |  |
| 31 | App scan on Stage | 2010-08-19 → 2010-10-29 (+71d) | 2010-09-02 → 2010-11-12 (+71d) |  |
| 32 | Milestone: Stage Testing Completed | 2010-09-02 → 2010-11-12 (+71d) | 2010-09-02 → 2010-11-12 (+71d) |  |
| 33 | **Production Server Deployment** | 2010-09-02 → 2010-11-12 (+71d) | 2010-09-09 → 2010-11-18 (+70d) |  |
| 34 | Production server deployment | 2010-09-02 → 2010-11-12 (+71d) | 2010-09-07 → 2010-11-16 (+70d) |  |
| 35 | Production Verification | 2010-09-07 → 2010-11-16 (+70d) | 2010-09-09 → 2010-11-18 (+70d) |  |
| 36 | **Documentation** | 2010-08-03 → 2010-10-13 (+71d) | 2010-08-09 → 2010-10-19 (+71d) |  |
| 37 | Documentation Edit by Documentation Team | 2010-08-03 → 2010-10-13 (+71d) | 2010-08-09 → 2010-10-19 (+71d) |  |
| 38 | **Content Page Update** | 2010-09-02 → 2010-11-12 (+71d) | 2010-09-08 → 2010-11-17 (+70d) |  |
| 39 | zope site update | 2010-09-02 → 2010-11-12 (+71d) | 2010-09-08 → 2010-11-17 (+70d) |  |
| 40 | gForge download site update | 2010-09-02 → 2010-11-12 (+71d) | 2010-09-08 → 2010-11-17 (+70d) |  |
| 41 | caMOD 2.6.0 - Closeout | 2010-09-09 → 2010-11-18 (+70d) | 2010-09-09 → 2010-11-18 (+70d) |  |
