# camod Release 2.8.0

How a schedule from MS Project changed from version to version. A marks actual dates.

## Version 1 (saved 2010-01-22)

Note of the change: 2.8.0 schedule draft

| ID | WBS | Task | Duration | Start | Finish | Predecessors | Total float | Constraint |
| --- | --- | --- | --- | --- | --- | --- | --- | --- |
| 1 | 1 | **caMOD 2.8.0 Release** | 203.5d | 2010-07-06 | 2011-04-28 |  | 0d |  |
| 2 | 1.1 | **Inception Phase** | 6d | 2010-07-06 | 2010-07-13 |  | 0d |  |
| 3 |  | Scope 2.8.0 Release | 3d | 2010-07-06 | 2010-07-08 |  | 0d | start no earlier than 2010-07-06 |
| 4 |  | Schedule 2.8.0 Release | 3d | 2010-07-09 | 2010-07-13 | 3 | 0d |  |
| 5 |  | Milestone: Inception Completed | 0d | 2010-07-13 | 2010-07-13 | 4 | 0d |  |
| 6 | 1.2 | **Elaboration Phase** | 6d | 2010-07-14 | 2010-07-21 | 5 | 0d |  |
| 7 |  | Use Case and Design Doc (caBIG template) | 5d | 2010-07-14 | 2010-07-20 |  | 0d |  |
| 8 |  | Review use cases / design with the "Review Board" | 1d | 2010-07-21 | 2010-07-21 | 7 | 0d | finish no earlier than 2009-01-27 |
| 9 |  | Milestone: Elaboration Completed | 0d | 2010-07-21 | 2010-07-21 | 7, 8 | 0d |  |
| 10 | 1.3 | **Construction Phase** | 159.5d | 2010-07-22 | 2011-03-15 | 6 | 0d |  |
| 11 |  | 18438 - Change label from MMHCC Repository to NCI Mouse Repository | 0.5d | 2010-07-22 | 2010-07-22 |  | 0d |  |
| 12 |  | 23750 - links to sid images needs to be changes | 10d | 2010-07-22 | 2010-08-05 | 11 | 0d |  |
| 13 |  | 17909 - Help file in Available from ZFIN (Zebrafish Information Network) shows blank page. | 1d | 2010-08-05 | 2010-08-06 | 12 | 0d |  |
| 14 |  | 7607 - Unsupported file type: bmp can be handled more gracefully | 4d | 2010-08-06 | 2010-08-12 | 13 | 0d |  |
| 15 |  | 20593 - Entered date changes every single time the model characteristics page is changed | 2d | 2010-08-12 | 2010-08-16 | 14 | 0d |  |
| 16 |  | 17041 - Add search for model id to simple and advanced search page | 1d | 2010-08-16 | 2010-08-17 | 15 | 0d |  |
| 17 |  | 19879 - Display PMID number on search page | 0.5d | 2010-08-17 | 2010-08-17 | 16 | 0d |  |
| 18 |  | 21701 - html tag syntax appears in Adv Srch / Compound/Drug dropdown menu | 0.5d | 2010-08-18 | 2010-08-18 | 17 | 0d |  |
| 19 |  | 23452 - Wrap First Author field for MTB pages | 1d | 2010-08-18 | 2010-08-19 | 18 | 0d |  |
| 20 |  | 18684 - Add email address to the Admin - User Management - Add User page | 2d | 2010-08-19 | 2010-08-23 | 19 | 0d |  |
| 21 |  | 14560 - Separation between keyword seach and simple/advanced search is not obvious to user | 1d | 2010-08-23 | 2010-08-24 | 20 | 0d |  |
| 22 |  | 12089 - improve labeling and sorting of promoter, poly A and intro entries on search page | 2d | 2010-08-24 | 2010-08-26 | 21 | 0d |  |
| 23 |  | 24757 - customized search does not show targeted modification type column | 1d | 2010-08-26 | 2010-08-27 | 22 | 0d |  |
| 24 |  | 4769 - Provide additional data from MGI - Parsing MGI data (Proof of Concept) | 10d | 2010-08-27 | 2010-09-16 | 23 | 0d |  |
| 25 |  | 4769 - Provide additional data from MGI - Parsing MGI data (Implementation) | 10d | 2010-09-16 | 2010-09-30 | 24 | 0d |  |
| 26 |  | 4788 - IDEA - redo genetic description page to retrieve data from external source similar to what publication page does with PubMed | 10d | 2010-09-30 | 2010-10-15 | 25 | 0d |  |
| 27 |  | 11501 - Add mouse subspecies to caMOD | 3d | 2010-10-15 | 2010-10-20 | 26 | 0d |  |
| 28 |  | 19876 - Therapy search results page is getting too long | 3d | 2010-10-20 | 2010-10-25 | 27 | 0d |  |
| 29 |  | 18439 - Validation script for external links needed | 1d | 2010-10-25 | 2010-10-26 | 28 | 0d |  |
| 30 |  | 18058 - Rename submitMicroarrayData.jsp to match all other formats | 1d | 2010-10-26 | 2010-10-27 | 29 | 0d |  |
| 31 |  | 24472 - bring search for induced mutation back | 3d | 2010-10-27 | 2010-11-01 | 30 | 0d |  |
| 32 |  | 14352 - Add search for models with cell lines to the TOC | 2d | 2010-11-01 | 2010-11-03 | 31 | 0d |  |
| 33 |  | 6848 - Letting a user add and view staining methods that are not part of the vocabulary; affects old and new entries | 4d | 2010-11-03 | 2010-11-09 | 32 | 0d |  |
| 34 |  | 23691 - Setting model to &quot;inactive&quot; does not work - fix inactive | 4d | 2010-11-09 | 2010-11-16 | 33 | 0d |  |
| 35 |  | 21113 - Customized search for Transplantation Donor Species not working for records with strain_id | 3d | 2010-11-16 | 2010-11-19 | 34 | 0d |  |
| 36 |  | 24931 - Upgrade Duplicate method to use Java BeanUtils | 10d | 2010-11-19 | 2010-12-06 | 35 | 0d |  |
| 37 |  | 20594 - Duplication does not work when record has histolopathology data | 1d | 2010-12-06 | 2010-12-07 | 36 | 0d |  |
| 38 |  | 19974 - Duplicate models feature creates new entries in look up table transient interference method | 1d | 2010-12-07 | 2010-12-08 | 37 | 0d |  |
| 39 |  | 8400 - Duplication does not work for some fields - re-engineer entier duplicate method with newer technology | 1d | 2010-12-08 | 2010-12-09 | 38 | 0d |  |
| 40 |  | 5200 -Duplicate Model - status of duplicated model should be default be "complete" | 1d | 2010-12-09 | 2010-12-10 | 39 | 0d |  |
| 41 |  | 5222 - Duplicate Model- Can not duplicate models with TransientInterferenceMethod data | 1d | 2010-12-10 | 2010-12-13 | 40 | 0d |  |
| 42 |  | 5007 - Unable to duplicate record (id 10001939) | 1d | 2010-12-13 | 2010-12-14 | 41 | 0d |  |
| 43 |  | TBD - SuperUser should be allowed to duplicate a model from the administration section | 1d | 2010-12-14 | 2010-12-15 | 42 | 0d |  |
| 44 |  | 19109 - SuperUser should be allowed to duplicate a model from the administration section | 2d | 2010-12-15 | 2010-12-17 | 43 | 0d |  |
| 45 |  | 17907 - Error editing cell line page for species without controlled anatomy vocabs | 3d | 2010-12-17 | 2010-12-22 | 44 | 0d |  |
| 46 |  | 9126 - value of organ field not shown on histopathology submission page - validation issue | 1d | 2010-12-22 | 2010-12-23 | 45 | 0d |  |
| 47 |  | 9125 - blank histopathology submission for species without vocabularies possible - write new validation code | 3d | 2010-12-23 | 2010-12-29 | 46 | 0d |  |
| 48 |  | 6743 - Admin - Can not Inactivate models (Incomplete state) on 2nd page of Edit Models screen - Fix inactivate | 3d | 2010-12-29 | 2011-01-04 | 47 | 0d |  |
| 49 |  | 6408 - Admin Bug - Moving Incomplete models to Inactivate throws error | 2d | 2011-01-04 | 2011-01-06 | 48 | 0d |  |
| 50 |  | 6745 - Synchronize the submitOverview code to send parameters within the link like the admin section does | 3d | 2011-01-06 | 2011-01-11 | 49 | 0d |  |
| 51 |  | 14379 - Synchronize the submitOverview code to send parameters within the link like the admin section does | 4d | 2011-01-11 | 2011-01-17 | 50 | 0d |  |
| 52 |  | 24816 - GeneIdentifier class was renamed to Gene to comply with Standard CDE | 3d | 2011-01-17 | 2011-01-20 | 51 | 0d |  |
| 53 |  | 24817 - jaxJNumber attribute in Publication class was renamed to jaxPubId | 2d | 2011-01-20 | 2011-01-24 | 52 | 0d |  |
| 54 |  | 24818 - Attribute expressionLevel in ExpressionLevelDescription changed to "name" | 2d | 2011-01-24 | 2011-01-26 | 53 | 0d |  |
| 55 |  | 24819 - Attribute expressionLevel in ExpressionLevelDescription changed to "name" | 1d | 2011-01-26 | 2011-01-27 | 54 | 0d |  |
| 56 |  | 24820 - Changed data type for endPage and startPage from long to string | 1d | 2011-01-27 | 2011-01-28 | 55 | 0d |  |
| 57 |  | 24821 - Move the comments attribute from sub class AnimalModel to superclass AbstractCancerModel | 2d | 2011-01-28 | 2011-02-01 | 56 | 0d |  |
| 58 |  | 24843 - Add drug vocabulary to therapy page | 3d | 2011-02-01 | 2011-02-04 | 57 | 0d |  |
| 59 |  | 24844 - Add mouse strain vocabulary to model characteristics page | 3d | 2011-02-04 | 2011-02-09 | 58 | 0d |  |
| 60 |  | 24845 - Add rat strain vocabulary to model characteristics page | 3d | 2011-02-09 | 2011-02-14 | 59 | 0d |  |
| 61 | 1.3.51 | **Testing** | 21d | 2011-02-14 | 2011-03-15 | 60 | 0d |  |
| 62 |  | Update test cases | 9d | 2011-02-14 | 2011-02-25 |  | 0d |  |
| 63 |  | Deploy iteration on DEV Server | 2d | 2011-02-25 | 2011-03-01 | 62 | 0d |  |
| 64 |  | Test on DEV tier | 10d | 2011-03-01 | 2011-03-15 | 63 | 0d |  |
| 65 |  | Milestone: Construction Completed | 0d | 2011-03-15 | 2011-03-15 | 61 | 0d |  |
| 66 | 1.4 | **Transition Phase** | 32d | 2011-03-15 | 2011-04-28 | 10 | 0d |  |
| 67 | 1.4.1 | **QA** | 13d | 2011-03-15 | 2011-04-01 |  | 0d |  |
| 68 |  | Finalize Testplan | 10d | 2011-03-15 | 2011-03-29 |  | 0d | start no earlier than 2009-09-01 |
| 69 |  | Finalize Test Cases | 3d | 2011-03-29 | 2011-04-01 | 68 | 0d |  |
| 70 | 1.4.2 | **Deploy** | 32d | 2011-03-15 | 2011-04-28 |  | 0d |  |

| ID | WBS | Task | Duration | Start | Finish | Predecessors | Total float |
| --- | --- | --- | --- | --- | --- | --- | --- |
| 71 | 1.4.2.1 | **QA Server Deployment** | 18d | 2011-03-15 | 2011-04-08 | 65 | 0d |
| 72 |  | QA Deploy | 0.5d | 2011-03-15 | 2011-03-15 |  | 12.5d |
| 73 |  | QA Testing | 5d | 2011-04-01 | 2011-04-08 | 65, 69, 72 | 0d |
| 74 |  | Milestone: QA Testing Completed | 0d | 2011-04-08 | 2011-04-08 | 73 | 0d |
| 75 | 1.4.2.2 | **Staging Server Deployment** | 10d | 2011-04-08 | 2011-04-22 |  | 0d |
| 76 |  | Stage Deploy | 2d | 2011-04-08 | 2011-04-12 | 74 | 3d |
| 77 |  | Stage Testing | 5d | 2011-04-12 | 2011-04-19 | 76 | 3d |
| 78 |  | App scan on Stage | 10d | 2011-04-08 | 2011-04-22 | 74 | 0d |
| 79 |  | Milestone: Stage Testing Completed | 0d | 2011-04-22 | 2011-04-22 | 78, 77 | 0d |
| 80 | 1.4.2.3 | **Production Server Deployment** | 4d | 2011-04-22 | 2011-04-28 |  | 0d |
| 81 |  | Production server deployment | 2d | 2011-04-22 | 2011-04-26 | 79 | 0d |
| 82 |  | Production Verification | 2d | 2011-04-26 | 2011-04-28 | 81 | 0d |
| 83 | 1.4.3 | **Documentation** | 5d | 2011-04-01 | 2011-04-08 |  | 14d |
| 84 |  | Documentation Edit by Documentation Team | 5d | 2011-04-01 | 2011-04-08 | 67 | 14d |
| 85 | 1.4.4 | **Content Page Update** | 3d | 2011-04-22 | 2011-04-27 |  | 1d |
| 86 |  | zope site update | 3d | 2011-04-22 | 2011-04-27 | 75 | 1d |
| 87 |  | gForge download site update | 3d | 2011-04-22 | 2011-04-27 | 75 | 1d |
| 88 |  | caMOD 2.7.0 - Closeout | 0d | 2011-04-28 | 2011-04-28 | 66 | 0d |

## Version 2 (saved 2010-04-08)

Note of the change: update to the plan

Last finish 2011-04-28 → 2011-06-22 (+55d).

Added:

| ID | Task | Duration | Start | Finish | Predecessors |
| --- | --- | --- | --- | --- | --- |
| 22 | 10047 - Allow users to manually enter rat diagnoses | 3d | 2010-09-27 | 2010-09-30 | 21 |
| 23 | 21809 - Add Tmor Site back into the default if LexEVS returns properties quicker | 1d | 2010-09-30 | 2010-10-01 | 22 |
| 24 | 6387 - EVS - user mouse and rat strains from NCI Thesaurus | 3d | 2010-10-01 | 2010-10-06 | 23 |
| 42 | 7773 - Allow users to add staining methods | 3d | 2010-12-29 | 2011-01-03 | 41 |
| 43 | 19109 - Closing a statement (and result set) you left open - QueryManagerImple.getAllPublications | 1d | 2011-01-04 | 2011-01-04 | 42 |
| 45 | 6745 - Synchronize the submitOverview code to send parameters within the link like the admin section does | 3d | 2011-01-06 | 2011-01-10 | 44 |
| 46 | 25081 - Displaying information about related models based on PMID number | 5d | 2011-01-11 | 2011-01-17 | 45 |
| 47 | 25083 - Displaying information about related models based on EntezGeneID | 4d | 2011-01-18 | 2011-01-21 | 46 |
| 48 | 24934 - SuperUser should be allowed to duplicate a model from the administration section | 2d | 2011-01-24 | 2011-01-25 | 47 |
| 51 | 24931 - Upgrade Duplicate method to use JavaBeanUtils | 10d | 2011-01-28 | 2011-02-10 | 50 |
| 53 | 5200 - Duplicate Model - status of duplicated model should be default be "complete" | 1d | 2011-02-14 | 2011-02-14 | 52 |
| 54 | 5222 - Duplicate Model - Can not dupliate models with TransientInterferenceMethod data | 1d | 2011-02-15 | 2011-02-15 | 53 |
| 55 | 8400 - Duplication does not work for some fields - re-engineer entire duplicate method with newer technology | 1d | 2011-02-16 | 2011-02-16 | 54 |
| 56 | 27524 - Java upgrade (in order to make the Java BeanUtil work) | 5d | 2011-02-17 | 2011-02-23 | 55 |
| 57 | 17956 - Rewrite and data clean up for induced mutation data | 5d | 2011-02-24 | 2011-03-02 | 56 |
| 58 | 18058 - Rename submitMicroarrayData.jsp to match all other formats | 2d | 2011-03-03 | 2011-03-04 | 57 |
| 59 | 21694 - DB clean up strain entries with 'Not Specified' | 2d | 2011-03-07 | 2011-03-08 | 58 |
| 60 | 18829 - Add zebrafish strains to strain table | 2d | 2011-03-09 | 2011-03-10 | 59 |
| 62 | 27617 - Add rabbit strain vocabulary to model characteristics page | 3d | 2011-03-15 | 2011-03-17 | 61 |
| 63 | 27621 - Add zebrafish strain vocabulary to model characteristics page | 3d | 2011-03-18 | 2011-03-22 | 62 |
| 64 | 27624 - Add pig strain vocabulary to model characteristics page | 3d | 2011-03-23 | 2011-03-25 | 63 |

Removed: 13 17909 - Help file in Available from ZFIN (Zebrafish Information Network) shows blank page.; 14 7607 - Unsupported file type: bmp can be handled more gracefully; 25 4769 - Provide additional data from MGI - Parsing MGI data (Implementation); 26 4788 - IDEA - redo genetic description page to retrieve data from external source similar to what publication page does with PubMed; 36 24931 - Upgrade Duplicate method to use Java BeanUtils; 39 8400 - Duplication does not work for some fields - re-engineer entier duplicate method with newer technology; 40 5200 -Duplicate Model - status of duplicated model should be default be "complete"; 41 5222 - Duplicate Model- Can not duplicate models with TransientInterferenceMethod data; 43 TBD - SuperUser should be allowed to duplicate a model from the administration section; 44 19109 - SuperUser should be allowed to duplicate a model from the administration section; 49 6408 - Admin Bug - Moving Incomplete models to Inactivate throws error; 52 24816 - GeneIdentifier class was renamed to Gene to comply with Standard CDE; 53 24817 - jaxJNumber attribute in Publication class was renamed to jaxPubId; 54 24818 - Attribute expressionLevel in ExpressionLevelDescription changed to "name"; 55 24819 - Attribute expressionLevel in ExpressionLevelDescription changed to "name"; 56 24820 - Changed data type for endPage and startPage from long to string; 57 24821 - Move the comments attribute from sub class AnimalModel to superclass AbstractCancerModel

Changed:

| ID | Task | Start | Finish | Duration | Total float | Predecessors | Other |
| --- | --- | --- | --- | --- | --- | --- | --- |
| 1 | **caMOD 2.8.0 Release** | 2010-07-06 → 2010-07-16 (+10d) | 2011-04-28 → 2011-06-22 (+55d) | 203.5d → 235d |  |  |  |
| 2 | **Inception Phase** | 2010-07-06 → 2010-07-16 (+10d) | 2010-07-13 → 2010-07-23 (+10d) |  |  |  |  |
| 3 | Scope 2.8.0 Release | 2010-07-06 → 2010-07-16 (+10d) | 2010-07-08 → 2010-07-20 (+12d) |  |  |  | constraint start no earlier than 2010-07-06 → start no earlier than 2010-07-16 |
| 4 | Schedule 2.8.0 Release | 2010-07-09 → 2010-07-21 (+12d) | 2010-07-13 → 2010-07-23 (+10d) |  |  |  |  |
| 5 | Milestone: Inception Completed | 2010-07-13 → 2010-07-23 (+10d) | 2010-07-13 → 2010-07-23 (+10d) |  |  |  |  |
| 6 | **Elaboration Phase** | 2010-07-14 → 2010-07-26 (+12d) | 2010-07-21 → 2010-08-09 (+19d) | 6d → 11d | 0d → 2.5d |  |  |
| 7 | Use Case and Design Doc (caBIG template) | 2010-07-14 → 2010-07-26 (+12d) | 2010-07-20 → 2010-08-06 (+17d) | 5d → 10d | 0d → 2.5d |  |  |
| 8 | Review use cases / design with the "Review Board" | 2010-07-21 → 2010-08-09 (+19d) | 2010-07-21 → 2010-08-09 (+19d) |  | 0d → 2.5d |  |  |
| 9 | Milestone: Elaboration Completed | 2010-07-21 → 2010-08-09 (+19d) | 2010-07-21 → 2010-08-09 (+19d) |  | 0d → 2.5d |  |  |
| 10 | **Construction Phase** | 2010-07-22 → 2010-08-10 (+19d) | 2011-03-15 → 2011-04-25 (+41d) | 159.5d → 176d |  |  |  |
| 11 | 18438 - Change label from MMHCC Repository to NCI Mouse Repository | 2010-07-22 → 2010-08-10 (+19d) | 2010-07-22 → 2010-08-10 (+19d) |  | 0d → 2.5d |  |  |
| 12 | 23750 - links to sid images needs to be changes | 2010-07-22 → 2010-08-10 (+19d) | 2010-08-05 → 2010-08-24 (+19d) |  | 0d → 2.5d |  |  |
| 13 | 20593 - Entered date changes every single time the model characteristics page is changed | 2010-08-12 → 2010-08-24 (+12d) | 2010-08-16 → 2010-08-26 (+10d) |  | 0d → 2.5d | 7607 - Unsupported file type: bmp can be handled more gracefully → 12 |  |
| 14 | 17041 - Add search for model id to simple and advanced search page | 2010-08-16 → 2010-08-26 (+10d) | 2010-08-17 → 2010-08-27 (+10d) |  | 0d → 2.5d |  |  |
| 15 | 19879 - Display PMID number on search page | 2010-08-17 → 2010-08-27 (+10d) | 2010-08-17 → 2010-08-27 (+10d) |  | 0d → 2.5d |  |  |
| 16 | 21701 - html tag syntax appears in Adv Srch / Compound/Drug dropdown menu | 2010-08-18 → 2010-08-30 (+12d) | 2010-08-18 → 2010-08-30 (+12d) |  | 0d → 2.5d |  |  |
| 17 | 23452 - Wrap First Author field for MTB pages | 2010-08-18 → 2010-08-30 (+12d) | 2010-08-19 → 2010-08-31 (+12d) |  | 0d → 2.5d |  |  |
| 18 | 18684 - Add email address to the Admin - User Management - Add User page | 2010-08-19 → 2010-08-31 (+12d) | 2010-08-23 → 2010-09-02 (+10d) |  | 0d → 2.5d |  |  |
| 19 | 14560 - Separation between keyword seach and simple/advanced search is not obvious to user | 2010-08-23 → 2010-09-02 (+10d) | 2010-08-24 → 2010-09-03 (+10d) |  | 0d → 2.5d |  |  |
| 20 | 12089 - improve labeling and sorting of promoter, poly A and intro entries on search page | 2010-08-24 → 2010-09-03 (+10d) | 2010-08-26 → 2010-09-08 (+13d) |  | 0d → 2.5d |  |  |
| 21 | 4769 - Provide additional data from MGI - Parsing MGI data (Proof of Concept) | 2010-08-27 → 2010-09-08 (+12d) | 2010-09-16 → 2010-09-27 (+11d) |  | 0d → 2.5d | 44 → 20 |  |
| 25 | 19876 - Therapy search results page is getting too long | 2010-10-20 → 2010-10-12 (-8d) | 2010-10-25 → 2010-10-14 (-11d) |  |  | 61 → 24 |  |
| 26 | 18439 - Validation script for external links needed | 2010-10-25 → 2010-10-15 (-10d) | 2010-10-26 → 2010-10-15 (-11d) |  |  |  |  |
| 27 | 18058 - Rename submitMicroarrayData.jsp to match all other formats | 2010-10-26 → 2010-10-18 (-8d) | 2010-10-27 → 2010-10-18 (-9d) |  |  |  |  |
| 28 | 24472 - bring search for induced mutation back | 2010-10-27 → 2010-10-19 (-8d) | 2010-11-01 → 2010-10-21 (-11d) |  |  |  |  |
| 29 | 14352 - Add search for models with cell lines to the TOC | 2010-11-01 → 2010-10-22 (-10d) | 2010-11-03 → 2010-10-25 (-9d) |  |  |  |  |
| 30 | 6848 - Letting a user add and view staining methods that are not part of the vocabulary; affects old and new entries | 2010-11-03 → 2010-10-26 (-8d) | 2010-11-09 → 2010-10-29 (-11d) |  |  |  |  |
| 31 | 23691 - Setting model to &quot;inactive&quot; does not work - fix inactive | 2010-11-09 → 2010-11-01 (-8d) | 2010-11-16 → 2010-11-04 (-12d) |  |  |  |  |
| 32 | 21113 - Customized search for Transplantation Donor Species not working for records with strain_id | 2010-11-16 → 2010-11-05 (-11d) | 2010-11-19 → 2010-11-09 (-10d) |  |  |  |  |
| 33 | 17907 - Error editing cell line page for species without controlled anatomy vocabs | 2010-12-17 → 2010-11-10 (-37d) | 2010-12-22 → 2010-11-15 (-37d) |  |  | 19109 - SuperUser should be allowed to duplicate a model from the administration section → 32 |  |
| 34 | 9126 - value of organ field not shown on histopathology submission page - validation issue | 2010-12-22 → 2010-11-16 (-36d) | 2010-12-23 → 2010-11-16 (-37d) |  |  |  |  |
| 35 | 9125 - blank histopathology submission for species without vocabularies possible - write new validation code | 2010-12-23 → 2010-11-17 (-36d) | 2010-12-29 → 2010-11-19 (-40d) |  |  |  |  |
| 36 | 23691 - Setting model to "inactive" does not work - fix inactive | 2010-12-29 → 2010-11-29 (-30d) | 2011-01-04 → 2010-12-03 (-32d) | 3d → 5d |  |  | was named 6743 - Admin - Can not Inactivate models (Incomplete state) on 2nd page of Edit Models screen - Fix inactivate |
| 37 | 6745 - Synchronize the submitOverview code to send parameters within the link like the admin section does | 2011-01-06 → 2010-12-06 (-31d) | 2011-01-11 → 2010-12-08 (-34d) |  |  | 6408 - Admin Bug - Moving Incomplete models to Inactivate throws error → 36 |  |
| 38 | 14379 - Synchronize the submitOverview code to send parameters within the link like the admin section does | 2011-01-11 → 2010-12-09 (-33d) | 2011-01-17 → 2010-12-14 (-34d) |  |  |  |  |
| 39 | 24843 - Add drug vocabulary to therapy page | 2011-02-01 → 2010-12-15 (-48d) | 2011-02-04 → 2010-12-17 (-49d) |  |  | 24821 - Move the comments attribute from sub class AnimalModel to superclass AbstractCancerModel → 38 |  |
| 40 | 24844 - Add mouse strain vocabulary to model characteristics page | 2011-02-04 → 2010-12-20 (-46d) | 2011-02-09 → 2010-12-22 (-49d) |  |  |  |  |
| 41 | 24845 - Add rat strain vocabulary to model characteristics page | 2011-02-09 → 2010-12-23 (-48d) | 2011-02-14 → 2010-12-28 (-48d) |  |  |  |  |
| 44 | 24757 - customized search does not show targeted modification type column | 2010-08-26 → 2011-01-05 (+132d) | 2010-08-27 → 2011-01-05 (+131d) |  |  | 20 → 43 | resources Sima → none |
| 49 | 19974 - Duplicate models feature creates new entries in look up table transient interference method | 2010-12-07 → 2011-01-26 (+50d) | 2010-12-08 → 2011-01-26 (+49d) |  |  | 50 → 48 | resources Sima → none |
| 50 | 20594 - Duplication does not work when record has histolopathology data | 2010-12-06 → 2011-01-27 (+52d) | 2010-12-07 → 2011-01-27 (+51d) |  |  | 24931 - Upgrade Duplicate method to use Java BeanUtils → 49 | resources Sima → none |
| 52 | 5007 - Unable to duplicate record (id 10001939) | 2010-12-13 → 2011-02-11 (+60d) | 2010-12-14 → 2011-02-11 (+59d) |  |  | 5222 - Duplicate Model- Can not duplicate models with TransientInterferenceMethod data → 51 | resources Sima → none |
| 61 | 11501 - Add mouse subspecies to caMOD | 2010-10-15 → 2011-03-11 (+147d) | 2010-10-20 → 2011-03-14 (+145d) | 3d → 2d |  | 4788 - IDEA - redo genetic description page to retrieve data from external source similar to what publication page does with PubMed → 60 | resources Sima → none |
| 65 | **Testing** | 2011-02-14 → 2011-03-28 (+42d) | 2011-03-15 → 2011-04-25 (+41d) |  |  | 41 → 64 |  |
| 66 | Update test cases | 2011-02-14 → 2011-03-28 (+42d) | 2011-02-25 → 2011-04-07 (+41d) |  |  |  |  |
| 67 | Deploy iteration on DEV Server | 2011-02-25 → 2011-04-08 (+42d) | 2011-03-01 → 2011-04-11 (+41d) |  |  |  |  |
| 68 | Test on DEV tier | 2011-03-01 → 2011-04-12 (+42d) | 2011-03-15 → 2011-04-25 (+41d) |  |  |  |  |
| 69 | Milestone: Construction Completed | 2011-03-15 → 2011-04-25 (+41d) | 2011-03-15 → 2011-04-25 (+41d) |  |  |  |  |
| 70 | **Transition Phase** | 2011-03-15 → 2011-04-26 (+42d) | 2011-04-28 → 2011-06-22 (+55d) | 32d → 42d |  |  |  |
| 71 | **QA** | 2011-03-15 → 2011-04-26 (+42d) | 2011-04-01 → 2011-05-12 (+41d) |  |  |  |  |
| 72 | Finalize Testplan | 2011-03-15 → 2011-04-26 (+42d) | 2011-03-29 → 2011-05-09 (+41d) |  |  |  |  |
| 73 | Finalize Test Cases | 2011-03-29 → 2011-05-10 (+42d) | 2011-04-01 → 2011-05-12 (+41d) |  |  |  |  |
| 74 | **Deploy** | 2011-03-15 → 2011-04-26 (+42d) | 2011-04-28 → 2011-06-22 (+55d) | 32d → 42d |  |  |  |
| 75 | **QA Server Deployment** | 2011-03-15 → 2011-04-26 (+42d) | 2011-04-08 → 2011-05-26 (+48d) | 18d → 23d |  |  |  |
| 76 | QA Deploy | 2011-03-15 → 2011-04-26 (+42d) | 2011-03-15 → 2011-04-26 (+42d) |  |  |  |  |
| 77 | QA Testing | 2011-04-01 → 2011-05-13 (+42d) | 2011-04-08 → 2011-05-26 (+48d) | 5d → 10d |  |  |  |
| 78 | Milestone: QA Testing Completed | 2011-04-08 → 2011-05-26 (+48d) | 2011-04-08 → 2011-05-26 (+48d) |  |  |  |  |
| 79 | **Staging Server Deployment** | 2011-04-08 → 2011-05-27 (+49d) | 2011-04-22 → 2011-06-16 (+55d) | 10d → 15d |  |  |  |
| 80 | Stage Deploy | 2011-04-08 → 2011-05-27 (+49d) | 2011-04-12 → 2011-05-30 (+48d) |  | 3d → 8d |  |  |
| 81 | Stage Testing | 2011-04-12 → 2011-05-31 (+49d) | 2011-04-19 → 2011-06-06 (+48d) |  | 3d → 8d |  |  |
| 82 | App scan on Stage | 2011-04-08 → 2011-05-27 (+49d) | 2011-04-22 → 2011-06-16 (+55d) | 10d → 15d |  |  |  |
| 83 | Milestone: Stage Testing Completed | 2011-04-22 → 2011-06-16 (+55d) | 2011-04-22 → 2011-06-16 (+55d) |  |  |  |  |
| 84 | **Production Server Deployment** | 2011-04-22 → 2011-06-17 (+56d) | 2011-04-28 → 2011-06-22 (+55d) |  |  |  |  |
| 85 | Production server deployment | 2011-04-22 → 2011-06-17 (+56d) | 2011-04-26 → 2011-06-20 (+55d) |  |  |  |  |
| 86 | Production Verification | 2011-04-26 → 2011-06-21 (+56d) | 2011-04-28 → 2011-06-22 (+55d) |  |  |  |  |
| 87 | **Documentation** | 2011-04-01 → 2011-05-13 (+42d) | 2011-04-08 → 2011-05-19 (+41d) |  | 14d → 24d |  |  |
| 88 | Documentation Edit by Documentation Team | 2011-04-01 → 2011-05-13 (+42d) | 2011-04-08 → 2011-05-19 (+41d) |  | 14d → 24d |  |  |
| 89 | **Content Page Update** | 2011-04-22 → 2011-06-17 (+56d) | 2011-04-27 → 2011-06-21 (+55d) |  |  |  |  |
| 90 | zope site update | 2011-04-22 → 2011-06-17 (+56d) | 2011-04-27 → 2011-06-21 (+55d) |  |  |  |  |
| 91 | gForge download site update | 2011-04-22 → 2011-06-17 (+56d) | 2011-04-27 → 2011-06-21 (+55d) |  |  |  |  |

| ID | Task | Start | Finish |
| --- | --- | --- | --- |
| 92 | caMOD 2.7.0 - Closeout | 2011-04-28 → 2011-06-22 (+55d) | 2011-04-28 → 2011-06-22 (+55d) |

## Version 3 (saved 2010-04-08)

Note of the change: added one more task to the plan.

Last finish 2011-06-22 → 2011-06-27 (+5d).

Added:

| ID | Task | Duration | Start | Finish | Predecessors |
| --- | --- | --- | --- | --- | --- |
| 65 | 27626 - Add guinea pig strain vocabulary to model characteristics page | 3d | 2011-03-28 | 2011-03-30 | 64 |

Changed:

| ID | Task | Start | Finish | Duration | Predecessors |
| --- | --- | --- | --- | --- | --- |
| 1 | **caMOD 2.8.0 Release** |  | 2011-06-22 → 2011-06-27 (+5d) | 235d → 238d |  |
| 10 | **Construction Phase** |  | 2011-04-25 → 2011-04-28 (+3d) | 176d → 179d |  |
| 66 | **Testing** | 2011-03-28 → 2011-03-31 (+3d) | 2011-04-25 → 2011-04-28 (+3d) |  | 64 → 65, 64 |
| 67 | Update test cases | 2011-03-28 → 2011-03-31 (+3d) | 2011-04-07 → 2011-04-12 (+5d) |  |  |
| 68 | Deploy iteration on DEV Server | 2011-04-08 → 2011-04-13 (+5d) | 2011-04-11 → 2011-04-14 (+3d) |  |  |
| 69 | Test on DEV tier | 2011-04-12 → 2011-04-15 (+3d) | 2011-04-25 → 2011-04-28 (+3d) |  |  |
| 70 | Milestone: Construction Completed | 2011-04-25 → 2011-04-28 (+3d) | 2011-04-25 → 2011-04-28 (+3d) |  |  |
| 71 | **Transition Phase** | 2011-04-26 → 2011-04-29 (+3d) | 2011-06-22 → 2011-06-27 (+5d) |  |  |
| 72 | **QA** | 2011-04-26 → 2011-04-29 (+3d) | 2011-05-12 → 2011-05-17 (+5d) |  |  |
| 73 | Finalize Testplan | 2011-04-26 → 2011-04-29 (+3d) | 2011-05-09 → 2011-05-12 (+3d) |  |  |
| 74 | Finalize Test Cases | 2011-05-10 → 2011-05-13 (+3d) | 2011-05-12 → 2011-05-17 (+5d) |  |  |
| 75 | **Deploy** | 2011-04-26 → 2011-04-29 (+3d) | 2011-06-22 → 2011-06-27 (+5d) |  |  |
| 76 | **QA Server Deployment** | 2011-04-26 → 2011-04-29 (+3d) | 2011-05-26 → 2011-05-31 (+5d) |  |  |
| 77 | QA Deploy | 2011-04-26 → 2011-04-29 (+3d) | 2011-04-26 → 2011-04-29 (+3d) |  |  |
| 78 | QA Testing | 2011-05-13 → 2011-05-18 (+5d) | 2011-05-26 → 2011-05-31 (+5d) |  |  |
| 79 | Milestone: QA Testing Completed | 2011-05-26 → 2011-05-31 (+5d) | 2011-05-26 → 2011-05-31 (+5d) |  |  |
| 80 | **Staging Server Deployment** | 2011-05-27 → 2011-06-01 (+5d) | 2011-06-16 → 2011-06-21 (+5d) |  |  |
| 81 | Stage Deploy | 2011-05-27 → 2011-06-01 (+5d) | 2011-05-30 → 2011-06-02 (+3d) |  |  |
| 82 | Stage Testing | 2011-05-31 → 2011-06-03 (+3d) | 2011-06-06 → 2011-06-09 (+3d) |  |  |
| 83 | App scan on Stage | 2011-05-27 → 2011-06-01 (+5d) | 2011-06-16 → 2011-06-21 (+5d) |  |  |
| 84 | Milestone: Stage Testing Completed | 2011-06-16 → 2011-06-21 (+5d) | 2011-06-16 → 2011-06-21 (+5d) |  |  |
| 85 | **Production Server Deployment** | 2011-06-17 → 2011-06-22 (+5d) | 2011-06-22 → 2011-06-27 (+5d) |  |  |
| 86 | Production server deployment | 2011-06-17 → 2011-06-22 (+5d) | 2011-06-20 → 2011-06-23 (+3d) |  |  |
| 87 | Production Verification | 2011-06-21 → 2011-06-24 (+3d) | 2011-06-22 → 2011-06-27 (+5d) |  |  |
| 88 | **Documentation** | 2011-05-13 → 2011-05-18 (+5d) | 2011-05-19 → 2011-05-24 (+5d) |  |  |
| 89 | Documentation Edit by Documentation Team | 2011-05-13 → 2011-05-18 (+5d) | 2011-05-19 → 2011-05-24 (+5d) |  |  |
| 90 | **Content Page Update** | 2011-06-17 → 2011-06-22 (+5d) | 2011-06-21 → 2011-06-24 (+3d) |  |  |
| 91 | zope site update | 2011-06-17 → 2011-06-22 (+5d) | 2011-06-21 → 2011-06-24 (+3d) |  |  |
| 92 | gForge download site update | 2011-06-17 → 2011-06-22 (+5d) | 2011-06-21 → 2011-06-24 (+3d) |  |  |
| 93 | caMOD 2.7.0 - Closeout | 2011-06-22 → 2011-06-27 (+5d) | 2011-06-22 → 2011-06-27 (+5d) |  |  |
